# TORRE MAR V2

Schedule from Primavera P6, 2024-12-02 to 2028-04-27, data date 2026-07-17, costs in COP, A marks actual dates.

## Calendars

- CBB_HOR_OBR: Mon-Fri 7:00-12:00, 13:00-16:00; Sat-Sun off. Exceptions (off unless hours are given): 2024-12-08, 2024-12-24 to 2025-01-04, 2025-01-06, 2025-03-24, 2025-04-13 to 2025-04-20, 2025-05-01, 2025-06-02, 2025-06-23, 2025-06-30, 2025-07-20, 2025-08-07, 2025-08-18, 2025-10-13, 2025-11-03, 2025-11-17, 2025-12-08, 2025-12-24 to 2026-01-03, 2026-01-05 to 2026-01-10, 2026-01-12, 2026-03-23, 2026-03-29 to 2026-04-05, 2026-05-01, 2026-05-18, 2026-06-08, 2026-06-15, 2026-06-29, 2026-07-20, 2026-08-07, 2026-08-17, 2026-10-12, 2026-11-02, 2026-11-16, 2026-12-08, 2026-12-24 to 2027-01-02, 2027-01-04 to 2027-01-09, 2027-01-11, 2027-03-21 to 2027-03-28, 2027-05-01, 2027-05-10, 2027-05-31, 2027-06-07, 2027-07-05, 2027-07-20, 2027-08-07, 2027-08-16, 2027-10-18, 2027-11-01, 2027-11-15, 2027-12-08, 2027-12-24 to 2028-01-01, 2028-01-03 to 2028-01-08, 2028-01-10, 2028-03-20, 2028-04-09 to 2028-04-16.

## Resources

| Resource | Group | Rate |
| --- | --- | --- |
| Dummy | equipment | 1 |

## Schedule

| ID | WBS | Activity | Type | Duration | Start | Finish | Predecessors | Complete | Planned start | Planned finish | Total float | Free float | Constraint | Hito Inicio - Fin | Tipo 80-20 | CBB_Etapas | CBB_Obras | Tipo de hito | Holgura (FEO) |
| --- | --- | --- | --- | --- | --- | --- | --- | --- | --- | --- | --- | --- | --- | --- | --- | --- | --- | --- | --- |
|  | 00HIT | **00. Hitos** |  |  | 2024-12-02 | 2028-03-01 |  |  |  |  |  |  |  |  |  |  |  |  |  |
| A1040 |  | Inicio Exc. & Relleno | milestone | 0d | 2024-12-02 A | 2024-12-02 A | A1000 SS | 100% | 2025-09-01 |  |  |  |  | N | N | 1 | B00043 |  |  |
| A1060 |  | Inicio Pilotaje | milestone | 0d | 2024-12-16 A | 2024-12-16 A | A1040 SS+10d | 100% | 2025-10-01 |  |  |  |  | N | N | 1 | B00043 |  |  |
| A1050 |  | Fin Exc. & Relleno | milestone | 0d | 2025-01-14 A | 2025-01-14 A | A1960 FF | 100% |  | 2025-01-14 |  |  |  | N | N | 1 | B00043 |  |  |
| A1080 |  | Inicio Cimentacion | milestone | 0d | 2025-04-08 A | 2025-04-08 A | A1060 SS+140d | 100% | 2025-11-04 |  |  |  |  | N | N | 1 | B00043 |  |  |
| A1010 |  | 20% Avance | milestone | 0d | 2025-04-27 A | 2025-04-27 A | A1970 SS+130d | 100% | 2025-08-19 |  |  |  |  | N | N | 1 | B00043 | Indicadores |  |
| A1100 |  | Inicio Estructura | milestone | 0d | 2025-08-15 A | 2025-08-15 A | A1090 | 100% | 2025-11-04 |  |  |  | start on or after 2025-08-29 | N | N | 1 | B00043 |  |  |
| A1090 |  | Fin Cimentacion | milestone | 0d | 2025-08-30 A | 2025-08-30 A | A2040 FF | 100% |  | 2025-11-04 |  |  |  | N | N | 1 | B00043 |  |  |
| A1070 |  | Fin Pilotaje | milestone | 0d | 2025-10-01 A | 2025-10-01 A | A1970 FF | 100% |  | 2025-10-01 |  |  |  | N | N | 1 | B00043 |  |  |
| A1160 |  | Inicio Apartamento | milestone | 0d | 2026-03-17 A | 2026-03-17 A | A2220 | 100% | 2026-04-16 |  |  |  |  | N | N | 1 | B00043 |  |  |
| A1170 |  | Inicio Obra Gris | milestone | 0d | 2026-03-17 A | 2026-03-17 A | A1160 SS | 100% | 2026-04-16 |  |  |  |  | N | N | 1 | B00043 |  |  |
| A1000 |  | Inicio Proyecto | milestone | 0d | 2026-07-21 | 2026-07-21 |  |  | 2026-07-21 |  | 1.62d | 0d | start on or after 2024-12-02 | N | N | 1 | B00043 |  |  |
| A1030 |  | UMO Fin | milestone | 0d | 2026-07-21 | 2026-07-21 |  |  |  | 2026-07-21 | 410.7d | 195.57d |  | N | N | 1 | B00043 | Estratégicos |  |
| A1240 |  | Fin Cielo Raso | milestone | 0d | 2026-07-21 | 2026-07-21 |  |  |  | 2026-07-21 | 410.7d | 350.64d |  | N | N | 1 | B00043 |  |  |
| A1400 |  | Inicio Fachada | milestone | 0d | 2026-07-21 | 2026-07-21 | A2190 |  | 2026-07-21 |  | 8d | 0d |  | N | N | 1 | B00043 |  |  |
| A1540 |  | Inicio Punto Fijo | milestone | 0d | 2026-07-21 | 2026-07-21 | A2160 |  | 2026-07-21 |  | 1.62d | 0d |  | N | N | 1 | B00043 |  |  |
| A1550 |  | Inicio Punto Fijo Obra Gris | milestone | 0d | 2026-07-21 | 2026-07-21 | A1540 SS |  | 2026-07-21 |  | 1.62d | 0d |  | N | N | 1 | B00043 |  |  |
| A1560 |  | Fin Punto Fijo Obra Gris | milestone | 0d | 2026-07-21 | 2026-07-21 |  |  |  | 2026-07-21 | 410.7d | 0d |  | N | N | 1 | B00043 |  |  |
| A1690 |  | Fin Punto Fijo | milestone | 0d | 2026-07-21 | 2026-07-21 | A1560 |  |  | 2026-07-21 | 410.7d | 375.64d |  | N | N | 1 | B00043 |  |  |
| A1770 |  | Entrega Calidad Piso 1 | milestone | 0d | 2026-07-21 | 2026-07-21 |  |  |  | 2026-07-21 | 410.7d | 0d |  | N | N | 1 | B00043 | Entregas | 6.0 |
| A1780 |  | Entrega Calidad Piso 2 | milestone | 0d | 2026-07-21 | 2026-07-21 | A1770 |  |  | 2026-07-21 | 410.7d |  |  | N | N | 1 | B00043 | Entregas | -1.0 |
| A19610 |  | Inicio Ints | milestone | 0d | 2026-07-21 | 2026-07-21 |  |  | 2026-07-21 |  | 410.7d |  |  |  |  |  | B00043 |  |  |
| A19620 |  | Fin Inst | milestone | 0d | 2026-07-21 | 2026-07-21 |  |  |  | 2026-07-21 | 410.7d |  |  |  |  |  | B00043 |  |  |
| A1190 |  | Inicio Estuco y Pintura-01 | milestone | 0d | 2026-08-03 | 2026-08-03 | A14920 |  | 2026-08-03 |  | 35.06d | 0d |  | N | N | 1 | B00043 |  |  |
| A1230 |  | Inicio Cielo Raso | milestone | 0d | 2026-09-02 | 2026-09-02 | A3370 |  | 2026-09-02 |  | 35.06d | 0d |  | N | N | 1 | B00043 |  |  |
| A19590 |  | Inicio Dinteles | milestone | 0d | 2026-09-10 | 2026-09-10 | A18120 SS |  | 2026-09-10 |  | 228.58d | 0d |  |  |  |  | B00043 |  |  |
| A1250 |  | Inicio Laminado Pintura Cielo Raso | milestone | 0d | 2026-10-05 | 2026-10-05 | A18150 |  | 2026-10-05 |  | 35.06d | 0d |  | N | N | 1 | B00043 |  |  |
| A1310 |  | Inicio Estuco y Pintura-02 | milestone | 0d | 2026-11-06 | 2026-11-06 | A4800 FS-20d |  | 2026-11-06 |  | 35.06d | 0d |  | N | N | 1 | B00043 |  |  |
| A19790 |  | Inicio Ventaneria | milestone | 0d | 2026-11-17 | 2026-11-17 | A5710 |  | 2026-11-17 |  | 35.06d | 0d |  |  |  |  | B00043 |  |  |
| A1110 |  | Fin Estructura | milestone | 0d | 2026-11-26 | 2026-11-26 | A2350 FF, A2340 FF |  |  | 2026-11-26 | 34.15d | 0d |  | N | N | 1 | B00043 |  |  |
| A1120 |  | Inicio Cubierta Estructura | milestone | 0d | 2026-11-26 | 2026-11-26 | A1110 |  | 2026-11-26 |  | 34.15d | 0d |  | N | N | 1 | B00043 |  |  |
| A1740 |  | Inicio CTO | milestone | 0d | 2026-11-26 | 2026-11-26 | A1110 |  | 2026-11-26 |  | 312.85d | 0d |  | N | N | 1 | B00043 | Estratégicos |  |
| A1330 |  | Inicio Inst. elec-comun | milestone | 0d | 2026-12-09 | 2026-12-09 | A6580 FS-5d |  | 2026-12-09 |  | 271.06d | 0d |  | N | N | 1 | B00043 |  |  |
| A19970 |  | Inicio Carp. Madera | milestone | 0d | 2026-12-09 | 2026-12-09 | A6580 FS-5d |  | 2026-12-09 |  | 96.36d | 0d |  |  |  |  | B00043 |  |  |
| A1750 |  | Fin CTO | milestone | 0d | 2026-12-11 | 2026-12-11 | A14200 FF |  |  | 2026-12-11 | 312.85d | 277.79d |  | N | N | 1 | B00043 | Estratégicos |  |
| A1130 |  | Fin Cubierta Estructura | milestone | 0d | 2027-01-15 | 2027-01-15 | A2380 FF |  |  | 2027-01-15 | 34.15d | 0d |  | N | N | 1 | B00043 |  |  |
| A1140 |  | Inicio Cubierta Acabados | milestone | 0d | 2027-01-15 | 2027-01-15 | A1130 |  | 2027-01-15 |  | 194.15d | 0d |  | N | N | 1 | B00043 |  |  |
| A1700 |  | Inicio Foso | milestone | 0d | 2027-01-15 | 2027-01-15 | A1130 |  | 2027-01-15 |  | 34.15d | 0d |  | N | N | 1 | B00043 |  |  |
| A1210 |  | Inicio Instalacion Soportes | milestone | 0d | 2027-01-26 | 2027-01-26 | A19370 |  | 2027-01-26 |  | 228.58d | 0d |  | N | N | 1 | B00043 |  |  |
| A1290 |  | Inicio Ceramica y Enchapes | milestone | 0d | 2027-01-26 | 2027-01-26 | A19650 |  | 2027-01-26 |  | 35.06d | 0d |  | N | N | 1 | B00043 |  |  |
| A1020 |  | 70% Avance | milestone | 0d | 2027-02-11 | 2027-02-11 | A3830, A2330 |  | 2027-02-11 |  | 282.58d | 207.88d |  | N | N | 1 | B00043 | Indicadores |  |
| A20730 |  | Inicio Mesones | milestone | 0d | 2027-03-31 | 2027-03-31 | A19900 FS-6d |  | 2027-03-31 |  | 96.36d | 0d |  |  |  |  | B00043 |  |  |
| A1370 |  | Inicio Barandas Divisiones Banos y Espejos | milestone | 0d | 2027-04-06 | 2027-04-06 | A20710 |  | 2027-04-06 |  | 96.36d | 0d |  | N | N | 1 | B00043 |  |  |
| A19600 |  | Fin Dinteles | milestone | 0d | 2027-04-22 | 2027-04-22 | A19560 FF |  |  | 2027-04-22 | 237.58d |  |  |  |  |  | B00043 |  |  |
| A1220 |  | Fin Instalacion Soportes | milestone | 0d | 2027-05-05 | 2027-05-05 | A15160 FF |  |  | 2027-05-05 | 228.58d | 168.52d |  | N | N | 1 | B00043 |  |  |
| A1350 |  | Inicio Dotacion | milestone | 0d | 2027-05-19 | 2027-05-19 | A21020 |  | 2027-05-19 |  | 96.36d | 0d |  | N | N | 1 | B00043 |  |  |
| A1180 |  | Fin Obra Gris | milestone | 0d | 2027-05-25 | 2027-05-25 | A1030 FF, A18110 |  |  | 2027-05-25 | 215.13d | 155.07d |  | N | N | 1 | B00043 |  |  |
| A1150 |  | Fin Cubierta Acabados | milestone | 0d | 2027-05-25 | 2027-05-25 | A2460 FF |  |  | 2027-05-25 | 214.85d | 179.79d |  | N | N | 1 | B00043 |  |  |
| A22030 |  | Inicio Estuco y Pintura-03 | milestone | 0d | 2027-06-08 | 2027-06-08 | A21460 FS-10d |  | 2027-06-08 |  | 96.36d | 0d |  |  |  |  | B00043 |  |  |
| A22090 |  | Inicio Detallado y Aseo Apartamentos | milestone | 0d | 2027-06-14 | 2027-06-14 | A21890 |  | 2027-06-14 |  | 96.36d | 0d |  |  |  |  | B00043 |  |  |
| A1260 |  | Fin Laminado Pintura Cielo Raso | milestone | 0d | 2027-06-22 | 2027-06-22 | A15210 FF |  |  | 2027-06-22 | 197.06d | 137d |  | N | N | 1 | B00043 |  |  |
| A1200 |  | Fin Estuco y Pintura-01 | milestone | 0d | 2027-07-09 | 2027-07-09 | A15140 FF |  |  | 2027-07-09 | 185.58d | 125.52d |  | N | N | 1 | B00043 |  |  |
| A1300 |  | Fin Ceramica y Enchapes | milestone | 0d | 2027-08-02 | 2027-08-02 | A15280 FF, A15240 FF, A15260 FF, A15250 FF, A15290 FF, A15270 FF |  |  | 2027-08-02 | 170.06d | 110d |  | N | N | 1 | B00043 |  |  |
| A19800 |  | Fin Ventaneria | milestone | 0d | 2027-08-02 | 2027-08-02 | A15300 FF |  |  | 2027-08-02 | 170.06d |  |  |  |  |  | B00043 |  |  |
| A1320 |  | Fin Estuco y Pintura-02 | milestone | 0d | 2027-08-13 | 2027-08-13 | A6940 FF, A19780 |  |  | 2027-08-13 | 161.06d | 101d |  | N | N | 1 | B00043 |  |  |
| A1340 |  | Fin Inst. elec-comun | milestone | 0d | 2027-09-06 | 2027-09-06 | A7110, A7230, A7070, A7550, A7350, A7310, A7270, A15310, A7510, A7470, A7430, A7390, A7190, A7150, A7110 SS |  |  | 2027-09-06 | 146.06d | 86d |  | N | N | 1 | B00043 |  |  |
| A1710 |  | Fin Foso | milestone | 0d | 2027-09-13 | 2027-09-13 | A14100 FF |  |  | 2027-09-13 | 34.15d | 0d |  | N | N | 1 | B00043 |  |  |
| A1720 |  | Inicio Instalacion Ascensor | milestone | 0d | 2027-09-13 | 2027-09-13 | A1710 |  | 2027-09-13 |  | 34.15d | 0d |  | N | N | 1 | B00043 | Estratégicos |  |
| A19980 |  | Fin Carp. Madera | milestone | 0d | 2027-10-25 | 2027-10-25 | A20700 FF |  |  | 2027-10-25 | 112.06d |  |  |  |  |  | B00043 |  |  |
| A20740 |  | Fin Mesones | milestone | 0d | 2027-11-02 | 2027-11-02 | A20850, A20890, A21010 FF, A20720, A20760, A20780, A20870, A20970, A20800, A20820, A20910, A20930, A20950, A20990 |  |  | 2027-11-02 | 107.06d |  |  |  |  |  | B00043 |  |  |
| A1730 |  | Fin Instalacion Ascensor | milestone | 0d | 2027-11-10 | 2027-11-10 | A14180 FF |  |  | 2027-11-10 | 100.85d | 65.79d |  | N | N | 1 | B00043 | Estratégicos |  |
| A1380 |  | Fin Barandas Divisiones Banos y Espejos | milestone | 0d | 2027-11-26 | 2027-11-26 | A21040, A21100, A21130, A21180, A21210, A21240, A21280, A21310, A21030, A21120, A21190, A21220, A21250, A21270, A21300, A21360, A21060, A21070, A21090, A21150, A21160, A21340, A21370, A21400, A21330, A21390, A21420 FF, A21430 FF |  |  | 2027-11-26 | 90.06d | 30d |  | N | N | 1 | B00043 |  |  |
| A1530 |  | Fin Fachada | milestone | 0d | 2027-12-20 | 2027-12-20 | A23820 FF, A23180 FF |  |  | 2027-12-20 | 42.7d | 0d |  | N | N | 1 | B00043 |  |  |
| A1760 |  | Inicio Entregas Calidad | milestone | 0d | 2027-12-21 | 2027-12-21 | A1010, A1020, A1530 |  | 2027-12-21 |  | 74.7d |  |  | N | N | 1 | B00043 | Entregas |  |
| A1790 |  | Entrega Calidad Piso 3 | milestone | 0d | 2028-01-12 | 2028-01-12 | A14260 FF |  |  | 2028-01-12 | 69.7d | 5d |  | N | N | 1 | B00043 | Entregas | -8.0 |
| A1800 |  | Entrega Calidad Piso 4 | milestone | 0d | 2028-01-19 | 2028-01-19 | A14280 FF, A1790 |  |  | 2028-01-19 | 64.7d | 5d |  | N | N | 1 | B00043 | Entregas | -3.0 |
| A1360 |  | Fin Dotacion | milestone | 0d | 2028-01-26 | 2028-01-26 | A21880 |  |  | 2028-01-26 | 60.06d | 0d |  | N | N | 1 | B00043 |  |  |
| A1390 |  | Fin Apartamento | milestone | 0d | 2028-01-26 | 2028-01-26 | A1340, A1320, A1380, A1180, A1200, A1260, A1240, A1360, A1300, A1220 |  |  | 2028-01-26 | 60.06d | 25d |  | N | N | 1 | B00043 |  |  |
| A1810 |  | Entrega Calidad Piso 5 | milestone | 0d | 2028-01-26 | 2028-01-26 | A14300 FF, A1800 |  |  | 2028-01-26 | 59.7d | 3d |  | N | N | 1 | B00043 | Entregas | 7.0 |
| A1820 |  | Entrega Calidad Piso 6 | milestone | 0d | 2028-01-31 | 2028-01-31 | A14320 FF, A1810 |  |  | 2028-01-31 | 56.7d | 14d |  | N | N | 1 | B00043 | Entregas | 9.0 |

| ID | WBS | Activity | Type | Duration | Start | Finish | Predecessors | Complete | Planned start | Planned finish | Total float | Free float | Resources | Cost | Actual cost | CBB_Obras | Hito Inicio - Fin | Tipo 80-20 | Tipo de hito | Holgura (FEO) | CBB_Etapas | CBB_Piso | Contratista | CBB_Procesos |
| --- | --- | --- | --- | --- | --- | --- | --- | --- | --- | --- | --- | --- | --- | --- | --- | --- | --- | --- | --- | --- | --- | --- | --- | --- |
| A22040 |  | Fin Estuco y Pintura-03 | milestone | 0d | 2028-02-09 | 2028-02-09 | A21890, A21910, A21920, A21930, A21950, A21960, A21980, A21900, A21940, A21970, A22020 FF, A21990, A22000, A22010 |  |  | 2028-02-09 | 50.06d |  |  |  |  | B00043 |  |  |  |  |  |  |  |  |
| A1830 |  | Entrega Calidad Piso 7 | milestone | 0d | 2028-02-18 | 2028-02-18 | A1820, A14340 FF |  |  | 2028-02-18 | 42.7d | 0d |  |  |  | B00043 | N | N | Entregas | 20.0 | 1 |  |  |  |
| A1840 |  | Entrega Calidad Piso 8 | milestone | 0d | 2028-02-18 | 2028-02-18 | A14360 FF, A1830 |  |  | 2028-02-18 | 42.7d | 0d |  |  |  | B00043 | N | N | Entregas | 24.0 | 1 |  |  |  |
| A1850 |  | Entrega Calidad Piso 9 | milestone | 0d | 2028-02-18 | 2028-02-18 | A1840, A14380 FF |  |  | 2028-02-18 | 42.7d | 0d |  |  |  | B00043 | N | N | Entregas | 30.0 | 1 |  |  |  |
| A1860 |  | Entrega Calidad Piso 10 | milestone | 0d | 2028-02-18 | 2028-02-18 | A1850, A14400 FF |  |  | 2028-02-18 | 42.7d | 0d |  |  |  | B00043 | N | N | Entregas | 11.0 | 1 |  |  |  |
| A1870 |  | Entrega Calidad Piso 11 | milestone | 0d | 2028-02-18 | 2028-02-18 | A14420 FF, A1860 |  |  | 2028-02-18 | 42.7d | 0d |  |  |  | B00043 | N | N | Entregas | 13.0 | 1 |  |  |  |
| A1880 |  | Entrega Calidad Piso 12 | milestone | 0d | 2028-02-18 | 2028-02-18 | A1870, A14440 FF |  |  | 2028-02-18 | 42.7d | 0d |  |  |  | B00043 | N | N | Entregas | 14.0 | 1 |  |  |  |
| A1890 |  | Entrega Calidad Piso 13 | milestone | 0d | 2028-02-18 | 2028-02-18 | A1880, A14460 FF |  |  | 2028-02-18 | 42.7d | 0d |  |  |  | B00043 | N | N | Entregas | 18.0 | 1 |  |  |  |
| A1900 |  | Entrega Calidad Piso 14 | milestone | 0d | 2028-02-18 | 2028-02-18 | A14480 FF, A1890 |  |  | 2028-02-18 | 42.7d | 7.64d |  |  |  | B00043 | N | N | Entregas | 20.0 | 1 |  |  |  |
| A22100 |  | Fin Detallado y Aseo Apartamentos | milestone | 0d | 2028-02-25 | 2028-02-25 | A22080, A22180, A22200, A22260, A22280, A22300, A22320, A22340, A22360 FF, A22120, A22140, A22160, A22220, A22240 |  |  | 2028-02-25 | 38.06d | 3d |  |  |  | B00043 |  |  |  |  |  |  |  |  |
| A1910 |  | Entrega Calidad Piso 15 | milestone | 0d | 2028-03-01 | 2028-03-01 | A14500 FF, A1900 |  |  | 2028-03-01 | 35.06d | 0d |  |  |  | B00043 | N | N | Entregas | 21.0 | 1 |  |  |  |
| A1920 |  | Entrega Calidad Piso 16 | milestone | 0d | 2028-03-01 | 2028-03-01 | A1910, A14520 FF |  |  | 2028-03-01 | 35.06d | 0d |  |  |  | B00043 | N | N | Entregas | 24.0 | 1 |  |  |  |
| A1930 |  | Fin Entrega Calidad | milestone | 0d | 2028-03-01 | 2028-03-01 | A1390, A1920, A1690, A1730 |  |  | 2028-03-01 | 35.06d | 0d |  |  |  | B00043 | N | N |  |  | 1 |  |  |  |
| A1940 |  | Fin Proyecto | milestone | 0d | 2028-03-01 | 2028-03-01 | A1930 FF, A1150 FF, A1750 FF, A22100 FF |  |  | 2028-03-01 | 35.06d |  |  |  |  | B00043 | N | N |  |  | 1 |  |  |  |
|  | 01EXC_REL | **01. Exc. & Relleno** |  |  | 2024-12-02 | 2025-01-14 |  |  |  |  |  |  |  |  |  |  |  |  |  |  |  |  |  |  |
| A1950 |  | Conformacion mecanica terreno |  | 11d | 2024-12-02 A | 2024-12-16 A | A1040 SS | 100% | 2025-01-07 | 2025-01-21 |  |  | Dummy [0.25 h] | 0.25 | 0.25 | B00043 | N | N |  |  | 1 | -2 | 860015576 | Exc-&-Rel |
| A1960 |  | Capa N° -Relleno Seleccionado (Aprobada) |  | 11d | 2024-12-17 A | 2025-01-14 A | A1950 | 100% | 2025-01-22 | 2025-02-05 |  |  | Dummy [0.25 h] | 0.25 | 0.25 | B00043 | N | N |  |  | 1 | -2 | 860015576 | Exc-&-Rel |
|  | 02PIL | **02. Pilotaje** |  |  | 2024-12-16 | 2025-06-16 |  |  |  |  |  |  |  |  |  |  |  |  |  |  |  |  |  |  |
| A1970 |  | Ejecución del Pilote |  | 113d | 2024-12-16 A | 2025-06-16 A | A1060 SS | 100% | 2026-05-12 | 2026-10-27 |  |  | Dummy [0.5 h] | 0.5 | 0.5 | B00043 | N | N |  |  | 1 | -2 | 860015576 | Pil |
|  | 05CIM | **03. Cimentacion** |  |  | 2025-04-08 | 2025-09-01 |  |  |  |  |  |  |  |  |  |  |  |  |  |  |  |  |  |  |
| A1990 |  | Amarre placa inferior |  | 3d | 2025-04-08 A | 2025-07-30 A | A1980 | 100% | 2025-09-17 | 2025-09-19 |  |  | Dummy [0.07 h] | 0.07 | 0.07 | B00043 | N | N |  |  | 1 | -2 |  | Cim |
| A2000 |  | Amarre acero vigas y arranques |  | 3d | 2025-04-15 A | 2025-09-01 A | A1990 | 100% | 2026-04-15 | 2026-04-17 |  |  | Dummy [0.07 h] | 0.07 | 0.07 | B00043 | N | N |  |  | 1 | -2 |  | Cim |
| A2030 |  | Amarre acero placa contrapiso |  | 3d | 2025-05-01 A | 2025-08-30 A | A2020 | 100% | 2027-01-19 | 2027-01-21 |  |  | Dummy [0.07 h] | 0.07 | 0.07 | B00043 | N | N |  |  | 1 | -2 |  | Cim |
| A1980 |  | Descabece pilotes |  | 4d | 2025-07-28 A | 2025-08-14 A | A1080 SS | 100% | 2026-12-09 | 2026-12-14 |  |  | Dummy [0.07 h] | 0.07 | 0.07 | B00043 | N | N |  |  | 1 | -2 |  | Cim |
| A2020 |  | Inst. Caseton |  | 3d | 2025-08-13 A | 2025-08-21 A | A2010 | 100% | 2025-09-30 | 2025-10-02 |  |  | Dummy [0.07 h] | 0.07 | 0.07 | B00043 | N | N |  |  | 1 | -2 |  | Cim |
| A2010 |  | Fundida placa inferior |  | 3d | 2025-08-22 A | 2025-08-29 A | A2000 | 100% | 2025-09-25 | 2025-09-29 |  |  | Dummy [0.07 h] | 0.07 | 0.07 | B00043 | N | N |  |  | 1 | -2 |  | Cim |
| A2040 |  | Fundida vigas y placa contrapiso |  | 2d | 2025-08-26 A | 2025-08-28 A | A2030 | 100% | 2025-10-16 | 2025-10-17 |  |  | Dummy [0.05 h] | 0.05 | 0.05 | B00043 | N | N |  |  | 1 | -2 |  | Cim |

| ID | WBS | Activity | Duration | Start | Finish | Predecessors | Complete | Planned start | Planned finish | Constraint | Resources | Cost | Actual cost | Hito Inicio - Fin | Tipo 80-20 | CBB_Obras | CBB_Procesos | CBB_Piso | CBB_Etapas |
| --- | --- | --- | --- | --- | --- | --- | --- | --- | --- | --- | --- | --- | --- | --- | --- | --- | --- | --- | --- |
|  | 07EST | **04. Estructura** |  | 2025-08-25 | 2026-11-26 |  |  |  |  |  |  |  |  |  |  |  |  |  |  |
|  | P01 | **Sotano 2** |  | 2025-08-25 | 2025-10-25 |  |  |  |  |  |  |  |  |  |  |  |  |  |  |
| A14700 |  | Fundida de muros | 10d | 2025-08-25 A | 2025-09-17 A | A14690 SS+10d, A2050 | 100% | 2027-02-23 | 2027-03-08 |  |  |  |  | N | N | B00043 |  |  |  |
| A2050 |  | Fundida de placa | 20d | 2025-09-01 A | 2025-09-26 A | A1100 SS | 100% | 2027-01-26 | 2027-02-22 |  | Dummy [0.08 h] | 0.08 | 0.08 | N | N | B00043 | Est | 1 | 1 |
| A14690 |  | Fundida de muros | 10d | 2025-09-23 A | 2025-10-25 A | A2050 SS+10d | 100% | 2027-02-09 | 2027-02-22 |  |  |  |  | N | N | B00043 |  |  |  |
|  | P02 | **Sotano 1** |  | 2025-09-26 | 2025-11-21 |  |  |  |  |  |  |  |  |  |  |  |  |  |  |
| A2060 |  | Fundida de placa | 15d | 2025-09-26 A | 2025-11-21 A | A14700 SS, A2050 | 100% | 2024-09-26 | 2024-10-17 |  | Dummy [0.08 h] | 0.08 | 0.08 | N | N | B00043 | Est | 2 | 1 |
| A2070 |  | Fundida de muros | 15d | 2025-10-06 A | 2025-11-18 A | A2060 SS+5d, A14700 | 100% | 2027-03-09 | 2027-04-05 | start on or after 2025-10-06 | Dummy [0.08 h] | 0.08 | 0.08 | N | N | B00043 | Est | 2 | 1 |
|  | P03 | **Piso 03** |  | 2025-10-27 | 2025-12-11 |  |  |  |  |  |  |  |  |  |  |  |  |  |  |
| A2080 |  | Fundida de placa | 15d | 2025-10-27 A | 2025-11-29 A | A2070 SS+5d, A2060 | 100% | 2027-03-16 | 2027-04-12 |  | Dummy [0.08 h] | 0.08 | 0.08 | N | N | B00043 | Est | 3 | 1 |
| A2090 |  | Fundida de muros | 15d | 2025-11-10 A | 2025-12-11 A | A2080 SS+5d, A2070 | 100% | 2027-04-06 | 2027-04-26 |  | Dummy [0.08 h] | 0.08 | 0.08 | N | N | B00043 | Est | 3 | 1 |
|  | P04 | **Piso 04** |  | 2025-12-02 | 2026-01-13 |  |  |  |  |  |  |  |  |  |  |  |  |  |  |
| A2110 |  | Fundida de muros | 15d | 2025-12-02 A | 2026-01-13 A | A2090, A2100 SS+5d | 100% | 2027-04-27 | 2027-05-18 |  | Dummy [0.08 h] | 0.08 | 0.08 | N | N | B00043 | Est | 4 | 1 |
| A2100 |  | Fundida de placa | 15d | 2025-12-04 A | 2025-12-23 A | A2080, A2090 SS+5d | 100% | 2027-04-13 | 2027-05-03 |  | Dummy [0.08 h] | 0.08 | 0.08 | N | N | B00043 | Est | 4 | 1 |
|  | P05 | **Piso 05** |  | 2025-12-11 | 2026-02-03 |  |  |  |  |  |  |  |  |  |  |  |  |  |  |
| A2120 |  | Fundida de placa | 15d | 2025-12-11 A | 2026-01-23 A | A2100, A2110 SS+5d | 100% | 2027-05-04 | 2027-05-25 |  | Dummy [0.08 h] | 0.08 | 0.08 | N | N | B00043 | Est | 5 | 1 |
| A2130 |  | Fundida de muros | 15d | 2026-01-07 A | 2026-02-03 A | A2110, A2120 SS+5d | 100% | 2027-05-19 | 2027-06-10 |  | Dummy [0.08 h] | 0.08 | 0.08 | N | N | B00043 | Est | 5 | 1 |
|  | P06 | **Piso 06** |  | 2026-01-26 | 2026-03-23 |  |  |  |  |  |  |  |  |  |  |  |  |  |  |
| A2140 |  | Fundida de placa | 15d | 2026-01-26 A | 2026-02-27 A | A2120, A2130 SS+5d | 100% | 2027-05-26 | 2027-06-17 |  | Dummy [0.08 h] | 0.08 | 0.08 | N | N | B00043 | Est | 6 | 1 |
| A2150 |  | Fundida de muros | 15d | 2026-02-05 A | 2026-03-23 A | A2130, A2140 SS+5d | 100% | 2027-06-11 | 2027-07-01 |  | Dummy [0.08 h] | 0.08 | 0.08 | N | N | B00043 | Est | 6 | 1 |
|  | P07 | **Piso 07** |  | 2026-02-17 | 2026-05-02 |  |  |  |  |  |  |  |  |  |  |  |  |  |  |
| A2160 |  | Fundida de placa | 15d | 2026-02-17 A | 2026-03-27 A | A2140, A2150 SS+5d | 100% | 2027-06-17 | 2027-07-08 | start on or after 2027-06-17 | Dummy [0.08 h] | 0.08 | 0.08 | N | N | B00043 | Est | 7 | 1 |
| A2170 |  | Fundida de muros | 15d | 2026-02-26 A | 2026-05-02 A | A2150, A2160 SS+5d | 100% | 2027-07-02 | 2027-07-26 |  | Dummy [0.08 h] | 0.08 | 0.08 | N | N | B00043 | Est | 7 | 1 |
|  | P08 | **Piso 08** |  | 2026-03-16 | 2026-05-14 |  |  |  |  |  |  |  |  |  |  |  |  |  |  |
| A2180 |  | Fundida de placa | 15d | 2026-03-16 A | 2026-05-08 A | A2160, A2170 SS+5d | 100% | 2026-04-27 | 2026-05-19 | start on or after 2026-03-30 | Dummy [0.08 h] | 0.08 | 0.08 | N | N | B00043 | Est | 8 | 1 |
| A2190 |  | Fundida de muros | 15d | 2026-04-16 A | 2026-05-14 A | A2180 SS+5d, A2170 | 100% | 2027-07-27 | 2027-08-17 |  | Dummy [0.08 h] | 0.08 | 0.08 | N | N | B00043 | Est | 8 | 1 |

| ID | WBS | Activity | Duration | Start | Finish | Predecessors | Complete | Remaining | Planned start | Planned finish | Total float | Free float | Resources | Cost | Actual cost | Hito Inicio - Fin | Tipo 80-20 | CBB_Obras | CBB_Procesos | CBB_Piso | CBB_Etapas |
| --- | --- | --- | --- | --- | --- | --- | --- | --- | --- | --- | --- | --- | --- | --- | --- | --- | --- | --- | --- | --- | --- |
|  | P09 | **Piso 09** |  | 2026-04-24 | 2026-06-05 |  |  |  |  |  |  |  |  |  |  |  |  |  |  |  |  |
| A2200 |  | Fundida de placa | 15d | 2026-04-24 A | 2026-05-19 A | A2180, A2190 SS+5d | 100% |  | 2026-02-11 | 2026-03-03 |  |  | Dummy [0.08 h] | 0.08 | 0.08 | N | N | B00043 | Est | 9 | 1 |
| A2210 |  | Fundida de muros | 15d | 2026-05-04 A | 2026-06-05 A | A2200 SS+5d, A2190 | 100% |  | 2026-06-23 | 2026-07-15 |  |  | Dummy [0.08 h] | 0.08 | 0.08 | N | N | B00043 | Est | 9 | 1 |
|  | P10 | **Piso 10** |  | 2026-05-22 | 2026-07-21 |  |  |  |  |  |  |  |  |  |  |  |  |  |  |  |  |
| A2220 |  | Fundida de placa | 15d | 2026-05-22 A | 2026-06-12 A | A2210 SS+5d, A2200 | 100% |  | 2026-06-03 | 2026-06-26 |  |  | Dummy [0.08 h] | 0.08 | 0.08 | N | N | B00043 | Est | 10 | 1 |
| A2230 |  | Fundida de muros | 15d | 2026-05-25 A | 2026-07-21 | A2210, A2220 SS+5d | 95% | 0.75d | 2026-06-16 | 2026-07-08 | 34.15d | 0d | Dummy [0.08 h] | 0.08 | 0.08 | N | N | B00043 | Est | 10 | 1 |
|  | P11 | **Piso 11** |  | 2026-05-28 | 2026-07-28 |  |  |  |  |  |  |  |  |  |  |  |  |  |  |  |  |
| A2240 |  | Fundida de placa | 15d | 2026-05-28 A | 2026-07-22 | A2220, A2230 SS+5d | 90% | 1.5d | 2026-06-26 | 2026-07-21 | 34.9d | 0d | Dummy [0.08 h] | 0.08 | 0.07 | N | N | B00043 | Est | 11 | 1 |
| A2250 |  | Fundida de muros | 15d | 2026-06-17 A | 2026-07-28 | A2240 SS+5d, A2230 | 66% | 5.1d | 2026-06-30 | 2026-07-22 | 34.15d | 0d | Dummy [0.08 h] | 0.08 | 0.05 | N | N | B00043 | Est | 11 | 1 |
|  | P12 | **Piso 12** |  | 2026-06-22 | 2026-08-20 |  |  |  |  |  |  |  |  |  |  |  |  |  |  |  |  |
| A2260 |  | Fundida de placa | 15d | 2026-06-22 A | 2026-08-05 | A2250 SS+5d, A2240 | 33% | 10.05d | 2026-07-02 | 2026-07-24 | 36.45d | 0d | Dummy [0.08 h] | 0.08 | 0.03 | N | N | B00043 | Est | 12 | 1 |
| A2270 |  | Fundida de muros | 15d | 2026-07-28 | 2026-08-20 | A2250, A2260 SS+5d |  |  |  |  | 34.15d | 0d | Dummy [0.08 h] | 0.08 |  | N | N | B00043 | Est | 12 | 1 |
|  | P13 | **Piso 13** |  | 2026-08-05 | 2026-09-10 |  |  |  |  |  |  |  |  |  |  |  |  |  |  |  |  |
| A2280 |  | Fundida de placa | 15d | 2026-08-05 | 2026-08-28 | A2270 SS+5d, A2260 |  |  |  |  | 36.45d | 0d | Dummy [0.08 h] | 0.08 |  | N | N | B00043 | Est | 13 | 1 |
| A2290 |  | Fundida de muros | 15d | 2026-08-20 | 2026-09-10 | A2270, A2280 SS+5d |  |  |  |  | 34.15d | 0d | Dummy [0.08 h] | 0.08 |  | N | N | B00043 | Est | 13 | 1 |
|  | P14 | **Piso 14** |  | 2026-08-28 | 2026-10-01 |  |  |  |  |  |  |  |  |  |  |  |  |  |  |  |  |
| A2300 |  | Fundida de placa | 15d | 2026-08-28 | 2026-09-18 | A2280, A2290 SS+5d |  |  |  |  | 36.45d | 0d | Dummy [0.08 h] | 0.08 |  | N | N | B00043 | Est | 14 | 1 |
| A2310 |  | Fundida de muros | 15d | 2026-09-10 | 2026-10-01 | A2290, A2300 SS+5d |  |  |  |  | 34.15d | 0d | Dummy [0.08 h] | 0.08 |  | N | N | B00043 | Est | 14 | 1 |
|  | P15 | **Piso 15** |  | 2026-09-18 | 2026-10-23 |  |  |  |  |  |  |  |  |  |  |  |  |  |  |  |  |
| A2320 |  | Fundida de placa | 15d | 2026-09-18 | 2026-10-09 | A2310 SS+5d, A2300 |  |  |  |  | 36.45d | 0d | Dummy [0.08 h] | 0.08 |  | N | N | B00043 | Est | 15 | 1 |
| A2330 |  | Fundida de muros | 15d | 2026-10-01 | 2026-10-23 | A2320 SS+5d, A2310 |  |  |  |  | 34.15d | 0d | Dummy [0.08 h] | 0.08 |  | N | N | B00043 | Est | 15 | 1 |
|  | P16 | **Piso 16** |  | 2026-10-09 | 2026-11-26 |  |  |  |  |  |  |  |  |  |  |  |  |  |  |  |  |
| A14710 |  | Fundida de placa | 12d | 2026-10-09 | 2026-10-28 | A2330 SS+5d, A2320 |  |  |  |  | 36.45d | 2.3d |  |  |  | N | N | B00043 |  |  |  |
| A14720 |  | Fundida de muros | 12d | 2026-10-23 | 2026-11-11 | A2330, A14710 SS+5d |  |  |  |  | 34.15d | 0d |  |  |  | N | N | B00043 |  |  |  |
| A2340 |  | Fundida de placa | 12d | 2026-10-30 | 2026-11-19 | A14720 SS+5d, A14710 |  |  |  |  | 34.15d | 0d | Dummy [0.08 h] | 0.08 |  | N | N | B00043 | Est | 16 | 1 |
| A2350 |  | Fundida de muros | 12d | 2026-11-09 | 2026-11-26 | A2340 SS+5d, A14720 SS+5d |  |  |  |  | 34.15d | 0d | Dummy [0.08 h] | 0.08 |  | N | N | B00043 | Est | 16 | 1 |

| ID | WBS | Activity | Duration | Start | Finish | Predecessors | Complete | Remaining | Planned start | Planned finish | Total float | Free float | Constraint | Resources | Cost | Actual cost | Hito Inicio - Fin | Tipo 80-20 | CBB_Etapas | CBB_Obras | CBB_Procesos | CBB_Piso |
| --- | --- | --- | --- | --- | --- | --- | --- | --- | --- | --- | --- | --- | --- | --- | --- | --- | --- | --- | --- | --- | --- | --- |
|  | 08CUB | **05. Cubierta** |  | 2026-11-26 | 2027-05-25 |  |  |  |  |  |  |  |  |  |  |  |  |  |  |  |  |  |
|  | 01CubEst | **01. Cubierta Estructura** |  | 2026-11-26 | 2027-01-15 |  |  |  |  |  |  |  |  |  |  |  |  |  |  |  |  |  |
| A2360 |  | Amarre y cama Placa | 15d | 2026-11-26 | 2026-12-18 | A1120 SS |  |  |  |  | 34.15d | 0d |  | Dummy [0.17 h] | 0.17 |  | N | N | 1 | B00043 | Cub-Est |  |
| A2370 |  | Fundida Placa | 15d | 2026-11-30 | 2026-12-22 | A2360 SS+2d |  |  |  |  | 34.15d | 0d |  | Dummy [0.5 h] | 0.5 |  | N | N | 1 | B00043 | Cub-Est |  |
| A2380 |  | Fundida sobrerrecodido ascensores (si aplica) | 5d | 2026-12-22 | 2027-01-15 | A2370 |  |  |  |  | 34.15d | 0d |  | Dummy [0.17 h] | 0.17 |  | N | N | 1 | B00043 | Cub-Est |  |
|  | 02CubAca | **02. Cubierta Acabados** |  | 2027-01-15 | 2027-05-25 |  |  |  |  |  |  |  |  |  |  |  |  |  |  |  |  |  |
| A2390 |  | Muros de Antepecho, ductos y cuarto Maquinas | 15d | 2027-01-15 | 2027-02-05 | A1140 SS |  |  |  |  | 214.85d | 0d |  | Dummy [0.09 h] | 0.09 |  | N | N | 1 | B00043 | Cub-Aca |  |
| A2400 |  | Inst. ductos ventilacion | 5d | 2027-02-05 | 2027-02-12 | A2390 |  |  |  |  | 214.85d | 0d |  | Dummy [0.09 h] | 0.09 |  | N | N | 1 | B00043 | Cub-Aca |  |
| A2410 |  | Panete de muros ductos (Si Aplica) | 15d | 2027-02-12 | 2027-03-05 | A2400 |  |  |  |  | 214.85d | 0d |  | Dummy [0.09 h] | 0.09 |  | N | N | 1 | B00043 | Cub-Aca |  |
| A2420 |  | Resanes de cubierta | 15d | 2027-03-05 | 2027-04-02 | A2410 |  |  |  |  | 214.85d | 0d |  | Dummy [0.09 h] | 0.09 |  | N | N | 1 | B00043 | Cub-Aca |  |
| A2430 |  | Apantallamiento | 8d | 2027-04-02 | 2027-04-14 | A2420 |  |  |  |  | 214.85d | 0d |  | Dummy [0.09 h] | 0.09 |  | N | N | 1 | B00043 | Cub-Aca |  |
| A2440 |  | Impermeabilizacion y prueba estanqueidad | 4d | 2027-04-14 | 2027-04-20 | A2430 |  |  |  |  | 214.85d | 0d |  | Dummy [0.09 h] | 0.09 |  | N | N | 1 | B00043 | Cub-Aca |  |
| A2450 |  | Cargue de piso | 18d | 2027-04-20 | 2027-05-17 | A2440 |  |  |  |  | 214.85d | 0d |  | Dummy [0.09 h] | 0.09 |  | N | N | 1 | B00043 | Cub-Aca |  |
| A2460 |  | Pintura de muros | 6d | 2027-05-17 | 2027-05-25 | A2450 |  |  |  |  | 214.85d | 0d |  | Dummy [0.09 h] | 0.09 |  | N | N | 1 | B00043 | Cub-Aca |  |
|  | 09APT | **06. Apartamentos** |  | 2026-02-16 | 2028-02-25 |  |  |  |  |  |  |  |  |  |  |  |  |  |  |  |  |  |
|  | ObrGris | **Obra Gris** |  | 2026-02-16 | 2027-05-25 |  |  |  |  |  |  |  |  |  |  |  |  |  |  |  |  |  |
|  | P03 | **Piso 03** |  | 2026-02-16 | 2026-09-28 |  |  |  |  |  |  |  |  |  |  |  |  |  |  |  |  |  |
| A2620 |  | Descolg. Prolong. Inst. Electricas | 10d | 2026-02-16 A | 2026-07-21 | A1170 SS | 100% | 0d | 2026-07-28 | 2026-08-12 | 35.06d | 0d |  | Dummy [0.02 h] | 0.02 | 0.02 | N | N | 1 | B00043 | Obr-Gri | 4 |
| A2640 |  | Descolg. Prolong. Inst. Comunicaciones | 8d | 2026-02-16 A | 2026-07-21 | A2630 SS+6d | 100% | 0d | 2026-07-28 | 2026-08-10 | 35.06d | 0d |  | Dummy [0.02 h] | 0.02 | 0.02 | N | N | 1 | B00043 | Obr-Gri | 4 |
| A16200 |  | Mamposteria Interna | 15d | 2026-03-02 A | 2026-08-04 | A14920 | 89% | 1.65d | 2026-08-20 | 2026-09-10 | 399.53d | 0d |  | Dummy [0.02 h] | 0.02 | 0.02 |  |  | 1 | B00043 |  |  |
| A2630 |  | Descolg. Prolong. Inst. hidrosanitarias | 8d | 2026-03-23 A | 2026-07-21 | A2620 SS+6d | 97% | 0.26d | 2026-07-28 | 2026-08-10 | 35.06d | 0d |  | Dummy [0.02 h] | 0.02 | 0.02 | N | N | 1 | B00043 | Obr-Gri | 4 |
| A2650 |  | Descolg. Prolong. Inst. Sanitarias | 8d | 2026-03-23 A | 2026-07-27 | A2640 SS+6d | 41% | 4.74d | 2026-07-28 | 2026-08-10 | 35.06d | 0d |  | Dummy [0.02 h] | 0.02 | 0.01 | N | N | 1 | B00043 | Obr-Gri | 4 |
| A2660 |  | Descolg. Prolong. HVAC y gas | 8d | 2026-05-12 A | 2026-07-22 | A2650 SS+6d | 79% | 1.66d | 2026-07-28 | 2026-08-10 | 35.06d | 0d |  | Dummy [0.02 h] | 0.02 | 0.02 | N | N | 1 | B00043 | Obr-Gri | 4 |
| A14920 |  | Descolg. Prolong. Inst. RCI | 15d | 2026-05-19 A | 2026-08-03 | A2660 SS+6d | 39% | 9.12d | 2026-07-28 | 2026-08-20 | 35.06d | 0d |  | Dummy [0.02 h] | 0.02 | 0.01 | N | N | 1 | B00043 |  |  |
| A16220 |  | Pañete Interno y Resanes | 15d | 2026-05-20 A | 2026-08-04 | A16200 FS-2d | 90% | 1.5d | 2026-08-19 | 2026-09-09 | 399.73d | 0d |  | Dummy [0.02 h] | 0.02 | 0.02 |  |  | 1 | B00043 |  |  |
| A16210 |  | Sobre Muros | 4d | 2026-05-25 A | 2026-08-05 | A16200 | 90% | 0.4d | 2026-08-21 | 2026-08-27 | 399.53d |  |  | Dummy [0.02 h] | 0.02 | 0.02 |  |  | 1 | B00043 |  |  |
| A16280 |  | Afinado de Pisos | 8d | 2026-05-28 A | 2026-07-29 | A16260 FS-4d | 82% | 1.44d | 2026-09-11 | 2026-09-23 | 404d |  |  | Dummy [0.02 h] | 0.02 | 0.02 |  |  | 1 | B00043 |  |  |
| A16230 |  | Poyos Cocina y Labores | 8d | 2026-06-29 A | 2026-07-31 | A16220 FS-4d | 75% | 2d | 2026-08-26 | 2026-09-07 | 399.73d | 0d |  | Dummy [0.02 h] | 0.02 | 0.02 |  |  | 1 | B00043 |  |  |
| A16250 |  | Dintel descolgado | 7d | 2026-07-06 A | 2026-08-03 | A16240 FS-8d | 9% | 6.37d | 2026-08-27 | 2026-09-07 | 401.36d | 0d |  | Dummy [0.01 h] | 0.01 | 0 |  |  | 1 | B00043 |  |  |
| A19100 |  | Dinteles Puerta Ventana | 4d | 2026-07-08 A | 2026-09-22 | A19090 | 9% | 3.64d | 2026-10-09 | 2026-10-16 | 228.58d | 0d |  | Dummy [0.02 h] | 0.02 | 0 |  |  | 1 | B00043 |  |  |
| A19110 |  | Dintel Balcon | 4d | 2026-07-14 A | 2026-09-28 | A19100 | 9% | 3.64d | 2026-10-16 | 2026-10-22 | 228.58d | 0d |  | Dummy [0.02 h] | 0.02 | 0 |  |  | 1 | B00043 |  |  |
| A16260 |  | Impermeabilizacion Zonas Humedas | 8d | 2026-07-14 A | 2026-08-03 | A16250 FS-8d | 1% | 7.92d | 2026-07-14 | 2026-07-27 | 401.44d | 0d | start on or after 2026-07-14 | Dummy [0.02 h] | 0.02 | 0 |  |  | 1 | B00043 |  |  |
| A16240 |  | Viga Baranda | 10d | 2026-08-04 A | 2026-08-04 | A16230 FS-4d | 33% | 6.7d | 2026-08-14 | 2026-08-31 | 399.73d | 0d |  | Dummy [0.02 h] | 0.02 | 0.01 |  |  | 1 | B00043 |  |  |
| A19090 |  | Dinteles Ventana | 4d | 2026-09-10 | 2026-09-16 | A19590 SS |  |  |  |  | 228.58d | 0d |  | Dummy [0.02 h] | 0.02 |  |  |  | 1 | B00043 |  |  |

| ID | WBS | Activity | Duration | Start | Finish | Predecessors | Complete | Remaining | Planned start | Planned finish | Total float | Free float | Resources | Cost | Actual cost | CBB_Obras | Tipo 80-20 | Hito Inicio - Fin | CBB_Piso | CBB_Etapas | CBB_Procesos |
| --- | --- | --- | --- | --- | --- | --- | --- | --- | --- | --- | --- | --- | --- | --- | --- | --- | --- | --- | --- | --- | --- |
|  | P04 | **Piso 04** |  | 2026-05-04 | 2026-10-15 |  |  |  |  |  |  |  |  |  |  |  |  |  |  |  |  |
| A16350 |  | Mamposteria Interna | 15d | 2026-05-04 A | 2026-08-13 | A16340 | 88% | 1.8d | 2026-09-08 | 2026-09-29 | 369.35d | 0d | Dummy [0.02 h] | 0.02 | 0.02 | B00043 |  |  |  |  |  |
| A16290 |  | Descolg. Prolong. Inst. Electricas | 10d | 2026-05-15 A | 2026-07-21 | A2620 | 97% | 0.33d | 2026-07-29 | 2026-08-13 | 215.13d | 0d | Dummy [0.02 h] | 0.02 | 0.02 | B00043 | N | N | 4 | 1 | Obr-Gri |
| A16320 |  | Descolg. Prolong. Inst. Sanitarias | 8d | 2026-05-19 A | 2026-07-23 | A16310 SS+6d | 65% | 2.77d | 2027-10-12 | 2027-10-22 | 369.35d | 0d | Dummy [0.02 h] | 0.02 | 0.01 | B00043 | N | N | 4 | 1 | Obr-Gri |
| A16310 |  | Descolg. Prolong. Inst. Comunicaciones | 8d | 2026-05-19 A | 2026-07-21 | A16300 SS+6d | 93% | 0.57d | 2026-07-29 | 2026-08-11 | 369.35d | 0d | Dummy [0.02 h] | 0.02 | 0.02 | B00043 | N | N | 4 | 1 | Obr-Gri |
| A16330 |  | Descolg. Prolong. HVAC y gas | 8d | 2026-06-09 A | 2026-07-27 | A16320 SS+6d | 47% | 4.22d | 2026-07-21 | 2026-07-31 | 369.35d | 0d | Dummy [0.02 h] | 0.02 | 0.01 | B00043 | N | N | 4 | 1 | Obr-Gri |
| A16300 |  | Descolg. Prolong. Inst. hidrosanitarias | 8d | 2026-06-09 A | 2026-07-21 | A16290 SS+6d | 89% | 0.91d | 2026-07-29 | 2026-08-11 | 369.35d | 0d | Dummy [0.02 h] | 0.02 | 0.02 | B00043 | N | N | 4 | 1 | Obr-Gri |
| A16370 |  | Pañete Interno y Resanes | 15d | 2026-06-18 A | 2026-08-31 | A16350 FS-2d | 13% | 13.05d | 2026-08-03 | 2026-08-26 | 369.35d | 0d | Dummy [0.02 h] | 0.02 | 0 | B00043 |  |  |  |  |  |
| A16360 |  | Sobre Muros | 4d | 2026-06-23 A | 2026-08-20 | A16350 | 18% | 3.28d | 2026-08-11 | 2026-08-18 | 390.62d |  | Dummy [0.02 h] | 0.02 | 0 | B00043 |  |  |  |  |  |
| A16390 |  | Viga Baranda | 10d | 2026-07-01 A | 2026-09-10 | A16380 FS-4d | 25% | 7.5d | 2026-08-18 | 2026-09-01 | 369.35d | 0d | Dummy [0.02 h] | 0.02 | 0.01 | B00043 |  |  |  |  |  |
| A16340 |  | Descolg. Prolong. Inst. RCI | 15d | 2026-07-21 | 2026-08-11 | A16330 SS+6d |  |  |  |  | 369.35d | 0d | Dummy [0.02 h] | 0.02 |  | B00043 | N | N |  |  |  |
| A16380 |  | Poyos Cocina y Labores | 8d | 2026-08-25 | 2026-09-04 | A16370 FS-4d |  |  |  |  | 369.35d | 0d | Dummy [0.02 h] | 0.02 |  | B00043 |  |  |  |  |  |
| A16400 |  | Dintel descolgado | 10d | 2026-08-31 | 2026-09-14 | A16390 FS-8d |  |  |  |  | 369.35d | 0d | Dummy [0.02 h] | 0.02 |  | B00043 |  |  |  |  |  |
| A16410 |  | Impermeabilizacion Zonas Humedas | 8d | 2026-09-02 | 2026-09-14 | A16400 FS-8d |  |  |  |  | 369.35d | 0d | Dummy [0.02 h] | 0.02 |  | B00043 |  |  |  |  |  |
| A16420 |  | Afinado de Pisos | 8d | 2026-09-08 | 2026-09-18 | A16410 FS-4d |  |  |  |  | 369.35d |  | Dummy [0.02 h] | 0.02 |  | B00043 |  |  |  |  |  |
| A19160 |  | Dinteles Ventana | 4d | 2026-09-28 | 2026-10-02 | A19110 |  |  |  |  | 228.58d | 0d | Dummy [0.02 h] | 0.02 |  | B00043 |  |  |  |  |  |
| A19170 |  | Dinteles Puerta Ventana | 4d | 2026-10-02 | 2026-10-08 | A19160 |  |  |  |  | 228.58d | 0d | Dummy [0.02 h] | 0.02 |  | B00043 |  |  |  |  |  |
| A19180 |  | Dintel Balcon | 4d | 2026-10-08 | 2026-10-15 | A19170 |  |  |  |  | 228.58d | 0d | Dummy [0.02 h] | 0.02 |  | B00043 |  |  |  |  |  |
|  | P05 | **Piso 05** |  | 2026-05-27 | 2026-11-03 |  |  |  |  |  |  |  |  |  |  |  |  |  |  |  |  |
| A16470 |  | Descolg. Prolong. Inst. Sanitarias | 12d | 2026-05-27 A | 2026-07-27 | A16460 SS+6d | 65% | 4.16d | 2026-08-12 | 2026-08-31 | 361.17d | 0d | Dummy [0.02 h] | 0.02 | 0.01 | B00043 | N | N | 4 | 1 | Obr-Gri |
| A16460 |  | Descolg. Prolong. Inst. Comunicaciones | 12d | 2026-06-02 A | 2026-07-21 | A16450 SS+6d | 100% | 0d | 2026-08-12 | 2026-08-31 | 361.17d | 0d | Dummy [0.02 h] | 0.02 | 0.02 | B00043 | N | N | 4 | 1 | Obr-Gri |
| A16570 |  | Afinado de Pisos | 12d | 2026-06-02 A | 2026-09-30 | A16560 FS-4d | 70% | 3.6d | 2026-06-02 | 2026-06-22 | 361.57d |  | Dummy [0.02 h] | 0.02 | 0.01 | B00043 |  |  |  |  |  |
| A16440 |  | Descolg. Prolong. Inst. Electricas | 10d | 2026-06-09 A | 2026-07-21 | A16290 | 100% | 0d | 2026-08-12 | 2026-08-27 | 215.13d | 0d | Dummy [0.02 h] | 0.02 | 0.02 | B00043 | N | N | 4 | 1 | Obr-Gri |
| A16450 |  | Descolg. Prolong. Inst. hidrosanitarias | 12d | 2026-06-10 A | 2026-07-28 | A16440 SS+6d | 58% | 5d | 2026-08-12 | 2026-08-31 | 361.17d | 0d | Dummy [0.02 h] | 0.02 | 0.01 | B00043 | N | N | 4 | 1 | Obr-Gri |
| A16500 |  | Mamposteria Interna | 20d | 2026-06-16 A | 2026-09-01 | A16490 | 87% | 2.6d | 2026-09-18 | 2026-10-19 | 361.17d | 0d | Dummy [0.02 h] | 0.02 | 0.02 | B00043 |  |  |  |  |  |
| A16520 |  | Pañete Interno y Resanes | 20d | 2026-06-17 A | 2026-09-08 | A16500 FS-2d | 65% | 7d | 2026-08-14 | 2026-09-14 | 361.17d | 0d | Dummy [0.02 h] | 0.02 | 0.01 | B00043 |  |  |  |  |  |
| A16540 |  | Viga Baranda | 16d | 2026-06-19 A | 2026-09-18 | A16530 FS-4d | 15% | 13.6d | 2026-08-19 | 2026-09-10 | 361.17d | 0d | Dummy [0.02 h] | 0.02 | 0 | B00043 |  |  |  |  |  |
| A16510 |  | Sobre Muros | 4d | 2026-06-23 A | 2026-09-04 | A16500 | 27% | 2.92d | 2026-08-14 | 2026-08-20 | 378.85d |  | Dummy [0.02 h] | 0.02 | 0.01 | B00043 |  |  |  |  |  |
| A16530 |  | Poyos Cocina y Labores | 8d | 2026-06-23 A | 2026-09-04 | A16520 FS-4d | 75% | 2d | 2026-09-03 | 2026-09-15 | 361.17d | 0d | Dummy [0.02 h] | 0.02 | 0.02 | B00043 |  |  |  |  |  |
| A16490 |  | Descolg. Prolong. Inst. RCI | 20d | 2026-07-29 | 2026-08-28 | A16480 SS+6d |  |  |  |  | 361.17d | 0d | Dummy [0.02 h] | 0.02 |  | B00043 | N | N |  |  |  |
| A16480 |  | Descolg. Prolong. HVAC y gas | 12d | 2026-08-03 A | 2026-07-29 | A16470 SS+6d | 50% | 6d | 2026-08-03 | 2026-08-21 | 361.17d | 0d | Dummy [0.02 h] | 0.02 | 0.01 | B00043 | N | N | 4 | 1 | Obr-Gri |
| A16550 |  | Dintel descolgado | 16d | 2026-09-08 | 2026-09-30 | A16540 FS-8d |  |  |  |  | 361.17d | 0d | Dummy [0.02 h] | 0.02 |  | B00043 |  |  |  |  |  |
| A16560 |  | Impermeabilizacion Zonas Humedas | 8d | 2026-09-18 | 2026-09-30 | A16550 FS-8d |  |  |  |  | 361.17d | 0d | Dummy [0.02 h] | 0.02 |  | B00043 |  |  |  |  |  |
| A19220 |  | Dinteles Ventana | 4d | 2026-10-15 | 2026-10-21 | A19180 |  |  |  |  | 228.58d | 0d | Dummy [0.02 h] | 0.02 |  | B00043 |  |  |  |  |  |
| A19210 |  | Dinteles Puerta Ventana | 4d | 2026-10-21 | 2026-10-27 | A19220 |  |  |  |  | 228.58d | 0d | Dummy [0.02 h] | 0.02 |  | B00043 |  |  |  |  |  |
| A19200 |  | Dintel Balcon | 4d | 2026-10-27 | 2026-11-03 | A19210 |  |  |  |  | 228.58d | 0d | Dummy [0.02 h] | 0.02 |  | B00043 |  |  |  |  |  |

| ID | WBS | Activity | Duration | Start | Finish | Predecessors | Complete | Remaining | Planned start | Planned finish | Total float | Free float | Resources | Cost | Actual cost | Tipo 80-20 | Hito Inicio - Fin | CBB_Procesos | CBB_Obras | CBB_Etapas | CBB_Piso |
| --- | --- | --- | --- | --- | --- | --- | --- | --- | --- | --- | --- | --- | --- | --- | --- | --- | --- | --- | --- | --- | --- |
|  | P06 | **Piso 06** |  | 2026-06-16 | 2026-12-22 |  |  |  |  |  |  |  |  |  |  |  |  |  |  |  |  |
| A16610 |  | Descolg. Prolong. Inst. Sanitarias | 12d | 2026-06-16 A | 2026-08-10 | A16600 SS+6d | 65% | 4.16d | 2026-07-23 | 2026-08-10 | 306.68d | 0d | Dummy [0.02 h] | 0.02 | 0.01 | N | N | Obr-Gri | B00043 | 1 | 4 |
| A16580 |  | Descolg. Prolong. Inst. Electricas | 10d | 2026-06-23 A | 2026-07-28 | A16440 | 49% | 5.12d | 2026-07-02 | 2026-07-16 | 215.13d | 0d | Dummy [0.02 h] | 0.02 | 0.01 | N | N | Obr-Gri | B00043 | 1 | 4 |
| A16680 |  | Viga Baranda | 16d | 2026-06-30 A | 2026-11-27 | A16670 FS-4d | 10% | 14.4d | 2026-10-27 | 2026-11-20 | 306.68d | 0d | Dummy [0.02 h] | 0.02 | 0 |  |  |  | B00043 |  |  |
| A16600 |  | Descolg. Prolong. Inst. Comunicaciones | 12d | 2026-07-15 A | 2026-08-06 | A16590 SS+6d | 50% | 6d | 2026-07-15 | 2026-08-03 | 306.68d | 0d | Dummy [0.02 h] | 0.02 | 0.01 | N | N | Obr-Gri | B00043 | 1 | 4 |
| A16590 |  | Descolg. Prolong. Inst. hidrosanitarias | 12d | 2026-07-21 | 2026-08-06 | A16580 SS+6d |  |  |  |  | 306.68d | 0d | Dummy [0.02 h] | 0.02 |  | N | N | Obr-Gri | B00043 | 1 | 4 |
| A16620 |  | Descolg. Prolong. HVAC y gas | 12d | 2026-08-03 | 2026-08-21 | A16610 SS+6d |  |  |  |  | 306.68d | 0d | Dummy [0.02 h] | 0.02 |  | N | N | Obr-Gri | B00043 | 1 | 4 |
| A16630 |  | Descolg. Prolong. Inst. RCI | 20d | 2026-08-12 | 2026-09-10 | A16620 SS+6d |  |  |  |  | 306.68d | 0d | Dummy [0.02 h] | 0.02 |  | N | N |  | B00043 |  |  |
| A16640 |  | Mamposteria Interna | 20d | 2026-09-10 | 2026-10-08 | A16630 |  |  |  |  | 306.68d | 0d | Dummy [0.02 h] | 0.02 |  |  |  |  | B00043 |  |  |
| A16660 |  | Pañete Interno y Resanes | 20d | 2026-10-06 | 2026-11-05 | A16640 FS-2d |  |  |  |  | 306.68d | 0d | Dummy [0.02 h] | 0.02 |  |  |  |  | B00043 |  |  |
| A16650 |  | Sobre Muros | 4d | 2026-10-08 | 2026-10-15 | A16640 |  |  |  |  | 351.08d |  | Dummy [0.02 h] | 0.02 |  |  |  |  | B00043 |  |  |
| A16670 |  | Poyos Cocina y Labores | 8d | 2026-10-29 | 2026-11-11 | A16660 FS-4d |  |  |  |  | 306.68d | 0d | Dummy [0.02 h] | 0.02 |  |  |  |  | B00043 |  |  |
| A19270 |  | Dinteles Ventana | 4d | 2026-11-03 | 2026-11-09 | A19200 |  |  |  |  | 228.58d | 0d | Dummy [0.02 h] | 0.02 |  |  |  |  | B00043 |  |  |
| A19260 |  | Dinteles Puerta Ventana | 4d | 2026-11-09 | 2026-11-13 | A19270 |  |  |  |  | 228.58d | 0d | Dummy [0.02 h] | 0.02 |  |  |  |  | B00043 |  |  |
| A19250 |  | Dintel Balcon | 4d | 2026-11-13 | 2026-11-20 | A19260 |  |  |  |  | 228.58d | 0d | Dummy [0.02 h] | 0.02 |  |  |  |  | B00043 |  |  |
| A16690 |  | Dintel descolgado | 16d | 2026-11-17 | 2026-12-10 | A16680 FS-8d |  |  |  |  | 306.68d | 0d | Dummy [0.02 h] | 0.02 |  |  |  |  | B00043 |  |  |
| A16700 |  | Impermeabilizacion Zonas Humedas | 8d | 2026-11-27 | 2026-12-10 | A16690 FS-8d |  |  |  |  | 306.68d | 0d | Dummy [0.02 h] | 0.02 |  |  |  |  | B00043 |  |  |
| A16710 |  | Afinado de Pisos | 12d | 2026-12-03 | 2026-12-22 | A16700 FS-4d |  |  |  |  | 306.68d |  | Dummy [0.02 h] | 0.02 |  |  |  |  | B00043 |  |  |
|  | P07 | **Piso 07** |  | 2026-06-16 | 2026-12-14 |  |  |  |  |  |  |  |  |  |  |  |  |  |  |  |  |
| A16740 |  | Descolg. Prolong. Inst. Comunicaciones | 12d | 2026-06-16 A | 2026-08-12 | A16730 SS+6d | 65% | 4.25d | 2026-07-06 | 2026-07-23 | 312.44d | 0d | Dummy [0.02 h] | 0.02 | 0.01 | N | N | Obr-Gri | B00043 | 1 | 4 |
| A16780 |  | Mamposteria Interna | 20d | 2026-06-16 A | 2026-09-29 | A16770 | 57% | 8.6d | 2026-09-01 | 2026-09-29 | 312.44d | 0d | Dummy [0.02 h] | 0.02 | 0.01 |  |  |  | B00043 |  |  |
| A16720 |  | Descolg. Prolong. Inst. Electricas | 10d | 2026-06-25 A | 2026-07-31 | A16580 | 69% | 3.12d | 2026-06-19 | 2026-07-06 | 215.13d | 0d | Dummy [0.02 h] | 0.02 | 0.01 | N | N | Obr-Gri | B00043 | 1 | 4 |
| A16750 |  | Descolg. Prolong. Inst. Sanitarias | 12d | 2026-07-14 A | 2026-08-20 | A16740 SS+6d | 22% | 9.34d | 2026-08-12 | 2026-08-31 | 312.44d | 0d | Dummy [0.02 h] | 0.02 | 0 | N | N | Obr-Gri | B00043 | 1 | 4 |
| A16730 |  | Descolg. Prolong. Inst. hidrosanitarias | 12d | 2026-07-28 | 2026-08-14 | A16720 SS+6d |  |  |  |  | 312.44d | 0d | Dummy [0.02 h] | 0.02 |  | N | N | Obr-Gri | B00043 | 1 | 4 |
| A16760 |  | Descolg. Prolong. HVAC y gas | 12d | 2026-08-10 | 2026-08-27 | A16750 SS+6d |  |  |  |  | 312.44d | 0d | Dummy [0.02 h] | 0.02 |  | N | N | Obr-Gri | B00043 | 1 | 4 |
| A16770 |  | Descolg. Prolong. Inst. RCI | 20d | 2026-08-19 | 2026-09-16 | A16760 SS+6d |  |  |  |  | 312.44d | 0d | Dummy [0.02 h] | 0.02 |  | N | N |  | B00043 |  |  |
| A16800 |  | Pañete Interno y Resanes | 20d | 2026-09-25 | 2026-10-26 | A16780 FS-2d |  |  |  |  | 312.44d | 0d | Dummy [0.02 h] | 0.02 |  |  |  |  | B00043 |  |  |
| A16790 |  | Sobre Muros | 4d | 2026-10-01 A | 2026-10-01 | A16780 | 55% | 1.8d | 2026-10-08 | 2026-10-15 | 360.64d |  | Dummy [0.02 h] | 0.02 | 0.01 |  |  |  | B00043 |  |  |
| A16810 |  | Poyos Cocina y Labores | 8d | 2026-10-20 | 2026-10-30 | A16800 FS-4d |  |  |  |  | 312.44d | 0d | Dummy [0.02 h] | 0.02 |  |  |  |  | B00043 |  |  |
| A16820 |  | Viga Baranda | 16d | 2026-10-26 | 2026-11-19 | A16810 FS-4d |  |  |  |  | 312.44d | 0d | Dummy [0.02 h] | 0.02 |  |  |  |  | B00043 |  |  |
| A16830 |  | Dintel descolgado | 16d | 2026-11-06 | 2026-12-01 | A16820 FS-8d |  |  |  |  | 312.44d | 0d | Dummy [0.02 h] | 0.02 |  |  |  |  | B00043 |  |  |
| A16840 |  | Impermeabilizacion Zonas Humedas | 8d | 2026-11-19 | 2026-12-01 | A16830 FS-8d |  |  |  |  | 312.44d | 0d | Dummy [0.02 h] | 0.02 |  |  |  |  | B00043 |  |  |
| A19300 |  | Dinteles Ventana | 4d | 2026-11-20 | 2026-11-26 | A19250 |  |  |  |  | 228.58d | 0d | Dummy [0.02 h] | 0.02 |  |  |  |  | B00043 |  |  |
| A16850 |  | Afinado de Pisos | 12d | 2026-11-25 | 2026-12-14 | A16840 FS-4d |  |  |  |  | 312.44d |  | Dummy [0.02 h] | 0.02 |  |  |  |  | B00043 |  |  |
| A19290 |  | Dinteles Puerta Ventana | 4d | 2026-11-26 | 2026-12-02 | A19300 |  |  |  |  | 228.58d | 0d | Dummy [0.02 h] | 0.02 |  |  |  |  | B00043 |  |  |
| A19280 |  | Dintel Balcon | 4d | 2026-12-02 | 2026-12-09 | A19290 |  |  |  |  | 228.58d | 0d | Dummy [0.02 h] | 0.02 |  |  |  |  | B00043 |  |  |

| ID | WBS | Activity | Duration | Start | Finish | Predecessors | Remaining | Planned start | Planned finish | Total float | Free float | Resources | Cost | Tipo 80-20 | Hito Inicio - Fin | CBB_Etapas | CBB_Piso | CBB_Obras | CBB_Procesos |
| --- | --- | --- | --- | --- | --- | --- | --- | --- | --- | --- | --- | --- | --- | --- | --- | --- | --- | --- | --- |
|  | P08 | **Piso 08** |  | 2026-06-25 | 2027-02-03 |  |  |  |  |  |  |  |  |  |  |  |  |  |  |
| A16860 |  | Descolg. Prolong. Inst. Electricas | 10d | 2026-06-25 A | 2026-08-18 | A16720 | 10d | 2026-07-24 | 2026-08-10 | 215.13d | 0d | Dummy [0.02 h] | 0.02 | N | N | 1 | 4 | B00043 | Obr-Gri |
| A16870 |  | Descolg. Prolong. Inst. hidrosanitarias | 12d | 2026-07-31 | 2026-08-20 | A16860 SS+6d |  |  |  | 288.13d | 0d | Dummy [0.02 h] | 0.02 | N | N | 1 | 4 | B00043 | Obr-Gri |
| A16880 |  | Descolg. Prolong. Inst. Comunicaciones | 12d | 2026-08-11 | 2026-08-28 | A16870 SS+6d |  |  |  | 288.13d | 0d | Dummy [0.02 h] | 0.02 | N | N | 1 | 4 | B00043 | Obr-Gri |
| A16890 |  | Descolg. Prolong. Inst. Sanitarias | 12d | 2026-08-20 | 2026-09-07 | A16880 SS+6d |  |  |  | 288.13d | 0d | Dummy [0.02 h] | 0.02 | N | N | 1 | 4 | B00043 | Obr-Gri |
| A16900 |  | Descolg. Prolong. HVAC y gas | 12d | 2026-08-28 | 2026-09-15 | A16890 SS+6d |  |  |  | 288.13d | 0d | Dummy [0.02 h] | 0.02 | N | N | 1 | 4 | B00043 | Obr-Gri |
| A16910 |  | Descolg. Prolong. Inst. RCI | 20d | 2026-09-07 | 2026-10-05 | A16900 SS+6d |  |  |  | 288.13d | 0d | Dummy [0.02 h] | 0.02 | N | N |  |  | B00043 |  |
| A16920 |  | Mamposteria Interna | 20d | 2026-10-05 | 2026-11-04 | A16910 |  |  |  | 288.13d | 0d | Dummy [0.02 h] | 0.02 |  |  |  |  | B00043 |  |
| A16940 |  | Pañete Interno y Resanes | 20d | 2026-10-30 | 2026-12-01 | A16920 FS-2d |  |  |  | 288.13d | 0d | Dummy [0.02 h] | 0.02 |  |  |  |  | B00043 |  |
| A16930 |  | Sobre Muros | 4d | 2026-11-04 | 2026-11-10 | A16920 |  |  |  | 334.13d |  | Dummy [0.02 h] | 0.02 |  |  |  |  | B00043 |  |
| A16950 |  | Poyos Cocina y Labores | 8d | 2026-11-25 | 2026-12-07 | A16940 FS-4d |  |  |  | 288.13d | 0d | Dummy [0.02 h] | 0.02 |  |  |  |  | B00043 |  |
| A16960 |  | Viga Baranda | 16d | 2026-12-01 | 2027-01-12 | A16950 FS-4d |  |  |  | 288.13d | 0d | Dummy [0.02 h] | 0.02 |  |  |  |  | B00043 |  |
| A19330 |  | Dinteles Ventana | 4d | 2026-12-09 | 2026-12-15 | A19280 |  |  |  | 228.58d | 0d | Dummy [0.02 h] | 0.02 |  |  |  |  | B00043 |  |
| A16970 |  | Dintel descolgado | 16d | 2026-12-14 | 2027-01-22 | A16960 FS-8d |  |  |  | 288.13d | 0d | Dummy [0.02 h] | 0.02 |  |  |  |  | B00043 |  |
| A19320 |  | Dinteles Puerta Ventana | 4d | 2026-12-15 | 2026-12-21 | A19330 |  |  |  | 228.58d | 0d | Dummy [0.02 h] | 0.02 |  |  |  |  | B00043 |  |
| A19310 |  | Dintel Balcon | 4d | 2026-12-21 | 2027-01-13 | A19320 |  |  |  | 228.58d | 0d | Dummy [0.02 h] | 0.02 |  |  |  |  | B00043 |  |
| A16980 |  | Impermeabilizacion Zonas Humedas | 8d | 2027-01-12 | 2027-01-22 | A16970 FS-8d |  |  |  | 288.13d | 0d | Dummy [0.02 h] | 0.02 |  |  |  |  | B00043 |  |
| A16990 |  | Afinado de Pisos | 12d | 2027-01-18 | 2027-02-03 | A16980 FS-4d |  |  |  | 288.13d |  | Dummy [0.02 h] | 0.02 |  |  |  |  | B00043 |  |
|  | P09 | **Piso 09** |  | 2026-08-18 | 2027-02-08 |  |  |  |  |  |  |  |  |  |  |  |  |  |  |
| A17000 |  | Descolg. Prolong. Inst. Electricas | 10d | 2026-08-18 | 2026-09-01 | A16860 |  |  |  | 215.13d | 0d | Dummy [0.02 h] | 0.02 | N | N | 1 | 4 | B00043 | Obr-Gri |
| A17010 |  | Descolg. Prolong. Inst. hidrosanitarias | 11d | 2026-08-26 | 2026-09-10 | A17000 SS+6d |  |  |  | 285.13d | 0d | Dummy [0.02 h] | 0.02 | N | N | 1 | 4 | B00043 | Obr-Gri |
| A17020 |  | Descolg. Prolong. Inst. Comunicaciones | 11d | 2026-09-03 | 2026-09-18 | A17010 SS+6d |  |  |  | 285.13d | 0d | Dummy [0.02 h] | 0.02 | N | N | 1 | 4 | B00043 | Obr-Gri |
| A17030 |  | Descolg. Prolong. Inst. Sanitarias | 11d | 2026-09-11 | 2026-09-28 | A17020 SS+6d |  |  |  | 285.13d | 0d | Dummy [0.02 h] | 0.02 | N | N | 1 | 4 | B00043 | Obr-Gri |
| A17040 |  | Descolg. Prolong. HVAC y gas | 11d | 2026-09-21 | 2026-10-06 | A17030 SS+6d |  |  |  | 285.13d | 0d | Dummy [0.02 h] | 0.02 | N | N | 1 | 4 | B00043 | Obr-Gri |
| A17050 |  | Descolg. Prolong. Inst. RCI | 18d | 2026-09-29 | 2026-10-26 | A17040 SS+6d |  |  |  | 285.13d | 0d | Dummy [0.02 h] | 0.02 | N | N |  |  | B00043 |  |
| A17060 |  | Mamposteria Interna | 18d | 2026-10-26 | 2026-11-23 | A17050 |  |  |  | 285.13d | 0d | Dummy [0.02 h] | 0.02 |  |  |  |  | B00043 |  |
| A17080 |  | Pañete Interno y Resanes | 18d | 2026-11-19 | 2026-12-16 | A17060 FS-2d |  |  |  | 285.13d | 0d | Dummy [0.02 h] | 0.02 |  |  |  |  | B00043 |  |
| A17070 |  | Sobre Muros | 3d | 2026-11-23 | 2026-11-26 | A17060 |  |  |  | 323.13d |  | Dummy [0.02 h] | 0.02 |  |  |  |  | B00043 |  |
| A17090 |  | Poyos Cocina y Labores | 7d | 2026-12-10 | 2026-12-21 | A17080 FS-4d |  |  |  | 285.13d | 0d | Dummy [0.02 h] | 0.02 |  |  |  |  | B00043 |  |
| A17100 |  | Viga Baranda | 14d | 2026-12-15 | 2027-01-21 | A17090 FS-4d |  |  |  | 285.13d | 0d | Dummy [0.02 h] | 0.02 |  |  |  |  | B00043 |  |
| A17110 |  | Dintel descolgado | 14d | 2026-12-23 | 2027-01-29 | A17100 FS-8d |  |  |  | 285.13d | 0d | Dummy [0.02 h] | 0.02 |  |  |  |  | B00043 |  |
| A19390 |  | Dinteles Ventana | 3d | 2027-01-13 | 2027-01-18 | A19310 |  |  |  | 228.58d | 0d | Dummy [0.02 h] | 0.02 |  |  |  |  | B00043 |  |
| A19380 |  | Dinteles Puerta Ventana | 3d | 2027-01-18 | 2027-01-21 | A19390 |  |  |  | 228.58d | 0d | Dummy [0.02 h] | 0.02 |  |  |  |  | B00043 |  |
| A17120 |  | Impermeabilizacion Zonas Humedas | 7d | 2027-01-19 | 2027-01-28 | A17110 FS-8d |  |  |  | 285.13d | 0d | Dummy [0.02 h] | 0.02 |  |  |  |  | B00043 |  |
| A19370 |  | Dintel Balcon | 3d | 2027-01-21 | 2027-01-26 | A19380 |  |  |  | 228.58d | 0d | Dummy [0.02 h] | 0.02 |  |  |  |  | B00043 |  |
| A17130 |  | Afinado de Pisos | 11d | 2027-01-22 | 2027-02-08 | A17120 FS-4d |  |  |  | 285.13d |  | Dummy [0.02 h] | 0.02 |  |  |  |  | B00043 |  |

| ID | WBS | Activity | Duration | Start | Finish | Predecessors | Total float | Free float | Resources | Cost | Hito Inicio - Fin | Tipo 80-20 | CBB_Obras | CBB_Etapas | CBB_Piso | CBB_Procesos |
| --- | --- | --- | --- | --- | --- | --- | --- | --- | --- | --- | --- | --- | --- | --- | --- | --- |
|  | P10 | **Piso 10** |  | 2026-09-01 | 2027-02-22 |  |  |  |  |  |  |  |  |  |  |  |
| A17140 |  | Descolg. Prolong. Inst. Electricas | 10d | 2026-09-01 | 2026-09-15 | A17000 | 215.13d | 0d | Dummy [0.02 h] | 0.02 | N | N | B00043 | 1 | 4 | Obr-Gri |
| A17150 |  | Descolg. Prolong. Inst. hidrosanitarias | 11d | 2026-09-09 | 2026-09-24 | A17140 SS+6d | 275.13d | 0d | Dummy [0.02 h] | 0.02 | N | N | B00043 | 1 | 4 | Obr-Gri |
| A17160 |  | Descolg. Prolong. Inst. Comunicaciones | 11d | 2026-09-17 | 2026-10-02 | A17150 SS+6d | 275.13d | 0d | Dummy [0.02 h] | 0.02 | N | N | B00043 | 1 | 4 | Obr-Gri |
| A17170 |  | Descolg. Prolong. Inst. Sanitarias | 11d | 2026-09-25 | 2026-10-13 | A17160 SS+6d | 275.13d | 0d | Dummy [0.02 h] | 0.02 | N | N | B00043 | 1 | 4 | Obr-Gri |
| A17180 |  | Descolg. Prolong. HVAC y gas | 11d | 2026-10-05 | 2026-10-21 | A17170 SS+6d | 275.13d | 0d | Dummy [0.02 h] | 0.02 | N | N | B00043 | 1 | 4 | Obr-Gri |
| A17190 |  | Descolg. Prolong. Inst. RCI | 18d | 2026-10-14 | 2026-11-10 | A17180 SS+6d | 275.13d | 0d | Dummy [0.02 h] | 0.02 | N | N | B00043 |  |  |  |
| A17200 |  | Mamposteria Interna | 18d | 2026-11-10 | 2026-12-07 | A17190 | 275.13d | 0d | Dummy [0.02 h] | 0.02 |  |  | B00043 |  |  |  |
| A17220 |  | Pañete Interno y Resanes | 18d | 2026-12-03 | 2027-01-18 | A17200 FS-2d | 275.13d | 0d | Dummy [0.02 h] | 0.02 |  |  | B00043 |  |  |  |
| A17210 |  | Sobre Muros | 3d | 2026-12-07 | 2026-12-11 | A17200 | 313.13d |  | Dummy [0.02 h] | 0.02 |  |  | B00043 |  |  |  |
| A17230 |  | Poyos Cocina y Labores | 7d | 2027-01-12 | 2027-01-21 | A17220 FS-4d | 275.13d | 0d | Dummy [0.02 h] | 0.02 |  |  | B00043 |  |  |  |
| A17240 |  | Viga Baranda | 14d | 2027-01-15 | 2027-02-04 | A17230 FS-4d | 275.13d | 0d | Dummy [0.02 h] | 0.02 |  |  | B00043 |  |  |  |
| A17250 |  | Dintel descolgado | 14d | 2027-01-25 | 2027-02-12 | A17240 FS-8d | 275.13d | 0d | Dummy [0.02 h] | 0.02 |  |  | B00043 |  |  |  |
| A19360 |  | Dinteles Ventana | 3d | 2027-01-26 | 2027-01-29 | A19370 | 237.58d | 0d | Dummy [0.02 h] | 0.02 |  |  | B00043 |  |  |  |
| A19350 |  | Dinteles Puerta Ventana | 3d | 2027-01-29 | 2027-02-03 | A19360 | 237.58d | 0d | Dummy [0.02 h] | 0.02 |  |  | B00043 |  |  |  |
| A17260 |  | Impermeabilizacion Zonas Humedas | 7d | 2027-02-02 | 2027-02-11 | A17250 FS-8d | 275.13d | 0d | Dummy [0.02 h] | 0.02 |  |  | B00043 |  |  |  |
| A19340 |  | Dintel Balcon | 3d | 2027-02-03 | 2027-02-08 | A19350 | 237.58d | 0d | Dummy [0.02 h] | 0.02 |  |  | B00043 |  |  |  |
| A17270 |  | Afinado de Pisos | 11d | 2027-02-05 | 2027-02-22 | A17260 FS-4d | 275.13d |  | Dummy [0.02 h] | 0.02 |  |  | B00043 |  |  |  |
|  | P11 | **Piso 11** |  | 2026-09-29 | 2027-03-05 |  |  |  |  |  |  |  |  |  |  |  |
| A17280 |  | Descolg. Prolong. Inst. Electricas | 10d | 2026-09-29 | 2026-10-14 | A17140 FS+10d | 215.13d | 0d | Dummy [0.02 h] | 0.02 | N | N | B00043 | 1 | 4 | Obr-Gri |
| A17290 |  | Descolg. Prolong. Inst. hidrosanitarias | 11d | 2026-10-07 | 2026-10-23 | A17280 SS+6d | 266.13d | 0d | Dummy [0.02 h] | 0.02 | N | N | B00043 | 1 | 4 | Obr-Gri |
| A17300 |  | Descolg. Prolong. Inst. Comunicaciones | 11d | 2026-10-14 | 2026-10-29 | A17290 SS+4d | 266.13d | 0d | Dummy [0.02 h] | 0.02 | N | N | B00043 | 1 | 4 | Obr-Gri |
| A17310 |  | Descolg. Prolong. Inst. Sanitarias | 11d | 2026-10-20 | 2026-11-05 | A17300 SS+4d | 266.13d | 0d | Dummy [0.02 h] | 0.02 | N | N | B00043 | 1 | 4 | Obr-Gri |
| A17320 |  | Descolg. Prolong. HVAC y gas | 11d | 2026-10-26 | 2026-11-11 | A17310 SS+4d | 266.13d | 0d | Dummy [0.02 h] | 0.02 | N | N | B00043 | 1 | 4 | Obr-Gri |
| A17330 |  | Descolg. Prolong. Inst. RCI | 16d | 2026-11-03 | 2026-11-26 | A17320 SS+5d | 266.13d | 0d | Dummy [0.02 h] | 0.02 | N | N | B00043 |  |  |  |
| A17340 |  | Mamposteria Interna | 18d | 2026-11-26 | 2026-12-23 | A17330 | 266.13d | 0d | Dummy [0.02 h] | 0.02 |  |  | B00043 |  |  |  |
| A17360 |  | Pañete Interno y Resanes | 18d | 2026-12-21 | 2027-02-02 | A17340 FS-2d | 266.13d | 0d | Dummy [0.02 h] | 0.02 |  |  | B00043 |  |  |  |
| A17350 |  | Sobre Muros | 3d | 2026-12-23 | 2027-01-14 | A17340 | 302.13d |  | Dummy [0.02 h] | 0.02 |  |  | B00043 |  |  |  |
| A17370 |  | Poyos Cocina y Labores | 6d | 2027-01-27 | 2027-02-04 | A17360 FS-4d | 266.13d | 0d | Dummy [0.02 h] | 0.02 |  |  | B00043 |  |  |  |
| A17380 |  | Viga Baranda | 14d | 2027-01-29 | 2027-02-18 | A17370 FS-4d | 266.13d | 0d | Dummy [0.02 h] | 0.02 |  |  | B00043 |  |  |  |
| A19420 |  | Dinteles Ventana | 3d | 2027-02-08 | 2027-02-11 | A19340 | 237.58d | 0d | Dummy [0.02 h] | 0.02 |  |  | B00043 |  |  |  |
| A17390 |  | Dintel descolgado | 14d | 2027-02-08 | 2027-02-26 | A17380 FS-8d | 266.13d | 0d | Dummy [0.02 h] | 0.02 |  |  | B00043 |  |  |  |
| A19410 |  | Dinteles Puerta Ventana | 3d | 2027-02-11 | 2027-02-16 | A19420 | 237.58d | 0d | Dummy [0.02 h] | 0.02 |  |  | B00043 |  |  |  |
| A19400 |  | Dintel Balcon | 3d | 2027-02-16 | 2027-02-19 | A19410 | 237.58d | 0d | Dummy [0.02 h] | 0.02 |  |  | B00043 |  |  |  |
| A17400 |  | Impermeabilizacion Zonas Humedas | 6d | 2027-02-16 | 2027-02-24 | A17390 FS-8d | 266.13d | 0d | Dummy [0.02 h] | 0.02 |  |  | B00043 |  |  |  |
| A17410 |  | Afinado de Pisos | 11d | 2027-02-18 | 2027-03-05 | A17400 FS-4d | 266.13d |  | Dummy [0.02 h] | 0.02 |  |  | B00043 |  |  |  |

| ID | WBS | Activity | Duration | Start | Finish | Predecessors | Total float | Free float | Resources | Cost | Hito Inicio - Fin | Tipo 80-20 | CBB_Obras | CBB_Piso | CBB_Etapas | CBB_Procesos |
| --- | --- | --- | --- | --- | --- | --- | --- | --- | --- | --- | --- | --- | --- | --- | --- | --- |
|  | P12 | **Piso 12** |  | 2026-10-14 | 2027-03-18 |  |  |  |  |  |  |  |  |  |  |  |
| A17420 |  | Descolg. Prolong. Inst. Electricas | 10d | 2026-10-14 | 2026-10-28 | A17280 | 215.13d | 0d | Dummy [0.02 h] | 0.02 | N | N | B00043 | 4 | 1 | Obr-Gri |
| A17430 |  | Descolg. Prolong. Inst. hidrosanitarias | 9d | 2026-10-22 | 2026-11-05 | A17420 SS+6d | 257.13d | 0d | Dummy [0.02 h] | 0.02 | N | N | B00043 | 4 | 1 | Obr-Gri |
| A17440 |  | Descolg. Prolong. Inst. Comunicaciones | 9d | 2026-10-30 | 2026-11-13 | A17430 SS+6d | 257.13d | 0d | Dummy [0.02 h] | 0.02 | N | N | B00043 | 4 | 1 | Obr-Gri |
| A17450 |  | Descolg. Prolong. Inst. Sanitarias | 9d | 2026-11-10 | 2026-11-24 | A17440 SS+6d | 257.13d | 0d | Dummy [0.02 h] | 0.02 | N | N | B00043 | 4 | 1 | Obr-Gri |
| A17460 |  | Descolg. Prolong. HVAC y gas | 9d | 2026-11-19 | 2026-12-02 | A17450 SS+6d | 257.13d | 0d | Dummy [0.02 h] | 0.02 | N | N | B00043 | 4 | 1 | Obr-Gri |
| A17470 |  | Descolg. Prolong. Inst. RCI | 16d | 2026-11-27 | 2026-12-22 | A17460 SS+6d | 257.13d | 0d | Dummy [0.02 h] | 0.02 | N | N | B00043 |  |  |  |
| A17480 |  | Mamposteria Interna | 16d | 2026-12-22 | 2027-02-01 | A17470 | 257.13d | 0d | Dummy [0.02 h] | 0.02 |  |  | B00043 |  |  |  |
| A17500 |  | Pañete Interno y Resanes | 16d | 2027-01-28 | 2027-02-19 | A17480 FS-2d | 257.13d | 0d | Dummy [0.02 h] | 0.02 |  |  | B00043 |  |  |  |
| A17490 |  | Sobre Muros | 3d | 2027-02-01 | 2027-02-04 | A17480 | 287.13d |  | Dummy [0.02 h] | 0.02 |  |  | B00043 |  |  |  |
| A17510 |  | Poyos Cocina y Labores | 6d | 2027-02-15 | 2027-02-23 | A17500 FS-4d | 257.13d | 0d | Dummy [0.02 h] | 0.02 |  |  | B00043 |  |  |  |
| A17520 |  | Viga Baranda | 13d | 2027-02-17 | 2027-03-08 | A17510 FS-4d | 257.13d | 0d | Dummy [0.02 h] | 0.02 |  |  | B00043 |  |  |  |
| A19460 |  | Dinteles Ventana | 3d | 2027-02-19 | 2027-02-24 | A19400 | 237.58d | 0d | Dummy [0.02 h] | 0.02 |  |  | B00043 |  |  |  |
| A19450 |  | Dinteles Puerta Ventana | 3d | 2027-02-24 | 2027-03-01 | A19460 | 237.58d | 0d | Dummy [0.02 h] | 0.02 |  |  | B00043 |  |  |  |
| A17530 |  | Dintel descolgado | 13d | 2027-02-24 | 2027-03-15 | A17520 FS-8d | 257.13d | 0d | Dummy [0.02 h] | 0.02 |  |  | B00043 |  |  |  |
| A19440 |  | Dintel Balcon | 3d | 2027-03-01 | 2027-03-04 | A19450 | 237.58d | 0d | Dummy [0.02 h] | 0.02 |  |  | B00043 |  |  |  |
| A17540 |  | Impermeabilizacion Zonas Humedas | 6d | 2027-03-03 | 2027-03-11 | A17530 FS-8d | 257.13d | 0d | Dummy [0.02 h] | 0.02 |  |  | B00043 |  |  |  |
| A17550 |  | Afinado de Pisos | 9d | 2027-03-05 | 2027-03-18 | A17540 FS-4d | 257.13d |  | Dummy [0.02 h] | 0.02 |  |  | B00043 |  |  |  |
|  | P13 | **Piso 13** |  | 2026-10-28 | 2027-04-06 |  |  |  |  |  |  |  |  |  |  |  |
| A17560 |  | Descolg. Prolong. Inst. Electricas | 10d | 2026-10-28 | 2026-11-12 | A17420 | 215.13d | 0d | Dummy [0.02 h] | 0.02 | N | N | B00043 | 4 | 1 | Obr-Gri |
| A17570 |  | Descolg. Prolong. Inst. hidrosanitarias | 9d | 2026-11-06 | 2026-11-20 | A17560 SS+6d | 249.13d | 0d | Dummy [0.02 h] | 0.02 | N | N | B00043 | 4 | 1 | Obr-Gri |
| A17580 |  | Descolg. Prolong. Inst. Comunicaciones | 9d | 2026-11-17 | 2026-11-30 | A17570 SS+6d | 249.13d | 0d | Dummy [0.02 h] | 0.02 | N | N | B00043 | 4 | 1 | Obr-Gri |
| A17590 |  | Descolg. Prolong. Inst. Sanitarias | 9d | 2026-11-25 | 2026-12-09 | A17580 SS+6d | 249.13d | 0d | Dummy [0.02 h] | 0.02 | N | N | B00043 | 4 | 1 | Obr-Gri |
| A17600 |  | Descolg. Prolong. HVAC y gas | 9d | 2026-12-03 | 2026-12-17 | A17590 SS+6d | 249.13d | 0d | Dummy [0.02 h] | 0.02 | N | N | B00043 | 4 | 1 | Obr-Gri |
| A17610 |  | Descolg. Prolong. Inst. RCI | 15d | 2026-12-14 | 2027-01-21 | A17600 SS+6d | 249.13d | 0d | Dummy [0.02 h] | 0.02 | N | N | B00043 |  |  |  |
| A17620 |  | Mamposteria Interna | 18d | 2027-01-21 | 2027-02-16 | A17610 | 249.13d | 0d | Dummy [0.02 h] | 0.02 |  |  | B00043 |  |  |  |
| A17640 |  | Pañete Interno y Resanes | 15d | 2027-02-12 | 2027-03-05 | A17620 FS-2d | 249.13d | 0d | Dummy [0.02 h] | 0.02 |  |  | B00043 |  |  |  |
| A17630 |  | Sobre Muros | 3d | 2027-02-16 | 2027-02-19 | A17620 | 276.13d |  | Dummy [0.02 h] | 0.02 |  |  | B00043 |  |  |  |
| A17650 |  | Poyos Cocina y Labores | 6d | 2027-03-01 | 2027-03-09 | A17640 FS-4d | 249.13d | 0d | Dummy [0.02 h] | 0.02 |  |  | B00043 |  |  |  |
| A17660 |  | Viga Baranda | 12d | 2027-03-03 | 2027-03-19 | A17650 FS-4d | 249.13d | 0d | Dummy [0.02 h] | 0.02 |  |  | B00043 |  |  |  |
| A19520 |  | Dinteles Ventana | 3d | 2027-03-04 | 2027-03-09 | A19440 | 237.58d | 0d | Dummy [0.02 h] | 0.02 |  |  | B00043 |  |  |  |
| A19510 |  | Dinteles Puerta Ventana | 3d | 2027-03-09 | 2027-03-12 | A19520 | 237.58d | 0d | Dummy [0.02 h] | 0.02 |  |  | B00043 |  |  |  |
| A17670 |  | Dintel descolgado | 12d | 2027-03-09 | 2027-04-01 | A17660 FS-8d | 249.13d | 0d | Dummy [0.02 h] | 0.02 |  |  | B00043 |  |  |  |
| A19500 |  | Dintel Balcon | 3d | 2027-03-12 | 2027-03-17 | A19510 | 237.58d | 0d | Dummy [0.02 h] | 0.02 |  |  | B00043 |  |  |  |
| A17680 |  | Impermeabilizacion Zonas Humedas | 6d | 2027-03-15 | 2027-03-30 | A17670 FS-8d | 249.13d | 0d | Dummy [0.02 h] | 0.02 |  |  | B00043 |  |  |  |
| A17690 |  | Afinado de Pisos | 9d | 2027-03-17 | 2027-04-06 | A17680 FS-4d | 249.13d |  | Dummy [0.02 h] | 0.02 |  |  | B00043 |  |  |  |

| ID | WBS | Activity | Duration | Start | Finish | Predecessors | Total float | Free float | Resources | Cost | Tipo 80-20 | Hito Inicio - Fin | CBB_Piso | CBB_Procesos | CBB_Obras | CBB_Etapas |
| --- | --- | --- | --- | --- | --- | --- | --- | --- | --- | --- | --- | --- | --- | --- | --- | --- |
|  | P14 | **Piso 14** |  | 2026-11-12 | 2027-04-20 |  |  |  |  |  |  |  |  |  |  |  |
| A17700 |  | Descolg. Prolong. Inst. Electricas | 10d | 2026-11-12 | 2026-11-27 | A17560 | 215.13d | 0d | Dummy [0.02 h] | 0.02 | N | N | 4 | Obr-Gri | B00043 | 1 |
| A17710 |  | Descolg. Prolong. Inst. hidrosanitarias | 9d | 2026-11-23 | 2026-12-04 | A17700 SS+6d | 239.13d | 0d | Dummy [0.02 h] | 0.02 | N | N | 4 | Obr-Gri | B00043 | 1 |
| A17720 |  | Descolg. Prolong. Inst. Comunicaciones | 9d | 2026-12-01 | 2026-12-15 | A17710 SS+6d | 239.13d | 0d | Dummy [0.02 h] | 0.02 | N | N | 4 | Obr-Gri | B00043 | 1 |
| A17730 |  | Descolg. Prolong. Inst. Sanitarias | 9d | 2026-12-10 | 2026-12-23 | A17720 SS+6d | 239.13d | 0d | Dummy [0.02 h] | 0.02 | N | N | 4 | Obr-Gri | B00043 | 1 |
| A17740 |  | Descolg. Prolong. HVAC y gas | 9d | 2026-12-18 | 2027-01-19 | A17730 SS+6d | 239.13d | 0d | Dummy [0.02 h] | 0.02 | N | N | 4 | Obr-Gri | B00043 | 1 |
| A17750 |  | Descolg. Prolong. Inst. RCI | 15d | 2027-01-14 | 2027-02-04 | A17740 SS+6d | 239.13d | 0d | Dummy [0.02 h] | 0.02 | N | N |  |  | B00043 |  |
| A17760 |  | Mamposteria Interna | 18d | 2027-02-04 | 2027-03-02 | A17750 | 239.13d | 0d | Dummy [0.02 h] | 0.02 |  |  |  |  | B00043 |  |
| A17780 |  | Pañete Interno y Resanes | 15d | 2027-02-26 | 2027-03-19 | A17760 FS-2d | 239.13d | 0d | Dummy [0.02 h] | 0.02 |  |  |  |  | B00043 |  |
| A17770 |  | Sobre Muros | 3d | 2027-03-02 | 2027-03-05 | A17760 | 266.13d |  | Dummy [0.02 h] | 0.02 |  |  |  |  | B00043 |  |
| A17790 |  | Poyos Cocina y Labores | 6d | 2027-03-15 | 2027-03-30 | A17780 FS-4d | 239.13d | 0d | Dummy [0.02 h] | 0.02 |  |  |  |  | B00043 |  |
| A19490 |  | Dinteles Ventana | 3d | 2027-03-17 | 2027-03-29 | A19500 | 237.58d | 0d | Dummy [0.02 h] | 0.02 |  |  |  |  | B00043 |  |
| A17800 |  | Viga Baranda | 12d | 2027-03-17 | 2027-04-09 | A17790 FS-4d | 239.13d | 0d | Dummy [0.02 h] | 0.02 |  |  |  |  | B00043 |  |
| A19480 |  | Dinteles Puerta Ventana | 3d | 2027-03-29 | 2027-04-01 | A19490 | 237.58d | 0d | Dummy [0.02 h] | 0.02 |  |  |  |  | B00043 |  |
| A17810 |  | Dintel descolgado | 12d | 2027-03-30 | 2027-04-15 | A17800 FS-8d | 239.13d | 0d | Dummy [0.02 h] | 0.02 |  |  |  |  | B00043 |  |
| A19470 |  | Dintel Balcon | 3d | 2027-04-01 | 2027-04-06 | A19480 | 237.58d | 0d | Dummy [0.02 h] | 0.02 |  |  |  |  | B00043 |  |
| A17820 |  | Impermeabilizacion Zonas Humedas | 6d | 2027-04-05 | 2027-04-13 | A17810 FS-8d | 239.13d | 0d | Dummy [0.02 h] | 0.02 |  |  |  |  | B00043 |  |
| A17830 |  | Afinado de Pisos | 9d | 2027-04-07 | 2027-04-20 | A17820 FS-4d | 239.13d |  | Dummy [0.02 h] | 0.02 |  |  |  |  | B00043 |  |
|  | P15 | **Piso 15** |  | 2026-12-14 | 2027-04-26 |  |  |  |  |  |  |  |  |  |  |  |
| A17840 |  | Descolg. Prolong. Inst. Electricas | 10d | 2026-12-14 | 2027-01-14 | A17700 FS+10d | 215.13d | 0d | Dummy [0.02 h] | 0.02 | N | N | 4 | Obr-Gri | B00043 | 1 |
| A17850 |  | Descolg. Prolong. Inst. hidrosanitarias | 8d | 2026-12-22 | 2027-01-20 | A17840 SS+6d | 235.13d | 0d | Dummy [0.02 h] | 0.02 | N | N | 4 | Obr-Gri | B00043 | 1 |
| A17860 |  | Descolg. Prolong. Inst. Comunicaciones | 8d | 2027-01-18 | 2027-01-28 | A17850 SS+6d | 235.13d | 0d | Dummy [0.02 h] | 0.02 | N | N | 4 | Obr-Gri | B00043 | 1 |
| A17870 |  | Descolg. Prolong. Inst. Sanitarias | 8d | 2027-01-26 | 2027-02-05 | A17860 SS+6d | 235.13d | 0d | Dummy [0.02 h] | 0.02 | N | N | 4 | Obr-Gri | B00043 | 1 |
| A17880 |  | Descolg. Prolong. HVAC y gas | 8d | 2027-02-03 | 2027-02-15 | A17870 SS+6d | 235.13d | 0d | Dummy [0.02 h] | 0.02 | N | N | 4 | Obr-Gri | B00043 | 1 |
| A17890 |  | Descolg. Prolong. Inst. RCI | 13d | 2027-02-11 | 2027-03-02 | A17880 SS+6d | 235.13d | 0d | Dummy [0.02 h] | 0.02 | N | N |  |  | B00043 |  |
| A17900 |  | Mamposteria Interna | 13d | 2027-03-02 | 2027-03-19 | A17890 | 235.13d | 0d | Dummy [0.02 h] | 0.02 |  |  |  |  | B00043 |  |
| A17920 |  | Pañete Interno y Resanes | 13d | 2027-03-17 | 2027-04-12 | A17900 FS-2d | 235.13d | 0d | Dummy [0.02 h] | 0.02 |  |  |  |  | B00043 |  |
| A17910 |  | Sobre Muros | 2d | 2027-03-19 | 2027-03-30 | A17900 | 254.13d |  | Dummy [0.02 h] | 0.02 |  |  |  |  | B00043 |  |
| A19550 |  | Dinteles Ventana | 2d | 2027-04-06 | 2027-04-08 | A19470 | 237.58d | 0d | Dummy [0.02 h] | 0.02 |  |  |  |  | B00043 |  |
| A17930 |  | Poyos Cocina y Labores | 5d | 2027-04-06 | 2027-04-13 | A17920 FS-4d | 235.13d | 0d | Dummy [0.02 h] | 0.02 |  |  |  |  | B00043 |  |
| A17940 |  | Viga Baranda | 10d | 2027-04-07 | 2027-04-21 | A17930 FS-4d | 235.13d | 0d | Dummy [0.02 h] | 0.02 |  |  |  |  | B00043 |  |
| A19540 |  | Dinteles Puerta Ventana | 2d | 2027-04-08 | 2027-04-12 | A19550 | 237.58d | 0d | Dummy [0.02 h] | 0.02 |  |  |  |  | B00043 |  |
| A17950 |  | Dintel descolgado | 10d | 2027-04-09 | 2027-04-23 | A17940 FS-8d | 235.13d | 0d | Dummy [0.02 h] | 0.02 |  |  |  |  | B00043 |  |
| A19530 |  | Dintel Balcon | 2d | 2027-04-12 | 2027-04-14 | A19540 | 237.58d | 0d | Dummy [0.02 h] | 0.02 |  |  |  |  | B00043 |  |
| A17960 |  | Impermeabilizacion Zonas Humedas | 5d | 2027-04-13 | 2027-04-20 | A17950 FS-8d | 235.13d | 0d | Dummy [0.02 h] | 0.02 |  |  |  |  | B00043 |  |
| A17970 |  | Afinado de Pisos | 8d | 2027-04-14 | 2027-04-26 | A17960 FS-4d | 235.13d |  | Dummy [0.02 h] | 0.02 |  |  |  |  | B00043 |  |

| ID | WBS | Activity | Duration | Start | Finish | Predecessors | Total float | Free float | Resources | Cost | Tipo 80-20 | Hito Inicio - Fin | CBB_Procesos | CBB_Obras | CBB_Piso | CBB_Etapas |
| --- | --- | --- | --- | --- | --- | --- | --- | --- | --- | --- | --- | --- | --- | --- | --- | --- |
|  | P16 | **Piso 16** |  | 2027-01-28 | 2027-05-25 |  |  |  |  |  |  |  |  |  |  |  |
| A17980 |  | Descolg. Prolong. Inst. Electricas | 10d | 2027-01-28 | 2027-02-11 | A17840 FS+10d | 215.13d | 0d | Dummy [0.02 h] | 0.02 | N | N | Obr-Gri | B00043 | 4 | 1 |
| A17990 |  | Descolg. Prolong. Inst. hidrosanitarias | 8d | 2027-02-05 | 2027-02-17 | A17980 SS+6d | 215.13d | 0d | Dummy [0.02 h] | 0.02 | N | N | Obr-Gri | B00043 | 4 | 1 |
| A18000 |  | Descolg. Prolong. Inst. Comunicaciones | 8d | 2027-02-15 | 2027-02-25 | A17990 SS+6d | 215.13d | 0d | Dummy [0.02 h] | 0.02 | N | N | Obr-Gri | B00043 | 4 | 1 |
| A18010 |  | Descolg. Prolong. Inst. Sanitarias | 8d | 2027-02-23 | 2027-03-05 | A18000 SS+6d | 215.13d | 0d | Dummy [0.02 h] | 0.02 | N | N | Obr-Gri | B00043 | 4 | 1 |
| A18020 |  | Descolg. Prolong. HVAC y gas | 8d | 2027-03-03 | 2027-03-15 | A18010 SS+6d | 215.13d | 0d | Dummy [0.02 h] | 0.02 | N | N | Obr-Gri | B00043 | 4 | 1 |
| A18030 |  | Descolg. Prolong. Inst. RCI | 13d | 2027-03-11 | 2027-04-06 | A18020 SS+6d | 215.13d | 0d | Dummy [0.02 h] | 0.02 | N | N |  | B00043 |  |  |
| A18040 |  | Mamposteria Interna | 13d | 2027-04-06 | 2027-04-23 | A18030 | 215.13d | 0d | Dummy [0.02 h] | 0.02 |  |  |  | B00043 |  |  |
| A19580 |  | Dinteles Ventana | 2d | 2027-04-14 | 2027-04-16 | A19530 | 237.58d | 0d | Dummy [0.02 h] | 0.02 |  |  |  | B00043 |  |  |
| A19570 |  | Dinteles Puerta Ventana | 2d | 2027-04-16 | 2027-04-20 | A19580 | 237.58d | 0d | Dummy [0.02 h] | 0.02 |  |  |  | B00043 |  |  |
| A19560 |  | Dintel Balcon | 2d | 2027-04-20 | 2027-04-22 | A19570 | 237.58d | 0d | Dummy [0.02 h] | 0.02 |  |  |  | B00043 |  |  |
| A18060 |  | Pañete Interno y Resanes | 13d | 2027-04-21 | 2027-05-11 | A18040 FS-2d | 215.13d | 0d | Dummy [0.02 h] | 0.02 |  |  |  | B00043 |  |  |
| A18050 |  | Sobre Muros | 2d | 2027-04-23 | 2027-04-27 | A18040 | 234.13d |  | Dummy [0.02 h] | 0.02 |  |  |  | B00043 |  |  |
| A18070 |  | Poyos Cocina y Labores | 5d | 2027-05-04 | 2027-05-12 | A18060 FS-4d | 215.13d | 0d | Dummy [0.02 h] | 0.02 |  |  |  | B00043 |  |  |
| A18080 |  | Viga Baranda | 10d | 2027-05-05 | 2027-05-20 | A18070 FS-4d | 215.13d | 0d | Dummy [0.02 h] | 0.02 |  |  |  | B00043 |  |  |
| A18090 |  | Dintel descolgado | 10d | 2027-05-07 | 2027-05-24 | A18080 FS-8d | 215.13d | 0d | Dummy [0.02 h] | 0.02 |  |  |  | B00043 |  |  |
| A18100 |  | Impermeabilizacion Zonas Humedas | 5d | 2027-05-12 | 2027-05-19 | A18090 FS-8d | 215.13d | 0d | Dummy [0.02 h] | 0.02 |  |  |  | B00043 |  |  |
| A18110 |  | Afinado de Pisos | 8d | 2027-05-13 | 2027-05-25 | A18100 FS-4d | 215.13d | 0d | Dummy [0.02 h] | 0.02 |  |  |  | B00043 |  |  |
|  | Est_Pin01 | **Estuco y Pintura-01** |  | 2026-08-03 | 2027-07-09 |  |  |  |  |  |  |  |  |  |  |  |
|  | P03 | **Piso 03** |  | 2026-08-03 | 2026-09-02 |  |  |  |  |  |  |  |  |  |  |  |
| A3360 |  | Estuco | 18d | 2026-08-03 | 2026-08-31 | A1190 SS | 35.06d | 0d | Dummy [0.02 h] | 0.02 | N | N | Est- | B00043 | 4 | 1 |
| A3370 |  | Primera mano de pintura | 18d | 2026-08-05 | 2026-09-02 | A3360 SS+2d | 35.06d | 0d | Dummy [0.02 h] | 0.02 | N | N | Est- | B00043 | 4 | 1 |
|  | P04 | **Piso 04** |  | 2026-08-31 | 2026-09-28 |  |  |  |  |  |  |  |  |  |  |  |
| A3390 |  | Estuco | 18d | 2026-08-31 | 2026-09-24 | A3360 | 185.58d | 0d | Dummy [0.02 h] | 0.02 | N | N | Est- | B00043 | 5 | 1 |
| A3400 |  | Primera mano de pintura | 18d | 2026-09-02 | 2026-09-28 | A3390 SS+2d | 363.58d |  | Dummy [0.02 h] | 0.02 | N | N | Est- | B00043 | 5 | 1 |

| ID | WBS | Activity | Duration | Start | Finish | Predecessors | Total float | Free float | Resources | Cost | Hito Inicio - Fin | Tipo 80-20 | CBB_Obras | CBB_Piso | CBB_Etapas | CBB_Procesos |
| --- | --- | --- | --- | --- | --- | --- | --- | --- | --- | --- | --- | --- | --- | --- | --- | --- |
|  | P05 | **Piso 05** |  | 2026-09-24 | 2026-10-23 |  |  |  |  |  |  |  |  |  |  |  |
| A3420 |  | Estuco | 18d | 2026-09-24 | 2026-10-21 | A3390 | 185.58d | 0d | Dummy [0.02 h] | 0.02 | N | N | B00043 | 6 | 1 | Est- |
| A3430 |  | Primera mano de pintura | 18d | 2026-09-28 | 2026-10-23 | A3420 SS+2d | 345.58d |  | Dummy [0.02 h] | 0.02 | N | N | B00043 | 6 | 1 | Est- |
|  | P06 | **Piso 06** |  | 2026-10-21 | 2026-11-20 |  |  |  |  |  |  |  |  |  |  |  |
| A3450 |  | Estuco | 18d | 2026-10-21 | 2026-11-18 | A3420 | 185.58d | 0d | Dummy [0.02 h] | 0.02 | N | N | B00043 | 7 | 1 | Est- |
| A3460 |  | Primera mano de pintura | 18d | 2026-10-23 | 2026-11-20 | A3450 SS+2d | 327.58d |  | Dummy [0.02 h] | 0.02 | N | N | B00043 | 7 | 1 | Est- |
|  | P07 | **Piso 07** |  | 2026-11-18 | 2026-12-17 |  |  |  |  |  |  |  |  |  |  |  |
| A3480 |  | Estuco | 18d | 2026-11-18 | 2026-12-15 | A3450 | 185.58d | 0d | Dummy [0.02 h] | 0.02 | N | N | B00043 | 8 | 1 | Est- |
| A3490 |  | Primera mano de pintura | 18d | 2026-11-20 | 2026-12-17 | A3480 SS+2d | 309.58d |  | Dummy [0.02 h] | 0.02 | N | N | B00043 | 8 | 1 | Est- |
|  | P08 | **Piso 08** |  | 2026-12-15 | 2027-01-29 |  |  |  |  |  |  |  |  |  |  |  |
| A3510 |  | Estuco | 18d | 2026-12-15 | 2027-01-27 | A3480 | 185.58d | 0d | Dummy [0.02 h] | 0.02 | N | N | B00043 | 9 | 1 | Est- |
| A3520 |  | Primera mano de pintura | 18d | 2026-12-17 | 2027-01-29 | A3510 SS+2d | 291.58d |  | Dummy [0.02 h] | 0.02 | N | N | B00043 | 9 | 1 | Est- |
|  | P09 | **Piso 09** |  | 2027-01-27 | 2027-02-22 |  |  |  |  |  |  |  |  |  |  |  |
| A3540 |  | Estuco | 16d | 2027-01-27 | 2027-02-18 | A3510 | 185.58d | 0d | Dummy [0.02 h] | 0.02 | N | N | B00043 | 10 | 1 | Est- |
| A3550 |  | Primera mano de pintura | 16d | 2027-01-29 | 2027-02-22 | A3540 SS+2d | 275.58d |  | Dummy [0.02 h] | 0.02 | N | N | B00043 | 10 | 1 | Est- |
|  | P10 | **Piso 10** |  | 2027-02-18 | 2027-03-16 |  |  |  |  |  |  |  |  |  |  |  |
| A3570 |  | Estuco | 16d | 2027-02-18 | 2027-03-12 | A3540 | 185.58d | 0d | Dummy [0.02 h] | 0.02 | N | N | B00043 | 11 | 1 | Est- |
| A3580 |  | Primera mano de pintura | 16d | 2027-02-22 | 2027-03-16 | A3570 SS+2d | 259.58d |  | Dummy [0.02 h] | 0.02 | N | N | B00043 | 11 | 1 | Est- |
|  | P11 | **Piso 11** |  | 2027-03-12 | 2027-04-12 |  |  |  |  |  |  |  |  |  |  |  |
| A3600 |  | Estuco | 14d | 2027-03-12 | 2027-04-08 | A3570 | 185.58d | 0d | Dummy [0.02 h] | 0.02 | N | N | B00043 | 12 | 1 | Est- |
| A3610 |  | Primera mano de pintura | 14d | 2027-03-16 | 2027-04-12 | A3600 SS+2d | 245.58d |  | Dummy [0.02 h] | 0.02 | N | N | B00043 | 12 | 1 | Est- |
|  | P12 | **Piso 12** |  | 2027-04-08 | 2027-04-30 |  |  |  |  |  |  |  |  |  |  |  |
| A3630 |  | Estuco | 14d | 2027-04-08 | 2027-04-28 | A3600 | 185.58d | 0d | Dummy [0.02 h] | 0.02 | N | N | B00043 | 13 | 1 | Est- |
| A3640 |  | Primera mano de pintura | 14d | 2027-04-12 | 2027-04-30 | A3630 SS+2d | 231.58d |  | Dummy [0.02 h] | 0.02 | N | N | B00043 | 13 | 1 | Est- |

| ID | WBS | Activity | Duration | Start | Finish | Predecessors | Complete | Remaining | Planned start | Planned finish | Total float | Free float | Resources | Cost | Actual cost | Tipo 80-20 | Hito Inicio - Fin | CBB_Etapas | CBB_Obras | CBB_Piso | CBB_Procesos |
| --- | --- | --- | --- | --- | --- | --- | --- | --- | --- | --- | --- | --- | --- | --- | --- | --- | --- | --- | --- | --- | --- |
|  | P13 | **Piso 13** |  | 2027-04-28 | 2027-05-20 |  |  |  |  |  |  |  |  |  |  |  |  |  |  |  |  |
| A3660 |  | Estuco | 14d | 2027-04-28 | 2027-05-19 | A3630 |  |  |  |  | 185.58d | 0d | Dummy [0.02 h] | 0.02 |  | N | N | 1 | B00043 | 14 | Est- |
| A3670 |  | Primera mano de pintura | 13d | 2027-04-30 | 2027-05-20 | A3660 SS+2d |  |  |  |  | 218.58d |  | Dummy [0.02 h] | 0.02 |  | N | N | 1 | B00043 | 14 | Est- |
|  | P14 | **Piso 14** |  | 2027-05-12 | 2027-06-03 |  |  |  |  |  |  |  |  |  |  |  |  |  |  |  |  |
| A3690 |  | Estuco | 13d | 2027-05-12 | 2027-06-01 | A3660 FS-5d |  |  |  |  | 185.58d | 0d | Dummy [0.02 h] | 0.02 |  | N | N | 1 | B00043 | 15 | Est- |
| A3700 |  | Primera mano de pintura | 13d | 2027-05-14 | 2027-06-03 | A3690 SS+2d |  |  |  |  | 209.58d |  | Dummy [0.02 h] | 0.02 |  | N | N | 1 | B00043 | 15 | Est- |
|  | P15 | **Piso 15** |  | 2027-06-01 | 2027-06-22 |  |  |  |  |  |  |  |  |  |  |  |  |  |  |  |  |
| A3720 |  | Estuco | 12d | 2027-06-01 | 2027-06-18 | A3690 |  |  |  |  | 185.58d | 0d | Dummy [0.02 h] | 0.02 |  | N | N | 1 | B00043 | 16 | Est- |
| A3730 |  | Primera mano de pintura | 12d | 2027-06-03 | 2027-06-22 | A3720 SS+2d |  |  |  |  | 197.58d |  | Dummy [0.02 h] | 0.02 |  | N | N | 1 | B00043 | 16 | Est- |
|  | P16 | **Piso 16** |  | 2027-06-18 | 2027-07-09 |  |  |  |  |  |  |  |  |  |  |  |  |  |  |  |  |
| A15130 |  | Estuco | 12d | 2027-06-18 | 2027-07-07 | A3720 |  |  |  |  | 185.58d | 0d |  |  |  | N | N |  | B00043 |  |  |
| A15140 |  | Primera mano de pintura | 12d | 2027-06-22 | 2027-07-09 | A15130 SS+2d |  |  |  |  | 185.58d | 0d |  |  |  | N | N |  | B00043 |  |  |
|  | Cie_Ras | **Cielo Raso** |  | 2026-09-08 | 2027-06-22 |  |  |  |  |  |  |  |  |  |  |  |  |  |  |  |  |
|  | Est_Cielo Raso | **Estructura Cielo Raso** |  | 2026-09-08 | 2027-03-02 |  |  |  |  |  |  |  |  |  |  |  |  |  |  |  |  |
|  | P03 | **Piso 03** |  | 2026-09-08 | 2026-10-14 |  |  |  |  |  |  |  |  |  |  |  |  |  |  |  |  |
| A4190 |  | Estructura Baños | 8d | 2026-09-08 A | 2026-09-10 | A1230 SS | 16% | 6.72d | 2026-09-08 | 2026-09-18 | 35.06d | 0d | Dummy [0.02 h] | 0.02 | 0 | N | N | 1 | B00043 | 4 | Cie-Ras |
| A18120 |  | Estructura Cocina y labores | 4d | 2026-09-18 A | 2026-09-16 | A4190 | 16% | 3.36d | 2026-09-18 | 2026-09-24 | 35.06d | 0d | Dummy [0.02 h] | 0.02 | 0 |  |  |  | B00043 |  |  |
| A18130 |  | Estructura Hall de acceso | 4d | 2026-09-24 A | 2026-09-21 | A18120 | 16% | 3.36d | 2026-09-24 | 2026-09-30 | 35.06d | 0d | Dummy [0.02 h] | 0.02 | 0 |  |  |  | B00043 |  |  |
| A18140 |  | Estructura Alcobas | 8d | 2026-09-30 A | 2026-09-30 | A18130 | 16% | 6.72d | 2026-09-30 | 2026-10-13 | 35.06d | 0d | Dummy [0.02 h] | 0.02 | 0 |  |  |  | B00043 |  |  |
| A18150 |  | Estructura Salon Comedor | 4d | 2026-10-13 A | 2026-10-05 | A18140 | 16% | 3.36d | 2026-10-13 | 2026-10-19 | 35.06d | 0d | Dummy [0.02 h] | 0.02 | 0 |  |  |  | B00043 |  |  |
| A18160 |  | Estructura Balcon | 4d | 2026-10-19 A | 2026-10-09 | A18150 | 16% | 3.36d | 2026-10-19 | 2026-10-23 | 351.98d | 0d | Dummy [0.02 h] | 0.02 | 0 |  |  |  | B00043 |  |  |
| A18170 |  | Estructura Sobre Muros concreto | 8d | 2026-10-19 A | 2026-10-14 | A18160 FS-4d | 16% | 6.72d | 2026-10-19 | 2026-10-29 | 351.98d |  | Dummy [0.02 h] | 0.02 | 0 |  |  |  | B00043 |  |  |
|  | P04 | **Piso 04** |  | 2026-09-10 | 2026-11-03 |  |  |  |  |  |  |  |  |  |  |  |  |  |  |  |  |
| A18180 |  | Estructura Baños | 8d | 2026-09-10 | 2026-09-22 | A4190 |  |  |  |  | 268.86d | 0d | Dummy [0.02 h] | 0.02 |  | N | N | 1 | B00043 | 4 | Cie-Ras |
| A18190 |  | Estructura Cocina y labores | 4d | 2026-09-22 | 2026-09-28 | A18180 |  |  |  |  | 338.86d | 0d | Dummy [0.02 h] | 0.02 |  |  |  |  | B00043 |  |  |
| A18200 |  | Estructura Hall de acceso | 4d | 2026-09-28 | 2026-10-02 | A18190 |  |  |  |  | 338.86d | 0d | Dummy [0.02 h] | 0.02 |  |  |  |  | B00043 |  |  |
| A18210 |  | Estructura Alcobas | 8d | 2026-10-02 | 2026-10-15 | A18200 |  |  |  |  | 338.86d | 0d | Dummy [0.02 h] | 0.02 |  |  |  |  | B00043 |  |  |
| A18220 |  | Estructura Salon Comedor | 4d | 2026-10-15 | 2026-10-21 | A18210 |  |  |  |  | 338.86d | 0d | Dummy [0.02 h] | 0.02 |  |  |  |  | B00043 |  |  |
| A18230 |  | Estructura Balcon | 4d | 2026-10-21 | 2026-10-27 | A18220 |  |  |  |  | 338.86d | 0d | Dummy [0.02 h] | 0.02 |  |  |  |  | B00043 |  |  |
| A18240 |  | Estructura Sobre Muros concreto | 8d | 2026-10-21 | 2026-11-03 | A18230 FS-4d |  |  |  |  | 338.86d |  | Dummy [0.02 h] | 0.02 |  |  |  |  | B00043 |  |  |

| ID | WBS | Activity | Duration | Start | Finish | Predecessors | Total float | Free float | Resources | Cost | Hito Inicio - Fin | Tipo 80-20 | CBB_Piso | CBB_Obras | CBB_Etapas | CBB_Procesos |
| --- | --- | --- | --- | --- | --- | --- | --- | --- | --- | --- | --- | --- | --- | --- | --- | --- |
|  | P05 | **Piso 05** |  | 2026-09-22 | 2026-11-13 |  |  |  |  |  |  |  |  |  |  |  |
| A18250 |  | Estructura Baños | 8d | 2026-09-22 | 2026-10-02 | A18180 | 268.86d | 0d | Dummy [0.02 h] | 0.02 | N | N | 4 | B00043 | 1 | Cie-Ras |
| A18260 |  | Estructura Cocina y labores | 4d | 2026-10-02 | 2026-10-08 | A18250 | 330.86d | 0d | Dummy [0.02 h] | 0.02 |  |  |  | B00043 |  |  |
| A18270 |  | Estructura Hall de acceso | 4d | 2026-10-08 | 2026-10-15 | A18260 | 330.86d | 0d | Dummy [0.02 h] | 0.02 |  |  |  | B00043 |  |  |
| A18280 |  | Estructura Alcobas | 8d | 2026-10-15 | 2026-10-27 | A18270 | 330.86d | 0d | Dummy [0.02 h] | 0.02 |  |  |  | B00043 |  |  |
| A18290 |  | Estructura Salon Comedor | 4d | 2026-10-27 | 2026-11-03 | A18280 | 330.86d | 0d | Dummy [0.02 h] | 0.02 |  |  |  | B00043 |  |  |
| A18300 |  | Estructura Balcon | 4d | 2026-11-03 | 2026-11-09 | A18290 | 330.86d | 0d | Dummy [0.02 h] | 0.02 |  |  |  | B00043 |  |  |
| A18310 |  | Estructura Sobre Muros concreto | 8d | 2026-11-03 | 2026-11-13 | A18300 FS-4d | 330.86d |  | Dummy [0.02 h] | 0.02 |  |  |  | B00043 |  |  |
|  | P06 | **Piso 06** |  | 2026-10-02 | 2026-11-26 |  |  |  |  |  |  |  |  |  |  |  |
| A18320 |  | Estructura Baños | 8d | 2026-10-02 | 2026-10-15 | A18250 | 268.86d | 0d | Dummy [0.02 h] | 0.02 | N | N | 4 | B00043 | 1 | Cie-Ras |
| A18330 |  | Estructura Cocina y labores | 4d | 2026-10-15 | 2026-10-21 | A18320 | 322.86d | 0d | Dummy [0.02 h] | 0.02 |  |  |  | B00043 |  |  |
| A18340 |  | Estructura Hall de acceso | 4d | 2026-10-21 | 2026-10-27 | A18330 | 322.86d | 0d | Dummy [0.02 h] | 0.02 |  |  |  | B00043 |  |  |
| A18350 |  | Estructura Alcobas | 8d | 2026-10-27 | 2026-11-09 | A18340 | 322.86d | 0d | Dummy [0.02 h] | 0.02 |  |  |  | B00043 |  |  |
| A18360 |  | Estructura Salon Comedor | 4d | 2026-11-09 | 2026-11-13 | A18350 | 322.86d | 0d | Dummy [0.02 h] | 0.02 |  |  |  | B00043 |  |  |
| A18370 |  | Estructura Balcon | 4d | 2026-11-13 | 2026-11-20 | A18360 | 322.86d | 0d | Dummy [0.02 h] | 0.02 |  |  |  | B00043 |  |  |
| A18380 |  | Estructura Sobre Muros concreto | 8d | 2026-11-13 | 2026-11-26 | A18370 FS-4d | 322.86d |  | Dummy [0.02 h] | 0.02 |  |  |  | B00043 |  |  |
|  | P07 | **Piso 07** |  | 2026-10-15 | 2026-12-09 |  |  |  |  |  |  |  |  |  |  |  |
| A18390 |  | Estructura Baños | 8d | 2026-10-15 | 2026-10-27 | A18320 | 268.86d | 0d | Dummy [0.02 h] | 0.02 | N | N | 4 | B00043 | 1 | Cie-Ras |
| A18400 |  | Estructura Cocina y labores | 4d | 2026-10-27 | 2026-11-03 | A18390 | 314.86d | 0d | Dummy [0.02 h] | 0.02 |  |  |  | B00043 |  |  |
| A18410 |  | Estructura Hall de acceso | 4d | 2026-11-03 | 2026-11-09 | A18400 | 314.86d | 0d | Dummy [0.02 h] | 0.02 |  |  |  | B00043 |  |  |
| A18420 |  | Estructura Alcobas | 8d | 2026-11-09 | 2026-11-20 | A18410 | 314.86d | 0d | Dummy [0.02 h] | 0.02 |  |  |  | B00043 |  |  |
| A18430 |  | Estructura Salon Comedor | 4d | 2026-11-20 | 2026-11-26 | A18420 | 314.86d | 0d | Dummy [0.02 h] | 0.02 |  |  |  | B00043 |  |  |
| A18440 |  | Estructura Balcon | 4d | 2026-11-26 | 2026-12-02 | A18430 | 314.86d | 0d | Dummy [0.02 h] | 0.02 |  |  |  | B00043 |  |  |
| A18450 |  | Estructura Sobre Muros concreto | 8d | 2026-11-26 | 2026-12-09 | A18440 FS-4d | 314.86d |  | Dummy [0.02 h] | 0.02 |  |  |  | B00043 |  |  |

| ID | WBS | Activity | Duration | Start | Finish | Predecessors | Total float | Free float | Resources | Cost | Tipo 80-20 | Hito Inicio - Fin | CBB_Piso | CBB_Procesos | CBB_Obras | CBB_Etapas |
| --- | --- | --- | --- | --- | --- | --- | --- | --- | --- | --- | --- | --- | --- | --- | --- | --- |
|  | P08 | **Piso 08** |  | 2026-10-27 | 2026-12-21 |  |  |  |  |  |  |  |  |  |  |  |
| A18460 |  | Estructura Baños | 8d | 2026-10-27 | 2026-11-09 | A18390 | 268.86d | 0d | Dummy [0.02 h] | 0.02 | N | N | 4 | Cie-Ras | B00043 | 1 |
| A18470 |  | Estructura Cocina y labores | 4d | 2026-11-09 | 2026-11-13 | A18460 | 306.86d | 0d | Dummy [0.02 h] | 0.02 |  |  |  |  | B00043 |  |
| A18480 |  | Estructura Hall de acceso | 4d | 2026-11-13 | 2026-11-20 | A18470 | 306.86d | 0d | Dummy [0.02 h] | 0.02 |  |  |  |  | B00043 |  |
| A18490 |  | Estructura Alcobas | 8d | 2026-11-20 | 2026-12-02 | A18480 | 306.86d | 0d | Dummy [0.02 h] | 0.02 |  |  |  |  | B00043 |  |
| A18500 |  | Estructura Salon Comedor | 4d | 2026-12-02 | 2026-12-09 | A18490 | 306.86d | 0d | Dummy [0.02 h] | 0.02 |  |  |  |  | B00043 |  |
| A18510 |  | Estructura Balcon | 4d | 2026-12-09 | 2026-12-15 | A18500 | 306.86d | 0d | Dummy [0.02 h] | 0.02 |  |  |  |  | B00043 |  |
| A18520 |  | Estructura Sobre Muros concreto | 8d | 2026-12-09 | 2026-12-21 | A18510 FS-4d | 306.86d |  | Dummy [0.02 h] | 0.02 |  |  |  |  | B00043 |  |
|  | P09 | **Piso 09** |  | 2026-11-09 | 2026-12-22 |  |  |  |  |  |  |  |  |  |  |  |
| A18530 |  | Estructura Baños | 7d | 2026-11-09 | 2026-11-19 | A18460 | 268.86d | 0d | Dummy [0.02 h] | 0.02 | N | N | 4 | Cie-Ras | B00043 | 1 |
| A18540 |  | Estructura Cocina y labores | 3d | 2026-11-19 | 2026-11-24 | A18530 | 305.86d | 0d | Dummy [0.02 h] | 0.02 |  |  |  |  | B00043 |  |
| A18550 |  | Estructura Hall de acceso | 3d | 2026-11-24 | 2026-11-27 | A18540 | 305.86d | 0d | Dummy [0.02 h] | 0.02 |  |  |  |  | B00043 |  |
| A18560 |  | Estructura Alcobas | 7d | 2026-11-27 | 2026-12-09 | A18550 | 305.86d | 0d | Dummy [0.02 h] | 0.02 |  |  |  |  | B00043 |  |
| A18570 |  | Estructura Salon Comedor | 3d | 2026-12-09 | 2026-12-14 | A18560 | 305.86d | 0d | Dummy [0.02 h] | 0.02 |  |  |  |  | B00043 |  |
| A18590 |  | Estructura Sobre Muros concreto | 7d | 2026-12-11 | 2026-12-22 | A18580 FS-4d | 305.86d |  | Dummy [0.02 h] | 0.02 |  |  |  |  | B00043 |  |
| A18580 |  | Estructura Balcon | 3d | 2026-12-14 | 2026-12-17 | A18570 | 305.86d | 0d | Dummy [0.02 h] | 0.02 |  |  |  |  | B00043 |  |
|  | P10 | **Piso 10** |  | 2026-11-19 | 2027-01-19 |  |  |  |  |  |  |  |  |  |  |  |
| A18600 |  | Estructura Baños | 7d | 2026-11-19 | 2026-11-30 | A18530 | 268.86d | 0d | Dummy [0.02 h] | 0.02 | N | N | 4 | Cie-Ras | B00043 | 1 |
| A18610 |  | Estructura Cocina y labores | 3d | 2026-11-30 | 2026-12-03 | A18600 | 298.86d | 0d | Dummy [0.02 h] | 0.02 |  |  |  |  | B00043 |  |
| A18620 |  | Estructura Hall de acceso | 3d | 2026-12-03 | 2026-12-09 | A18610 | 298.86d | 0d | Dummy [0.02 h] | 0.02 |  |  |  |  | B00043 |  |
| A18630 |  | Estructura Alcobas | 7d | 2026-12-09 | 2026-12-18 | A18620 | 298.86d | 0d | Dummy [0.02 h] | 0.02 |  |  |  |  | B00043 |  |
| A18640 |  | Estructura Salon Comedor | 3d | 2026-12-18 | 2026-12-23 | A18630 | 298.86d | 0d | Dummy [0.02 h] | 0.02 |  |  |  |  | B00043 |  |
| A18660 |  | Estructura Sobre Muros concreto | 7d | 2026-12-22 | 2027-01-19 | A18650 FS-4d | 298.86d |  | Dummy [0.02 h] | 0.02 |  |  |  |  | B00043 |  |
| A18650 |  | Estructura Balcon | 3d | 2026-12-23 | 2027-01-14 | A18640 | 298.86d | 0d | Dummy [0.02 h] | 0.02 |  |  |  |  | B00043 |  |

| ID | WBS | Activity | Duration | Start | Finish | Predecessors | Total float | Free float | Resources | Cost | Hito Inicio - Fin | Tipo 80-20 | CBB_Procesos | CBB_Obras | CBB_Etapas | CBB_Piso |
| --- | --- | --- | --- | --- | --- | --- | --- | --- | --- | --- | --- | --- | --- | --- | --- | --- |
|  | P11 | **Piso 11** |  | 2026-11-30 | 2027-01-26 |  |  |  |  |  |  |  |  |  |  |  |
| A18670 |  | Estructura Baños | 6d | 2026-11-30 | 2026-12-09 | A18600 | 268.86d | 0d | Dummy [0.02 h] | 0.02 | N | N | Cie-Ras | B00043 | 1 | 4 |
| A18680 |  | Estructura Cocina y labores | 3d | 2026-12-09 | 2026-12-14 | A18670 | 293.86d | 0d | Dummy [0.02 h] | 0.02 |  |  |  | B00043 |  |  |
| A18690 |  | Estructura Hall de acceso | 3d | 2026-12-14 | 2026-12-17 | A18680 | 293.86d | 0d | Dummy [0.02 h] | 0.02 |  |  |  | B00043 |  |  |
| A18700 |  | Estructura Alcobas | 6d | 2026-12-17 | 2027-01-13 | A18690 | 293.86d | 0d | Dummy [0.02 h] | 0.02 |  |  |  | B00043 |  |  |
| A18710 |  | Estructura Salon Comedor | 3d | 2027-01-13 | 2027-01-18 | A18700 | 293.86d | 0d | Dummy [0.02 h] | 0.02 |  |  |  | B00043 |  |  |
| A18720 |  | Estructura Balcon | 3d | 2027-01-18 | 2027-01-21 | A18710 | 293.86d | 0d | Dummy [0.02 h] | 0.02 |  |  |  | B00043 |  |  |
| A18730 |  | Estructura Sobre Muros concreto | 6d | 2027-01-18 | 2027-01-26 | A18720 FS-3d | 293.86d |  | Dummy [0.02 h] | 0.02 |  |  |  | B00043 |  |  |
|  | P12 | **Piso 12** |  | 2026-12-09 | 2027-02-03 |  |  |  |  |  |  |  |  |  |  |  |
| A18740 |  | Estructura Baños | 6d | 2026-12-09 | 2026-12-17 | A18670 | 268.86d | 0d | Dummy [0.02 h] | 0.02 | N | N | Cie-Ras | B00043 | 1 | 4 |
| A18750 |  | Estructura Cocina y labores | 3d | 2026-12-17 | 2026-12-22 | A18740 | 287.86d | 0d | Dummy [0.02 h] | 0.02 |  |  |  | B00043 |  |  |
| A18760 |  | Estructura Hall de acceso | 3d | 2026-12-22 | 2027-01-13 | A18750 | 287.86d | 0d | Dummy [0.02 h] | 0.02 |  |  |  | B00043 |  |  |
| A18770 |  | Estructura Alcobas | 6d | 2027-01-13 | 2027-01-21 | A18760 | 287.86d | 0d | Dummy [0.02 h] | 0.02 |  |  |  | B00043 |  |  |
| A18780 |  | Estructura Salon Comedor | 3d | 2027-01-21 | 2027-01-26 | A18770 | 287.86d | 0d | Dummy [0.02 h] | 0.02 |  |  |  | B00043 |  |  |
| A18790 |  | Estructura Balcon | 3d | 2027-01-26 | 2027-01-29 | A18780 | 287.86d | 0d | Dummy [0.02 h] | 0.02 |  |  |  | B00043 |  |  |
| A18800 |  | Estructura Sobre Muros concreto | 6d | 2027-01-26 | 2027-02-03 | A18790 FS-3d | 287.86d |  | Dummy [0.02 h] | 0.02 |  |  |  | B00043 |  |  |
|  | P13 | **Piso 13** |  | 2026-12-17 | 2027-02-11 |  |  |  |  |  |  |  |  |  |  |  |
| A18810 |  | Estructura Baños | 6d | 2026-12-17 | 2027-01-13 | A18740 | 268.86d | 0d | Dummy [0.02 h] | 0.02 | N | N | Cie-Ras | B00043 | 1 | 4 |
| A18820 |  | Estructura Cocina y labores | 3d | 2027-01-13 | 2027-01-18 | A18810 | 281.86d | 0d | Dummy [0.02 h] | 0.02 |  |  |  | B00043 |  |  |
| A18830 |  | Estructura Hall de acceso | 3d | 2027-01-18 | 2027-01-21 | A18820 | 281.86d | 0d | Dummy [0.02 h] | 0.02 |  |  |  | B00043 |  |  |
| A18840 |  | Estructura Alcobas | 6d | 2027-01-21 | 2027-01-29 | A18830 | 281.86d | 0d | Dummy [0.02 h] | 0.02 |  |  |  | B00043 |  |  |
| A18850 |  | Estructura Salon Comedor | 3d | 2027-01-29 | 2027-02-03 | A18840 | 281.86d | 0d | Dummy [0.02 h] | 0.02 |  |  |  | B00043 |  |  |
| A18860 |  | Estructura Balcon | 3d | 2027-02-03 | 2027-02-08 | A18850 | 281.86d | 0d | Dummy [0.02 h] | 0.02 |  |  |  | B00043 |  |  |
| A18870 |  | Estructura Sobre Muros concreto | 6d | 2027-02-03 | 2027-02-11 | A18860 FS-3d | 281.86d |  | Dummy [0.02 h] | 0.02 |  |  |  | B00043 |  |  |

| ID | WBS | Activity | Duration | Start | Finish | Predecessors | Total float | Free float | Resources | Cost | Tipo 80-20 | Hito Inicio - Fin | CBB_Procesos | CBB_Obras | CBB_Piso | CBB_Etapas |
| --- | --- | --- | --- | --- | --- | --- | --- | --- | --- | --- | --- | --- | --- | --- | --- | --- |
|  | P14 | **Piso 14** |  | 2027-01-13 | 2027-02-19 |  |  |  |  |  |  |  |  |  |  |  |
| A18880 |  | Estructura Baños | 6d | 2027-01-13 | 2027-01-21 | A18810 | 268.86d | 0d | Dummy [0.02 h] | 0.02 | N | N | Cie-Ras | B00043 | 4 | 1 |
| A18890 |  | Estructura Cocina y labores | 3d | 2027-01-21 | 2027-01-26 | A18880 | 275.86d | 0d | Dummy [0.02 h] | 0.02 |  |  |  | B00043 |  |  |
| A18900 |  | Estructura Hall de acceso | 3d | 2027-01-26 | 2027-01-29 | A18890 | 275.86d | 0d | Dummy [0.02 h] | 0.02 |  |  |  | B00043 |  |  |
| A18910 |  | Estructura Alcobas | 6d | 2027-01-29 | 2027-02-08 | A18900 | 275.86d | 0d | Dummy [0.02 h] | 0.02 |  |  |  | B00043 |  |  |
| A18920 |  | Estructura Salon Comedor | 3d | 2027-02-08 | 2027-02-11 | A18910 | 275.86d | 0d | Dummy [0.02 h] | 0.02 |  |  |  | B00043 |  |  |
| A18930 |  | Estructura Balcon | 3d | 2027-02-11 | 2027-02-16 | A18920 | 275.86d | 0d | Dummy [0.02 h] | 0.02 |  |  |  | B00043 |  |  |
| A18940 |  | Estructura Sobre Muros concreto | 6d | 2027-02-11 | 2027-02-19 | A18930 FS-3d | 275.86d |  | Dummy [0.02 h] | 0.02 |  |  |  | B00043 |  |  |
|  | P15 | **Piso 15** |  | 2027-01-21 | 2027-02-23 |  |  |  |  |  |  |  |  |  |  |  |
| A18950 |  | Estructura Baños | 5d | 2027-01-21 | 2027-01-28 | A18880 | 268.86d | 0d | Dummy [0.02 h] | 0.02 | N | N | Cie-Ras | B00043 | 4 | 1 |
| A18960 |  | Estructura Cocina y labores | 2d | 2027-01-28 | 2027-02-01 | A18950 | 273.86d | 0d | Dummy [0.02 h] | 0.02 |  |  |  | B00043 |  |  |
| A18970 |  | Estructura Hall de acceso | 2d | 2027-02-01 | 2027-02-03 | A18960 | 273.86d | 0d | Dummy [0.02 h] | 0.02 |  |  |  | B00043 |  |  |
| A18980 |  | Estructura Alcobas | 5d | 2027-02-03 | 2027-02-10 | A18970 | 273.86d | 0d | Dummy [0.02 h] | 0.02 |  |  |  | B00043 |  |  |
| A18990 |  | Estructura Salon Comedor | 2d | 2027-02-10 | 2027-02-12 | A18980 | 273.86d | 0d | Dummy [0.02 h] | 0.02 |  |  |  | B00043 |  |  |
| A19000 |  | Estructura Balcon | 2d | 2027-02-12 | 2027-02-16 | A18990 | 273.86d | 0d | Dummy [0.02 h] | 0.02 |  |  |  | B00043 |  |  |
| A19010 |  | Estructura Sobre Muros concreto | 5d | 2027-02-16 | 2027-02-23 | A19000 | 273.86d |  | Dummy [0.02 h] | 0.02 |  |  |  | B00043 |  |  |
|  | P16 | **Piso 16** |  | 2027-01-28 | 2027-03-02 |  |  |  |  |  |  |  |  |  |  |  |
| A19020 |  | Estructura Baños | 5d | 2027-01-28 | 2027-02-04 | A18950 | 268.86d | 0d | Dummy [0.02 h] | 0.02 | N | N | Cie-Ras | B00043 | 4 | 1 |
| A19030 |  | Estructura Cocina y labores | 2d | 2027-02-04 | 2027-02-08 | A19020 | 268.86d | 0d | Dummy [0.02 h] | 0.02 |  |  |  | B00043 |  |  |
| A19040 |  | Estructura Hall de acceso | 2d | 2027-02-08 | 2027-02-10 | A19030 | 268.86d | 0d | Dummy [0.02 h] | 0.02 |  |  |  | B00043 |  |  |
| A19050 |  | Estructura Alcobas | 5d | 2027-02-10 | 2027-02-17 | A19040 | 268.86d | 0d | Dummy [0.02 h] | 0.02 |  |  |  | B00043 |  |  |
| A19060 |  | Estructura Salon Comedor | 2d | 2027-02-17 | 2027-02-19 | A19050 | 268.86d | 0d | Dummy [0.02 h] | 0.02 |  |  |  | B00043 |  |  |
| A19070 |  | Estructura Balcon | 2d | 2027-02-19 | 2027-02-23 | A19060 | 268.86d | 0d | Dummy [0.02 h] | 0.02 |  |  |  | B00043 |  |  |
| A19080 |  | Estructura Sobre Muros concreto | 5d | 2027-02-23 | 2027-03-02 | A19070 | 268.86d |  | Dummy [0.02 h] | 0.02 |  |  |  | B00043 |  |  |

| ID | WBS | Activity | Duration | Start | Finish | Predecessors | Total float | Free float | Resources | Cost | Hito Inicio - Fin | Tipo 80-20 | CBB_Procesos | CBB_Piso | CBB_Obras | CBB_Etapas |
| --- | --- | --- | --- | --- | --- | --- | --- | --- | --- | --- | --- | --- | --- | --- | --- | --- |
|  | Inst Soportes | **Inst Soportes** |  | 2027-01-26 | 2027-05-05 |  |  |  |  |  |  |  |  |  |  |  |
|  | P03 | **Piso 03** |  | 2027-01-26 | 2027-02-03 |  |  |  |  |  |  |  |  |  |  |  |
| A3810 |  | Ventiladores | 6d | 2027-01-26 | 2027-02-03 | A1210 SS | 228.58d | 0d | Dummy [0.02 h] | 0.02 | N | N | Pis | 4 | B00043 | 1 |
| A3820 |  | Campana | 6d | 2027-01-26 | 2027-02-03 | A3810 SS | 228.58d | 0d | Dummy [0.02 h] | 0.02 | N | N | Pis | 4 | B00043 | 1 |
|  | P04 | **Piso 04** |  | 2027-02-03 | 2027-02-11 |  |  |  |  |  |  |  |  |  |  |  |
| A3830 |  | Ventiladores | 6d | 2027-02-03 | 2027-02-11 | A3820 | 228.58d | 0d | Dummy [0.02 h] | 0.02 | N | N | Pis | 5 | B00043 | 1 |
| A3840 |  | Campana | 6d | 2027-02-03 | 2027-02-11 | A3830 SS | 228.58d | 0d | Dummy [0.02 h] | 0.02 | N | N | Pis | 5 | B00043 | 1 |
|  | P05 | **Piso 05** |  | 2027-02-11 | 2027-02-19 |  |  |  |  |  |  |  |  |  |  |  |
| A3850 |  | Campana | 6d | 2027-02-11 | 2027-02-19 | A3840 | 228.58d | 0d | Dummy [0.02 h] | 0.02 | N | N | Pis | 6 | B00043 | 1 |
| A3860 |  | Ventiladores | 6d | 2027-02-11 | 2027-02-19 | A3850 SS | 228.58d | 0d | Dummy [0.02 h] | 0.02 | N | N | Pis | 6 | B00043 | 1 |
|  | P06 | **Piso 06** |  | 2027-02-19 | 2027-03-01 |  |  |  |  |  |  |  |  |  |  |  |
| A3870 |  | Ventiladores | 6d | 2027-02-19 | 2027-03-01 | A3860 | 228.58d | 0d | Dummy [0.02 h] | 0.02 | N | N | Pis | 7 | B00043 | 1 |
| A3880 |  | Campana | 6d | 2027-02-19 | 2027-03-01 | A3870 SS | 228.58d | 0d | Dummy [0.02 h] | 0.02 | N | N | Pis | 7 | B00043 | 1 |
|  | P07 | **Piso 07** |  | 2027-03-01 | 2027-03-09 |  |  |  |  |  |  |  |  |  |  |  |
| A3890 |  | Ventiladores | 6d | 2027-03-01 | 2027-03-09 | A3880 | 228.58d | 0d | Dummy [0.02 h] | 0.02 | N | N | Pis | 8 | B00043 | 1 |
| A3900 |  | Campana | 6d | 2027-03-01 | 2027-03-09 | A3890 SS | 228.58d | 0d | Dummy [0.02 h] | 0.02 | N | N | Pis | 8 | B00043 | 1 |
|  | P08 | **Piso 08** |  | 2027-03-09 | 2027-03-17 |  |  |  |  |  |  |  |  |  |  |  |
| A3910 |  | Ventiladores | 6d | 2027-03-09 | 2027-03-17 | A3900 | 228.58d | 0d | Dummy [0.02 h] | 0.02 | N | N | Pis | 9 | B00043 | 1 |
| A3920 |  | Campana | 6d | 2027-03-09 | 2027-03-17 | A3910 SS | 228.58d | 0d | Dummy [0.02 h] | 0.02 | N | N | Pis | 9 | B00043 | 1 |
|  | P09 | **Piso 09** |  | 2027-03-17 | 2027-03-30 |  |  |  |  |  |  |  |  |  |  |  |
| A3930 |  | Ventiladores | 4d | 2027-03-17 | 2027-03-30 | A3920 | 228.58d | 0d | Dummy [0.02 h] | 0.02 | N | N | Pis | 10 | B00043 | 1 |
| A3940 |  | Campana | 4d | 2027-03-17 | 2027-03-30 | A3930 SS | 228.58d | 0d | Dummy [0.02 h] | 0.02 | N | N | Pis | 10 | B00043 | 1 |
|  | P10 | **Piso 10** |  | 2027-03-30 | 2027-04-05 |  |  |  |  |  |  |  |  |  |  |  |
| A3950 |  | Ventiladores | 4d | 2027-03-30 | 2027-04-05 | A3940 | 228.58d | 0d | Dummy [0.02 h] | 0.02 | N | N | Pis | 11 | B00043 | 1 |
| A3960 |  | Campana | 4d | 2027-03-30 | 2027-04-05 | A3950 SS | 228.58d | 0d | Dummy [0.02 h] | 0.02 | N | N | Pis | 11 | B00043 | 1 |

| ID | WBS | Activity | Duration | Start | Finish | Predecessors | Total float | Free float | Resources | Cost | Hito Inicio - Fin | Tipo 80-20 | CBB_Obras | CBB_Etapas | CBB_Piso | CBB_Procesos |
| --- | --- | --- | --- | --- | --- | --- | --- | --- | --- | --- | --- | --- | --- | --- | --- | --- |
|  | P11 | **Piso 11** |  | 2027-04-05 | 2027-04-09 |  |  |  |  |  |  |  |  |  |  |  |
| A3970 |  | Campana | 4d | 2027-04-05 | 2027-04-09 | A3960 | 228.58d | 0d | Dummy [0.02 h] | 0.02 | N | N | B00043 | 1 | 12 | Pis |
| A3980 |  | Ventiladores | 4d | 2027-04-05 | 2027-04-09 | A3970 SS | 228.58d | 0d | Dummy [0.02 h] | 0.02 | N | N | B00043 | 1 | 12 | Pis |
|  | P12 | **Piso 12** |  | 2027-04-09 | 2027-04-15 |  |  |  |  |  |  |  |  |  |  |  |
| A3990 |  | Ventiladores | 4d | 2027-04-09 | 2027-04-15 | A3980 | 228.58d | 0d | Dummy [0.02 h] | 0.02 | N | N | B00043 | 1 | 13 | Pis |
| A4000 |  | Campana | 4d | 2027-04-09 | 2027-04-15 | A3990 SS | 228.58d | 0d | Dummy [0.02 h] | 0.02 | N | N | B00043 | 1 | 13 | Pis |
|  | P13 | **Piso 13** |  | 2027-04-15 | 2027-04-21 |  |  |  |  |  |  |  |  |  |  |  |
| A4010 |  | Ventiladores | 4d | 2027-04-15 | 2027-04-21 | A4000 | 228.58d | 0d | Dummy [0.02 h] | 0.02 | N | N | B00043 | 1 | 14 | Pis |
| A4020 |  | Campana | 4d | 2027-04-15 | 2027-04-21 | A4010 SS | 228.58d | 0d | Dummy [0.02 h] | 0.02 | N | N | B00043 | 1 | 14 | Pis |
|  | P14 | **Piso 14** |  | 2027-04-21 | 2027-04-27 |  |  |  |  |  |  |  |  |  |  |  |
| A4030 |  | Ventiladores | 4d | 2027-04-21 | 2027-04-27 | A4020 | 228.58d | 0d | Dummy [0.02 h] | 0.02 | N | N | B00043 | 1 | 15 | Pis |
| A4040 |  | Campana | 4d | 2027-04-21 | 2027-04-27 | A4030 SS | 228.58d | 0d | Dummy [0.02 h] | 0.02 | N | N | B00043 | 1 | 15 | Pis |
|  | P15 | **Piso 15** |  | 2027-04-27 | 2027-04-30 |  |  |  |  |  |  |  |  |  |  |  |
| A4050 |  | Ventiladores | 3d | 2027-04-27 | 2027-04-30 | A4040 | 228.58d | 0d | Dummy [0.02 h] | 0.02 | N | N | B00043 | 1 | 16 | Pis |
| A4060 |  | Campana | 3d | 2027-04-27 | 2027-04-30 | A4050 SS | 228.58d | 0d | Dummy [0.02 h] | 0.02 | N | N | B00043 | 1 | 16 | Pis |
|  | P16 | **Piso 16** |  | 2027-04-30 | 2027-05-05 |  |  |  |  |  |  |  |  |  |  |  |
| A15150 |  | Campana | 3d | 2027-04-30 | 2027-05-05 | A4060 | 228.58d | 0d |  |  | N | N | B00043 |  |  |  |
| A15160 |  | Ventiladores | 3d | 2027-04-30 | 2027-05-05 | A15150 SS | 228.58d | 0d |  |  | N | N | B00043 |  |  |  |
|  | Laminado Pintura Cielo Raso | **Laminado Pintura Cielo Raso** |  | 2026-10-05 | 2027-06-22 |  |  |  |  |  |  |  |  |  |  |  |
|  | P03 | **Piso 03** |  | 2026-10-05 | 2026-12-07 |  |  |  |  |  |  |  |  |  |  |  |
| A4800 |  | Instalacion Lamina y Pintura | 42d | 2026-10-05 | 2026-12-07 | A1250 SS | 35.06d | 0d | Dummy [0.02 h] | 0.02 | N | N | B00043 | 1 | 4 | Enc |
|  | P04 | **Piso 04** |  | 2026-10-20 | 2026-12-22 |  |  |  |  |  |  |  |  |  |  |  |
| A4830 |  | Instalacion Lamina y Pintura | 42d | 2026-10-20 | 2026-12-22 | A4800 SS+10d | 197.06d | 0d | Dummy [0.02 h] | 0.02 | N | N | B00043 | 1 | 5 | Enc |
|  | P05 | **Piso 05** |  | 2026-11-04 | 2027-01-22 |  |  |  |  |  |  |  |  |  |  |  |
| A4860 |  | Instalacion Lamina y Pintura | 42d | 2026-11-04 | 2027-01-22 | A4830 SS+10d | 197.06d | 0d | Dummy [0.02 h] | 0.02 | N | N | B00043 | 1 | 6 | Enc |

| ID | WBS | Activity | Duration | Start | Finish | Predecessors | Total float | Free float | Resources | Cost | Hito Inicio - Fin | Tipo 80-20 | CBB_Piso | CBB_Procesos | CBB_Etapas | CBB_Obras |
| --- | --- | --- | --- | --- | --- | --- | --- | --- | --- | --- | --- | --- | --- | --- | --- | --- |
|  | P06 | **Piso 06** |  | 2026-11-19 | 2027-02-05 |  |  |  |  |  |  |  |  |  |  |  |
| A4890 |  | Instalacion Lamina y Pintura | 42d | 2026-11-19 | 2027-02-05 | A4860 SS+10d | 197.06d | 0d | Dummy [0.02 h] | 0.02 | N | N | 7 | Enc | 1 | B00043 |
|  | P07 | **Piso 07** |  | 2026-12-03 | 2027-02-19 |  |  |  |  |  |  |  |  |  |  |  |
| A4920 |  | Instalacion Lamina y Pintura | 42d | 2026-12-03 | 2027-02-19 | A4890 SS+10d | 197.06d | 0d | Dummy [0.02 h] | 0.02 | N | N | 8 | Enc | 1 | B00043 |
|  | P08 | **Piso 08** |  | 2026-12-18 | 2027-03-05 |  |  |  |  |  |  |  |  |  |  |  |
| A4950 |  | Instalacion Lamina y Pintura | 42d | 2026-12-18 | 2027-03-05 | A4920 SS+10d | 197.06d | 0d | Dummy [0.02 h] | 0.02 | N | N | 9 | Enc | 1 | B00043 |
|  | P09 | **Piso 09** |  | 2027-02-03 | 2027-03-19 |  |  |  |  |  |  |  |  |  |  |  |
| A4980 |  | Instalacion Lamina y Pintura | 32d | 2027-02-03 | 2027-03-19 | A4950 SS+20d | 197.06d | 0d | Dummy [0.02 h] | 0.02 | N | N | 10 | Enc | 1 | B00043 |
|  | P10 | **Piso 10** |  | 2027-02-17 | 2027-04-09 |  |  |  |  |  |  |  |  |  |  |  |
| A5010 |  | Instalacion Lamina y Pintura | 32d | 2027-02-17 | 2027-04-09 | A4980 SS+10d | 197.06d | 0d | Dummy [0.02 h] | 0.02 | N | N | 11 | Enc | 1 | B00043 |
|  | P11 | **Piso 11** |  | 2027-03-03 | 2027-04-23 |  |  |  |  |  |  |  |  |  |  |  |
| A5040 |  | Instalacion Lamina y Pintura | 32d | 2027-03-03 | 2027-04-23 | A5010 SS+10d | 197.06d | 0d | Dummy [0.02 h] | 0.02 | N | N | 12 | Enc | 1 | B00043 |
|  | P12 | **Piso 12** |  | 2027-03-17 | 2027-05-07 |  |  |  |  |  |  |  |  |  |  |  |
| A5070 |  | Instalacion Lamina y Pintura | 32d | 2027-03-17 | 2027-05-07 | A5040 SS+10d | 197.06d | 0d | Dummy [0.02 h] | 0.02 | N | N | 13 | Enc | 1 | B00043 |
|  | P13 | **Piso 13** |  | 2027-04-07 | 2027-05-24 |  |  |  |  |  |  |  |  |  |  |  |
| A5100 |  | Instalacion Lamina y Pintura | 32d | 2027-04-07 | 2027-05-24 | A5070 SS+10d | 197.06d | 0d | Dummy [0.02 h] | 0.02 | N | N | 14 | Enc | 1 | B00043 |
|  | P14 | **Piso 14** |  | 2027-04-21 | 2027-06-09 |  |  |  |  |  |  |  |  |  |  |  |
| A5130 |  | Instalacion Lamina y Pintura | 32d | 2027-04-21 | 2027-06-09 | A5100 SS+10d | 197.06d | 0d | Dummy [0.02 h] | 0.02 | N | N | 15 | Enc | 1 | B00043 |
|  | P15 | **Piso 15** |  | 2027-05-05 | 2027-06-08 |  |  |  |  |  |  |  |  |  |  |  |
| A5160 |  | Instalacion Lamina y Pintura | 21d | 2027-05-05 | 2027-06-08 | A5130 SS+10d | 197.06d | 0d | Dummy [0.02 h] | 0.02 | N | N | 16 | Enc | 1 | B00043 |
|  | P16 | **Piso 16** |  | 2027-05-20 | 2027-06-22 |  |  |  |  |  |  |  |  |  |  |  |
| A15210 |  | Instalacion Lamina y Pintura | 21d | 2027-05-20 | 2027-06-22 | A5160 SS+10d | 197.06d | 0d |  |  | N | N |  |  |  | B00043 |
|  | Estuco y Pintura-02 | **Estuco y Pintura-02** |  | 2026-11-06 | 2027-08-13 |  |  |  |  |  |  |  |  |  |  |  |
|  | P03 | **Piso 03** |  | 2026-11-06 | 2026-11-27 |  |  |  |  |  |  |  |  |  |  |  |
| A19630 |  | Segunda Mano de pintura | 14d | 2026-11-06 | 2026-11-27 | A1310 | 35.06d | 0d | Dummy [0.02 h] | 0.02 |  |  |  |  |  | B00043 |

| ID | WBS | Activity | Duration | Start | Finish | Predecessors | Total float | Free float | Resources | Cost | CBB_Obras |
| --- | --- | --- | --- | --- | --- | --- | --- | --- | --- | --- | --- |
|  | P04 | **Piso 04** |  | 2026-11-27 | 2026-12-18 |  |  |  |  |  |  |
| A19640 |  | Segunda Mano de pintura | 14d | 2026-11-27 | 2026-12-18 | A19630 | 35.06d | 0d | Dummy [0.02 h] | 0.02 | B00043 |
|  | P05 | **Piso 05** |  | 2026-12-18 | 2027-01-26 |  |  |  |  |  |  |
| A19650 |  | Segunda Mano de pintura | 14d | 2026-12-18 | 2027-01-26 | A19640 | 35.06d | 0d | Dummy [0.02 h] | 0.02 | B00043 |
|  | P06 | **Piso 06** |  | 2027-01-26 | 2027-02-15 |  |  |  |  |  |  |
| A19670 |  | Segunda Mano de pintura | 14d | 2027-01-26 | 2027-02-15 | A19650 | 161.06d | 0d | Dummy [0.02 h] | 0.02 | B00043 |
|  | P07 | **Piso 07** |  | 2027-02-15 | 2027-03-05 |  |  |  |  |  |  |
| A19680 |  | Segunda Mano de pintura | 14d | 2027-02-15 | 2027-03-05 | A19670 | 161.06d | 0d | Dummy [0.02 h] | 0.02 | B00043 |
|  | P08 | **Piso 08** |  | 2027-03-05 | 2027-04-01 |  |  |  |  |  |  |
| A19690 |  | Segunda Mano de pintura | 14d | 2027-03-05 | 2027-04-01 | A19680 | 161.06d | 0d | Dummy [0.02 h] | 0.02 | B00043 |
|  | P09 | **Piso 09** |  | 2027-04-01 | 2027-04-19 |  |  |  |  |  |  |
| A19700 |  | Segunda Mano de pintura | 12d | 2027-04-01 | 2027-04-19 | A19690 | 161.06d | 0d | Dummy [0.02 h] | 0.02 | B00043 |
|  | P10 | **Piso 10** |  | 2027-04-19 | 2027-05-05 |  |  |  |  |  |  |
| A19710 |  | Segunda Mano de pintura | 12d | 2027-04-19 | 2027-05-05 | A19700 | 161.06d | 0d | Dummy [0.02 h] | 0.02 | B00043 |
|  | P11 | **Piso 11** |  | 2027-05-05 | 2027-05-21 |  |  |  |  |  |  |
| A19720 |  | Segunda Mano de pintura | 11d | 2027-05-05 | 2027-05-21 | A19710 | 161.06d | 0d | Dummy [0.02 h] | 0.02 | B00043 |
|  | P12 | **Piso 12** |  | 2027-05-21 | 2027-06-09 |  |  |  |  |  |  |
| A19730 |  | Segunda Mano de pintura | 11d | 2027-05-21 | 2027-06-09 | A19720 | 161.06d | 0d | Dummy [0.02 h] | 0.02 | B00043 |
|  | P13 | **Piso 13** |  | 2027-06-09 | 2027-06-24 |  |  |  |  |  |  |
| A19750 |  | Segunda Mano de pintura | 11d | 2027-06-09 | 2027-06-24 | A19730 | 161.06d | 0d | Dummy [0.02 h] | 0.02 | B00043 |
|  | P14 | **Piso 14** |  | 2027-06-24 | 2027-07-12 |  |  |  |  |  |  |
| A19760 |  | Segunda Mano de pintura | 11d | 2027-06-24 | 2027-07-12 | A19750 | 161.06d | 0d | Dummy [0.02 h] | 0.02 | B00043 |
|  | P15 | **Piso 15** |  | 2027-07-12 | 2027-07-26 |  |  |  |  |  |  |
| A19770 |  | Segunda Mano de pintura | 9d | 2027-07-12 | 2027-07-26 | A19760 | 161.06d | 0d | Dummy [0.02 h] | 0.02 | B00043 |

| ID | WBS | Activity | Duration | Start | Finish | Predecessors | Total float | Free float | Resources | Cost | CBB_Obras | Hito Inicio - Fin | Tipo 80-20 | CBB_Etapas | CBB_Piso | CBB_Procesos |
| --- | --- | --- | --- | --- | --- | --- | --- | --- | --- | --- | --- | --- | --- | --- | --- | --- |
|  | P16 | **Piso 16** |  | 2027-08-02 | 2027-08-13 |  |  |  |  |  |  |  |  |  |  |  |
| A19780 |  | Segunda Mano de pintura | 9d | 2027-08-02 | 2027-08-13 | A19770 FS+5d | 161.06d | 0d | Dummy [0.02 h] | 0.02 | B00043 |  |  |  |  |  |
|  | Ceramica y Enchapes | **Ceramica y Enchapes** |  | 2026-10-09 | 2027-08-02 |  |  |  |  |  |  |  |  |  |  |  |
|  | P03 | **Piso 03** |  | 2026-10-09 | 2026-12-03 |  |  |  |  |  |  |  |  |  |  |  |
| A5690 |  | Muros y piso de Baño | 12d | 2026-10-09 | 2026-10-28 | A1290 SS-60d | 35.06d | 0d | Dummy [0.02 h] | 0.02 | B00043 | N | N | 1 | 4 | Car-Mad |
| A5700 |  | Piso de Alcobas | 8d | 2026-10-28 | 2026-11-10 | A5690 | 35.06d | 0d | Dummy [0.02 h] | 0.02 | B00043 | N | N | 1 | 4 | Car-Mad |
| A5710 |  | Piso Sala | 4d | 2026-11-10 | 2026-11-17 | A5700 | 35.06d | 0d | Dummy [0.02 h] | 0.02 | B00043 | N | N | 1 | 4 | Car-Mad |
| A5720 |  | Piso cocina y labores | 4d | 2026-11-17 | 2026-11-23 | A5710 | 268.06d | 0d | Dummy [0.02 h] | 0.02 | B00043 | N | N | 1 | 4 | Car-Mad |
| A5730 |  | Piso Balcon | 4d | 2026-11-23 | 2026-11-27 | A5720 | 268.06d | 0d | Dummy [0.02 h] | 0.02 | B00043 | N | N | 1 | 4 | Car-Mad |
| A5740 |  | Salpicadero Lavadero | 4d | 2026-11-27 | 2026-12-03 | A5730 | 268.06d | 28d | Dummy [0.02 h] | 0.02 | B00043 | N | N | 1 | 4 | Car-Mad |
|  | P04 | **Piso 04** |  | 2026-11-27 | 2027-02-05 |  |  |  |  |  |  |  |  |  |  |  |
| A5750 |  | Muros y piso de Baño | 12d | 2026-11-27 | 2026-12-16 | A5690 FS+20d | 170.06d | 0d | Dummy [0.02 h] | 0.02 | B00043 | N | N | 1 | 5 | Car-Mad |
| A5760 |  | Piso de Alcobas | 8d | 2026-12-16 | 2027-01-14 | A5750, A5700 | 205.06d | 0d | Dummy [0.02 h] | 0.02 | B00043 | N | N | 1 | 5 | Car-Mad |
| A5770 |  | Piso Sala | 4d | 2027-01-14 | 2027-01-20 | A5710, A5760 | 240.06d | 0d | Dummy [0.02 h] | 0.02 | B00043 | N | N | 1 | 5 | Car-Mad |
| A5780 |  | Piso cocina y labores | 4d | 2027-01-20 | 2027-01-26 | A5720, A5770 | 240.06d | 0d | Dummy [0.02 h] | 0.02 | B00043 | N | N | 1 | 5 | Car-Mad |
| A5790 |  | Piso Balcon | 4d | 2027-01-26 | 2027-02-01 | A5730, A5780 | 240.06d | 0d | Dummy [0.02 h] | 0.02 | B00043 | N | N | 1 | 5 | Car-Mad |
| A5800 |  | Salpicadero Lavadero | 4d | 2027-02-01 | 2027-02-05 | A5740, A5790 | 240.06d | 8d | Dummy [0.02 h] | 0.02 | B00043 | N | N | 1 | 5 | Car-Mad |
|  | P05 | **Piso 05** |  | 2026-12-16 | 2027-02-23 |  |  |  |  |  |  |  |  |  |  |  |
| A5810 |  | Muros y piso de Baño | 12d | 2026-12-16 | 2027-01-20 | A5750 | 170.06d | 0d | Dummy [0.02 h] | 0.02 | B00043 | N | N | 1 | 6 | Car-Mad |
| A5820 |  | Piso de Alcobas | 8d | 2027-01-20 | 2027-02-01 | A5760, A5810 | 201.06d | 0d | Dummy [0.02 h] | 0.02 | B00043 | N | N | 1 | 6 | Car-Mad |
| A5830 |  | Piso Sala | 4d | 2027-02-01 | 2027-02-05 | A5770, A5820 | 232.06d | 0d | Dummy [0.02 h] | 0.02 | B00043 | N | N | 1 | 6 | Car-Mad |
| A5840 |  | Piso cocina y labores | 4d | 2027-02-05 | 2027-02-11 | A5780, A5830 | 232.06d | 0d | Dummy [0.02 h] | 0.02 | B00043 | N | N | 1 | 6 | Car-Mad |
| A5850 |  | Piso Balcon | 4d | 2027-02-11 | 2027-02-17 | A5790, A5840 | 232.06d | 0d | Dummy [0.02 h] | 0.02 | B00043 | N | N | 1 | 6 | Car-Mad |
| A5860 |  | Salpicadero Lavadero | 4d | 2027-02-17 | 2027-02-23 | A5800, A5850 | 232.06d | 8d | Dummy [0.02 h] | 0.02 | B00043 | N | N | 1 | 6 | Car-Mad |

| ID | WBS | Activity | Duration | Start | Finish | Predecessors | Total float | Free float | Resources | Cost | Hito Inicio - Fin | Tipo 80-20 | CBB_Obras | CBB_Etapas | CBB_Piso | CBB_Procesos |
| --- | --- | --- | --- | --- | --- | --- | --- | --- | --- | --- | --- | --- | --- | --- | --- | --- |
|  | P06 | **Piso 06** |  | 2027-01-20 | 2027-03-11 |  |  |  |  |  |  |  |  |  |  |  |
| A5870 |  | Muros y piso de Baño | 12d | 2027-01-20 | 2027-02-05 | A5810 | 170.06d | 0d | Dummy [0.02 h] | 0.02 | N | N | B00043 | 1 | 7 | Car-Mad |
| A5880 |  | Piso de Alcobas | 8d | 2027-02-05 | 2027-02-17 | A5820, A5870 | 197.06d | 0d | Dummy [0.02 h] | 0.02 | N | N | B00043 | 1 | 7 | Car-Mad |
| A5890 |  | Piso Sala | 4d | 2027-02-17 | 2027-02-23 | A5830, A5880 | 224.06d | 0d | Dummy [0.02 h] | 0.02 | N | N | B00043 | 1 | 7 | Car-Mad |
| A5900 |  | Piso cocina y labores | 4d | 2027-02-23 | 2027-03-01 | A5840, A5890 | 224.06d | 0d | Dummy [0.02 h] | 0.02 | N | N | B00043 | 1 | 7 | Car-Mad |
| A5910 |  | Piso Balcon | 4d | 2027-03-01 | 2027-03-05 | A5850, A5900 | 224.06d | 0d | Dummy [0.02 h] | 0.02 | N | N | B00043 | 1 | 7 | Car-Mad |
| A5920 |  | Salpicadero Lavadero | 4d | 2027-03-05 | 2027-03-11 | A5860, A5910 | 224.06d | 8d | Dummy [0.02 h] | 0.02 | N | N | B00043 | 1 | 7 | Car-Mad |
|  | P07 | **Piso 07** |  | 2027-02-05 | 2027-04-05 |  |  |  |  |  |  |  |  |  |  |  |
| A5930 |  | Muros y piso de Baño | 12d | 2027-02-05 | 2027-02-23 | A5870 | 170.06d | 0d | Dummy [0.02 h] | 0.02 | N | N | B00043 | 1 | 8 | Car-Mad |
| A5940 |  | Piso de Alcobas | 8d | 2027-02-23 | 2027-03-05 | A5880, A5930 | 193.06d | 0d | Dummy [0.02 h] | 0.02 | N | N | B00043 | 1 | 8 | Car-Mad |
| A5950 |  | Piso Sala | 4d | 2027-03-05 | 2027-03-11 | A5890, A5940 | 216.06d | 0d | Dummy [0.02 h] | 0.02 | N | N | B00043 | 1 | 8 | Car-Mad |
| A5960 |  | Piso cocina y labores | 4d | 2027-03-11 | 2027-03-17 | A5900, A5950 | 216.06d | 0d | Dummy [0.02 h] | 0.02 | N | N | B00043 | 1 | 8 | Car-Mad |
| A5970 |  | Piso Balcon | 4d | 2027-03-17 | 2027-03-30 | A5910, A5960 | 216.06d | 0d | Dummy [0.02 h] | 0.02 | N | N | B00043 | 1 | 8 | Car-Mad |
| A5980 |  | Salpicadero Lavadero | 4d | 2027-03-30 | 2027-04-05 | A5920, A5970 | 216.06d | 8d | Dummy [0.02 h] | 0.02 | N | N | B00043 | 1 | 8 | Car-Mad |
|  | P08 | **Piso 08** |  | 2027-02-23 | 2027-04-21 |  |  |  |  |  |  |  |  |  |  |  |
| A5990 |  | Muros y piso de Baño | 12d | 2027-02-23 | 2027-03-11 | A5930 | 170.06d | 0d | Dummy [0.02 h] | 0.02 | N | N | B00043 | 1 | 9 | Car-Mad |
| A6000 |  | Piso de Alcobas | 8d | 2027-03-11 | 2027-03-30 | A5940, A5990 | 189.06d | 0d | Dummy [0.02 h] | 0.02 | N | N | B00043 | 1 | 9 | Car-Mad |
| A6010 |  | Piso Sala | 4d | 2027-03-30 | 2027-04-05 | A5950, A6000 | 208.06d | 0d | Dummy [0.02 h] | 0.02 | N | N | B00043 | 1 | 9 | Car-Mad |
| A6020 |  | Piso cocina y labores | 4d | 2027-04-05 | 2027-04-09 | A5960, A6010 | 208.06d | 0d | Dummy [0.02 h] | 0.02 | N | N | B00043 | 1 | 9 | Car-Mad |
| A6030 |  | Piso Balcon | 4d | 2027-04-09 | 2027-04-15 | A5970, A6020 | 208.06d | 0d | Dummy [0.02 h] | 0.02 | N | N | B00043 | 1 | 9 | Car-Mad |
| A6040 |  | Salpicadero Lavadero | 4d | 2027-04-15 | 2027-04-21 | A5980, A6030 | 208.06d | 2d | Dummy [0.02 h] | 0.02 | N | N | B00043 | 1 | 9 | Car-Mad |
|  | P09 | **Piso 09** |  | 2027-03-11 | 2027-04-28 |  |  |  |  |  |  |  |  |  |  |  |
| A6050 |  | Muros y piso de Baño | 10d | 2027-03-11 | 2027-04-01 | A5990 | 170.06d | 0d | Dummy [0.02 h] | 0.02 | N | N | B00043 | 1 | 10 | Car-Mad |
| A6060 |  | Piso de Alcobas | 7d | 2027-04-01 | 2027-04-12 | A6000, A6050 | 187.06d | 0d | Dummy [0.02 h] | 0.02 | N | N | B00043 | 1 | 10 | Car-Mad |
| A6070 |  | Piso Sala | 3d | 2027-04-12 | 2027-04-15 | A6010, A6060 | 206.06d | 0d | Dummy [0.02 h] | 0.02 | N | N | B00043 | 1 | 10 | Car-Mad |
| A6080 |  | Piso cocina y labores | 3d | 2027-04-15 | 2027-04-20 | A6020, A6070 | 206.06d | 0d | Dummy [0.02 h] | 0.02 | N | N | B00043 | 1 | 10 | Car-Mad |
| A6090 |  | Piso Balcon | 3d | 2027-04-20 | 2027-04-23 | A6030, A6080 | 206.06d | 0d | Dummy [0.02 h] | 0.02 | N | N | B00043 | 1 | 10 | Car-Mad |
| A6100 |  | Salpicadero Lavadero | 3d | 2027-04-23 | 2027-04-28 | A6040, A6090 | 206.06d | 7d | Dummy [0.02 h] | 0.02 | N | N | B00043 | 1 | 10 | Car-Mad |

| ID | WBS | Activity | Duration | Start | Finish | Predecessors | Total float | Free float | Resources | Cost | Hito Inicio - Fin | Tipo 80-20 | CBB_Etapas | CBB_Obras | CBB_Procesos | CBB_Piso |
| --- | --- | --- | --- | --- | --- | --- | --- | --- | --- | --- | --- | --- | --- | --- | --- | --- |
|  | P10 | **Piso 10** |  | 2027-04-01 | 2027-05-13 |  |  |  |  |  |  |  |  |  |  |  |
| A6110 |  | Muros y piso de Baño | 10d | 2027-04-01 | 2027-04-15 | A6050 | 170.06d | 0d | Dummy [0.02 h] | 0.02 | N | N | 1 | B00043 | Car-Mad | 11 |
| A6120 |  | Piso de Alcobas | 7d | 2027-04-15 | 2027-04-26 | A6060, A6110 | 184.06d | 0d | Dummy [0.02 h] | 0.02 | N | N | 1 | B00043 | Car-Mad | 11 |
| A6130 |  | Piso Sala | 3d | 2027-04-26 | 2027-04-29 | A6070, A6120 | 199.06d | 0d | Dummy [0.02 h] | 0.02 | N | N | 1 | B00043 | Car-Mad | 11 |
| A6140 |  | Piso cocina y labores | 3d | 2027-04-29 | 2027-05-04 | A6080, A6130 | 199.06d | 0d | Dummy [0.02 h] | 0.02 | N | N | 1 | B00043 | Car-Mad | 11 |
| A6150 |  | Piso Balcon | 3d | 2027-05-04 | 2027-05-07 | A6090, A6140 | 199.06d | 0d | Dummy [0.02 h] | 0.02 | N | N | 1 | B00043 | Car-Mad | 11 |
| A6160 |  | Salpicadero Lavadero | 3d | 2027-05-07 | 2027-05-13 | A6100, A6150 | 199.06d | 5d | Dummy [0.02 h] | 0.02 | N | N | 1 | B00043 | Car-Mad | 11 |
|  | P11 | **Piso 11** |  | 2027-04-15 | 2027-05-25 |  |  |  |  |  |  |  |  |  |  |  |
| A6170 |  | Muros y piso de Baño | 9d | 2027-04-15 | 2027-04-28 | A6110 | 170.06d | 0d | Dummy [0.02 h] | 0.02 | N | N | 1 | B00043 | Car-Mad | 12 |
| A6180 |  | Piso de Alcobas | 6d | 2027-04-28 | 2027-05-06 | A6120, A6170 | 182.06d | 0d | Dummy [0.02 h] | 0.02 | N | N | 1 | B00043 | Car-Mad | 12 |
| A6190 |  | Piso Sala | 3d | 2027-05-06 | 2027-05-12 | A6130, A6180 | 194.06d | 0d | Dummy [0.02 h] | 0.02 | N | N | 1 | B00043 | Car-Mad | 12 |
| A6200 |  | Piso cocina y labores | 3d | 2027-05-12 | 2027-05-17 | A6140, A6190 | 194.06d | 0d | Dummy [0.02 h] | 0.02 | N | N | 1 | B00043 | Car-Mad | 12 |
| A6210 |  | Piso Balcon | 3d | 2027-05-17 | 2027-05-20 | A6150, A6200 | 194.06d | 0d | Dummy [0.02 h] | 0.02 | N | N | 1 | B00043 | Car-Mad | 12 |
| A6220 |  | Salpicadero Lavadero | 3d | 2027-05-20 | 2027-05-25 | A6160, A6210 | 194.06d | 6d | Dummy [0.02 h] | 0.02 | N | N | 1 | B00043 | Car-Mad | 12 |
|  | P12 | **Piso 12** |  | 2027-04-28 | 2027-06-09 |  |  |  |  |  |  |  |  |  |  |  |
| A6230 |  | Muros y piso de Baño | 9d | 2027-04-28 | 2027-05-12 | A6170 | 170.06d | 0d | Dummy [0.02 h] | 0.02 | N | N | 1 | B00043 | Car-Mad | 13 |
| A6240 |  | Piso de Alcobas | 6d | 2027-05-12 | 2027-05-20 | A6180, A6230 | 179.06d | 0d | Dummy [0.02 h] | 0.02 | N | N | 1 | B00043 | Car-Mad | 13 |
| A6250 |  | Piso Sala | 3d | 2027-05-20 | 2027-05-25 | A6190, A6240 | 188.06d | 0d | Dummy [0.02 h] | 0.02 | N | N | 1 | B00043 | Car-Mad | 13 |
| A6260 |  | Piso cocina y labores | 3d | 2027-05-25 | 2027-05-28 | A6200, A6250 | 188.06d | 0d | Dummy [0.02 h] | 0.02 | N | N | 1 | B00043 | Car-Mad | 13 |
| A6270 |  | Piso Balcon | 3d | 2027-05-28 | 2027-06-03 | A6210, A6260 | 188.06d | 0d | Dummy [0.02 h] | 0.02 | N | N | 1 | B00043 | Car-Mad | 13 |
| A6280 |  | Salpicadero Lavadero | 3d | 2027-06-03 | 2027-06-09 | A6220, A6270 | 188.06d | 6d | Dummy [0.02 h] | 0.02 | N | N | 1 | B00043 | Car-Mad | 13 |
|  | P13 | **Piso 13** |  | 2027-05-12 | 2027-06-22 |  |  |  |  |  |  |  |  |  |  |  |
| A6290 |  | Muros y piso de Baño | 9d | 2027-05-12 | 2027-05-25 | A6230 | 170.06d | 0d | Dummy [0.02 h] | 0.02 | N | N | 1 | B00043 | Car-Mad | 14 |
| A6300 |  | Piso de Alcobas | 6d | 2027-05-25 | 2027-06-03 | A6240, A6290 | 176.06d | 0d | Dummy [0.02 h] | 0.02 | N | N | 1 | B00043 | Car-Mad | 14 |
| A6310 |  | Piso Sala | 3d | 2027-06-03 | 2027-06-09 | A6250, A6300 | 182.06d | 0d | Dummy [0.02 h] | 0.02 | N | N | 1 | B00043 | Car-Mad | 14 |
| A6320 |  | Piso cocina y labores | 3d | 2027-06-09 | 2027-06-14 | A6260, A6310 | 182.06d | 0d | Dummy [0.02 h] | 0.02 | N | N | 1 | B00043 | Car-Mad | 14 |
| A6330 |  | Piso Balcon | 3d | 2027-06-14 | 2027-06-17 | A6270, A6320 | 182.06d | 0d | Dummy [0.02 h] | 0.02 | N | N | 1 | B00043 | Car-Mad | 14 |
| A6340 |  | Salpicadero Lavadero | 3d | 2027-06-17 | 2027-06-22 | A6280, A6330 | 182.06d | 5d | Dummy [0.02 h] | 0.02 | N | N | 1 | B00043 | Car-Mad | 14 |

| ID | WBS | Activity | Duration | Start | Finish | Predecessors | Total float | Free float | Resources | Cost | Hito Inicio - Fin | Tipo 80-20 | CBB_Piso | CBB_Obras | CBB_Procesos | CBB_Etapas |
| --- | --- | --- | --- | --- | --- | --- | --- | --- | --- | --- | --- | --- | --- | --- | --- | --- |
|  | P14 | **Piso 14** |  | 2027-05-25 | 2027-07-02 |  |  |  |  |  |  |  |  |  |  |  |
| A6350 |  | Muros y piso de Baño | 8d | 2027-05-25 | 2027-06-08 | A6290 | 170.06d | 0d | Dummy [0.02 h] | 0.02 | N | N | 15 | B00043 | Car-Mad | 1 |
| A6360 |  | Piso de Alcobas | 6d | 2027-06-08 | 2027-06-16 | A6300, A6350 | 174.06d | 0d | Dummy [0.02 h] | 0.02 | N | N | 15 | B00043 | Car-Mad | 1 |
| A6370 |  | Piso Sala | 3d | 2027-06-16 | 2027-06-21 | A6310, A6360 | 177.06d | 0d | Dummy [0.02 h] | 0.02 | N | N | 15 | B00043 | Car-Mad | 1 |
| A6380 |  | Piso cocina y labores | 3d | 2027-06-21 | 2027-06-24 | A6320, A6370 | 177.06d | 0d | Dummy [0.02 h] | 0.02 | N | N | 15 | B00043 | Car-Mad | 1 |
| A6390 |  | Piso Balcon | 3d | 2027-06-24 | 2027-06-29 | A6330, A6380 | 177.06d | 0d | Dummy [0.02 h] | 0.02 | N | N | 15 | B00043 | Car-Mad | 1 |
| A6400 |  | Salpicadero Lavadero | 3d | 2027-06-29 | 2027-07-02 | A6340, A6390 | 177.06d | 5d | Dummy [0.02 h] | 0.02 | N | N | 15 | B00043 | Car-Mad | 1 |
|  | P15 | **Piso 15** |  | 2027-06-08 | 2027-07-15 |  |  |  |  |  |  |  |  |  |  |  |
| A6410 |  | Muros y piso de Baño | 8d | 2027-06-08 | 2027-06-18 | A6350 | 170.06d | 0d | Dummy [0.02 h] | 0.02 | N | N | 16 | B00043 | Car-Mad | 1 |
| A6420 |  | Piso de Alcobas | 6d | 2027-06-18 | 2027-06-28 | A6360, A6410 | 172.06d | 0d | Dummy [0.02 h] | 0.02 | N | N | 16 | B00043 | Car-Mad | 1 |
| A6430 |  | Piso Sala | 3d | 2027-06-28 | 2027-07-01 | A6370, A6420 | 172.06d | 0d | Dummy [0.02 h] | 0.02 | N | N | 16 | B00043 | Car-Mad | 1 |
| A6440 |  | Piso cocina y labores | 3d | 2027-07-01 | 2027-07-07 | A6380, A6430 | 172.06d | 0d | Dummy [0.02 h] | 0.02 | N | N | 16 | B00043 | Car-Mad | 1 |
| A6450 |  | Piso Balcon | 3d | 2027-07-07 | 2027-07-12 | A6390, A6440 | 172.06d | 0d | Dummy [0.02 h] | 0.02 | N | N | 16 | B00043 | Car-Mad | 1 |
| A6460 |  | Salpicadero Lavadero | 3d | 2027-07-12 | 2027-07-15 | A6400, A6450 | 172.06d | 2d | Dummy [0.02 h] | 0.02 | N | N | 16 | B00043 | Car-Mad | 1 |
|  | P16 | **Piso 16** |  | 2027-06-18 | 2027-08-02 |  |  |  |  |  |  |  |  |  |  |  |
| A15240 |  | Muros y piso de Baño | 8d | 2027-06-18 | 2027-06-30 | A6410 | 170.06d | 0d |  |  | N | N |  | B00043 |  |  |
| A15250 |  | Piso de Alcobas | 6d | 2027-06-30 | 2027-07-09 | A6420, A15240 | 170.06d | 0d |  |  | N | N |  | B00043 |  |  |
| A15260 |  | Piso Sala | 3d | 2027-07-09 | 2027-07-14 | A6430, A15250 | 170.06d | 0d |  |  | N | N |  | B00043 |  |  |
| A15270 |  | Piso cocina y labores | 3d | 2027-07-14 | 2027-07-19 | A6440, A15260 | 170.06d | 0d |  |  | N | N |  | B00043 |  |  |
| A15280 |  | Piso Balcon y Terraza | 6d | 2027-07-19 | 2027-07-28 | A6460, A15270 | 170.06d | 0d |  |  | N | N |  | B00043 |  |  |
| A15290 |  | Salpicadero Lavadero | 3d | 2027-07-28 | 2027-08-02 | A6450, A15280 | 170.06d | 0d |  |  | N | N |  | B00043 |  |  |
|  | Inst. Ventaneria | **Inst. Ventaneria** |  | 2026-11-17 | 2027-08-02 |  |  |  |  |  |  |  |  |  |  |  |
|  | P03 | **Piso 03** |  | 2026-11-17 | 2026-12-16 |  |  |  |  |  |  |  |  |  |  |  |
| A6560 |  | Inst. Puertas Ventanas | 8d | 2026-11-17 | 2026-11-27 | A19790 SS | 35.06d | 0d | Dummy [0.02 h] | 0.02 | N | N | 4 | B00043 | Est- | 1 |
| A6580 |  | Inst. Ventanas | 12d | 2026-11-27 | 2026-12-16 | A6560 | 35.06d | 0d | Dummy [0.02 h] | 0.02 | N | N | 4 | B00043 | Est- | 1 |

| ID | WBS | Activity | Duration | Start | Finish | Predecessors | Total float | Free float | Resources | Cost | Tipo 80-20 | Hito Inicio - Fin | CBB_Etapas | CBB_Obras | CBB_Piso | CBB_Procesos |
| --- | --- | --- | --- | --- | --- | --- | --- | --- | --- | --- | --- | --- | --- | --- | --- | --- |
|  | P04 | **Piso 04** |  | 2026-11-27 | 2027-01-20 |  |  |  |  |  |  |  |  |  |  |  |
| A6590 |  | Inst. Puertas Ventanas | 8d | 2026-11-27 | 2026-12-10 | A6560 | 39.06d | 0d | Dummy [0.02 h] | 0.02 | N | N | 1 | B00043 | 5 | Est- |
| A6610 |  | Inst. Ventanas | 12d | 2026-12-16 | 2027-01-20 | A6590, A6580 | 35.06d | 0d | Dummy [0.02 h] | 0.02 | N | N | 1 | B00043 | 5 | Est- |
|  | P05 | **Piso 05** |  | 2026-12-10 | 2027-02-05 |  |  |  |  |  |  |  |  |  |  |  |
| A6620 |  | Inst. Puertas Ventanas | 8d | 2026-12-10 | 2026-12-22 | A6590 | 43.06d | 0d | Dummy [0.02 h] | 0.02 | N | N | 1 | B00043 | 6 | Est- |
| A6640 |  | Inst. Ventanas | 12d | 2027-01-20 | 2027-02-05 | A6610, A6620 | 35.06d | 0d | Dummy [0.02 h] | 0.02 | N | N | 1 | B00043 | 6 | Est- |
|  | P06 | **Piso 06** |  | 2026-12-22 | 2027-02-23 |  |  |  |  |  |  |  |  |  |  |  |
| A6650 |  | Inst. Puertas Ventanas | 8d | 2026-12-22 | 2027-01-20 | A6620 | 47.06d | 0d | Dummy [0.02 h] | 0.02 | N | N | 1 | B00043 | 7 | Est- |
| A6670 |  | Inst. Ventanas | 12d | 2027-02-05 | 2027-02-23 | A6650, A6640 | 35.06d | 0d | Dummy [0.02 h] | 0.02 | N | N | 1 | B00043 | 7 | Est- |
|  | P07 | **Piso 07** |  | 2027-01-20 | 2027-03-11 |  |  |  |  |  |  |  |  |  |  |  |
| A6680 |  | Inst. Puertas Ventanas | 8d | 2027-01-20 | 2027-02-01 | A6650 | 51.06d | 0d | Dummy [0.02 h] | 0.02 | N | N | 1 | B00043 | 8 | Est- |
| A6700 |  | Inst. Ventanas | 12d | 2027-02-23 | 2027-03-11 | A6670, A6680 | 35.06d | 0d | Dummy [0.02 h] | 0.02 | N | N | 1 | B00043 | 8 | Est- |
|  | P08 | **Piso 08** |  | 2027-02-01 | 2027-04-05 |  |  |  |  |  |  |  |  |  |  |  |
| A6710 |  | Inst. Puertas Ventanas | 8d | 2027-02-01 | 2027-02-11 | A6680 | 55.06d | 0d | Dummy [0.02 h] | 0.02 | N | N | 1 | B00043 | 9 | Est- |
| A6730 |  | Inst. Ventanas | 12d | 2027-03-11 | 2027-04-05 | A6700, A6710 | 35.06d | 0d | Dummy [0.02 h] | 0.02 | N | N | 1 | B00043 | 9 | Est- |
|  | P09 | **Piso 09** |  | 2027-02-11 | 2027-04-19 |  |  |  |  |  |  |  |  |  |  |  |
| A6740 |  | Inst. Puertas Ventanas | 6d | 2027-02-11 | 2027-02-19 | A6710 | 61.06d | 0d | Dummy [0.02 h] | 0.02 | N | N | 1 | B00043 | 10 | Est- |
| A6760 |  | Inst. Ventanas | 10d | 2027-04-05 | 2027-04-19 | A6740, A6730 | 35.06d | 0d | Dummy [0.02 h] | 0.02 | N | N | 1 | B00043 | 10 | Est- |
|  | P10 | **Piso 10** |  | 2027-02-19 | 2027-05-03 |  |  |  |  |  |  |  |  |  |  |  |
| A6770 |  | Inst. Puertas Ventanas | 6d | 2027-02-19 | 2027-03-01 | A6740 | 65.06d | 0d | Dummy [0.02 h] | 0.02 | N | N | 1 | B00043 | 11 | Est- |
| A6790 |  | Inst. Ventanas | 10d | 2027-04-19 | 2027-05-03 | A6770, A6760 | 35.06d | 0d | Dummy [0.02 h] | 0.02 | N | N | 1 | B00043 | 11 | Est- |
|  | P11 | **Piso 11** |  | 2027-03-01 | 2027-05-18 |  |  |  |  |  |  |  |  |  |  |  |
| A6800 |  | Inst. Puertas Ventanas | 6d | 2027-03-01 | 2027-03-09 | A6770 | 69.06d | 0d | Dummy [0.02 h] | 0.02 | N | N | 1 | B00043 | 12 | Est- |
| A6820 |  | Inst. Ventanas | 10d | 2027-05-03 | 2027-05-18 | A6790, A6800 | 35.06d | 0d | Dummy [0.02 h] | 0.02 | N | N | 1 | B00043 | 12 | Est- |

| ID | WBS | Activity | Duration | Start | Finish | Predecessors | Total float | Free float | Resources | Cost | Tipo 80-20 | Hito Inicio - Fin | CBB_Obras | CBB_Piso | CBB_Etapas | CBB_Procesos |
| --- | --- | --- | --- | --- | --- | --- | --- | --- | --- | --- | --- | --- | --- | --- | --- | --- |
|  | P12 | **Piso 12** |  | 2027-03-09 | 2027-06-02 |  |  |  |  |  |  |  |  |  |  |  |
| A6830 |  | Inst. Puertas Ventanas | 6d | 2027-03-09 | 2027-03-17 | A6800 | 76.06d | 0d | Dummy [0.02 h] | 0.02 | N | N | B00043 | 13 | 1 | Est- |
| A6850 |  | Inst. Ventanas | 10d | 2027-05-18 | 2027-06-02 | A6830, A6820 | 38.06d | 0d | Dummy [0.02 h] | 0.02 | N | N | B00043 | 13 | 1 | Est- |
|  | P13 | **Piso 13** |  | 2027-03-17 | 2027-06-17 |  |  |  |  |  |  |  |  |  |  |  |
| A6860 |  | Inst. Puertas Ventanas | 6d | 2027-03-17 | 2027-04-01 | A6830 | 80.06d | 0d | Dummy [0.02 h] | 0.02 | N | N | B00043 | 14 | 1 | Est- |
| A6880 |  | Inst. Ventanas | 10d | 2027-06-02 | 2027-06-17 | A6860, A6850 | 38.06d | 0d | Dummy [0.02 h] | 0.02 | N | N | B00043 | 14 | 1 | Est- |
|  | P14 | **Piso 14** |  | 2027-04-01 | 2027-07-01 |  |  |  |  |  |  |  |  |  |  |  |
| A6890 |  | Inst. Puertas Ventanas | 6d | 2027-04-01 | 2027-04-09 | A6860 | 84.06d | 0d | Dummy [0.02 h] | 0.02 | N | N | B00043 | 15 | 1 | Est- |
| A6910 |  | Inst. Ventanas | 10d | 2027-06-17 | 2027-07-01 | A6880, A6890 | 38.06d | 0d | Dummy [0.02 h] | 0.02 | N | N | B00043 | 15 | 1 | Est- |
|  | P15 | **Piso 15** |  | 2027-04-09 | 2027-07-16 |  |  |  |  |  |  |  |  |  |  |  |
| A6920 |  | Inst. Puertas Ventanas | 6d | 2027-04-09 | 2027-04-19 | A6890 | 88.06d | 0d | Dummy [0.02 h] | 0.02 | N | N | B00043 | 16 | 1 | Est- |
| A6940 |  | Inst. Ventanas | 10d | 2027-07-01 | 2027-07-16 | A6910, A6920 | 38.06d | 0d | Dummy [0.02 h] | 0.02 | N | N | B00043 | 16 | 1 | Est- |
|  | P16 | **Piso 16** |  | 2027-04-19 | 2027-08-02 |  |  |  |  |  |  |  |  |  |  |  |
| A15060 |  | Inst. Puertas Ventanas | 6d | 2027-04-19 | 2027-04-27 | A6920 | 92.06d | 54d |  |  | N | N | B00043 |  |  |  |
| A15300 |  | Inst. Ventanas | 10d | 2027-07-16 | 2027-08-02 | A6940, A15060 | 38.06d | 0d |  |  | N | N | B00043 |  |  |  |
|  | Cableado | **Cableado** |  | 2026-12-09 | 2027-09-06 |  |  |  |  |  |  |  |  |  |  |  |
|  | P03 | **Piso 03** |  | 2026-12-09 | 2027-02-26 |  |  |  |  |  |  |  |  |  |  |  |
| A7070 |  | Inst. elec-comun | 44d | 2026-12-09 | 2027-02-26 | A1330 SS | 271.06d | 125d | Dummy [0.02 h] | 0.02 | N | N | B00043 | 4 | 1 | Mes-y-Gas |
|  | P04 | **Piso 04** |  | 2027-01-13 | 2027-03-16 |  |  |  |  |  |  |  |  |  |  |  |
| A7110 |  | Inst. elec-comun | 44d | 2027-01-13 | 2027-03-16 | A6610 FS-5d | 259.06d | 113d | Dummy [0.02 h] | 0.02 | N | N | B00043 | 5 | 1 | Mes-y-Gas |
|  | P05 | **Piso 05** |  | 2027-01-29 | 2027-04-08 |  |  |  |  |  |  |  |  |  |  |  |
| A7150 |  | Inst. elec-comun | 44d | 2027-01-29 | 2027-04-08 | A6640 FS-5d | 247.06d | 101d | Dummy [0.02 h] | 0.02 | N | N | B00043 | 6 | 1 | Mes-y-Gas |
|  | P06 | **Piso 06** |  | 2027-02-16 | 2027-04-26 |  |  |  |  |  |  |  |  |  |  |  |
| A7190 |  | Inst. elec-comun | 44d | 2027-02-16 | 2027-04-26 | A6670 FS-5d | 235.06d | 89d | Dummy [0.02 h] | 0.02 | N | N | B00043 | 7 | 1 | Mes-y-Gas |

| ID | WBS | Activity | Duration | Start | Finish | Predecessors | Total float | Free float | Resources | Cost | Tipo 80-20 | Hito Inicio - Fin | CBB_Obras | CBB_Piso | CBB_Etapas | CBB_Procesos |
| --- | --- | --- | --- | --- | --- | --- | --- | --- | --- | --- | --- | --- | --- | --- | --- | --- |
|  | P07 | **Piso 07** |  | 2027-03-04 | 2027-05-13 |  |  |  |  |  |  |  |  |  |  |  |
| A7230 |  | Inst. elec-comun | 44d | 2027-03-04 | 2027-05-13 | A6700 FS-5d | 223.06d | 77d | Dummy [0.02 h] | 0.02 | N | N | B00043 | 8 | 1 | Mes-y-Gas |
|  | P08 | **Piso 08** |  | 2027-03-29 | 2027-06-01 |  |  |  |  |  |  |  |  |  |  |  |
| A7270 |  | Inst. elec-comun | 44d | 2027-03-29 | 2027-06-01 | A6730 FS-5d | 211.06d | 65d | Dummy [0.02 h] | 0.02 | N | N | B00043 | 9 | 1 | Mes-y-Gas |
|  | P09 | **Piso 09** |  | 2027-04-12 | 2027-06-10 |  |  |  |  |  |  |  |  |  |  |  |
| A7310 |  | Inst. elec-comun | 40d | 2027-04-12 | 2027-06-10 | A6760 FS-5d | 205.06d | 59d | Dummy [0.02 h] | 0.02 | N | N | B00043 | 10 | 1 | Mes-y-Gas |
|  | P10 | **Piso 10** |  | 2027-04-26 | 2027-06-24 |  |  |  |  |  |  |  |  |  |  |  |
| A7350 |  | Inst. elec-comun | 40d | 2027-04-26 | 2027-06-24 | A6790 FS-5d | 88.36d | 15.5d | Dummy [0.02 h] | 0.02 | N | N | B00043 | 11 | 1 | Mes-y-Gas |
|  | P11 | **Piso 11** |  | 2027-05-11 | 2027-07-02 |  |  |  |  |  |  |  |  |  |  |  |
| A7390 |  | Inst. elec-comun | 36d | 2027-05-11 | 2027-07-02 | A6820 FS-5d | 189.06d | 43d | Dummy [0.02 h] | 0.02 | N | N | B00043 | 12 | 1 | Mes-y-Gas |
|  | P12 | **Piso 12** |  | 2027-05-25 | 2027-07-19 |  |  |  |  |  |  |  |  |  |  |  |
| A7430 |  | Inst. elec-comun | 36d | 2027-05-25 | 2027-07-19 | A6850 FS-5d | 179.06d | 33d | Dummy [0.02 h] | 0.02 | N | N | B00043 | 13 | 1 | Mes-y-Gas |
|  | P13 | **Piso 13** |  | 2027-06-10 | 2027-07-29 |  |  |  |  |  |  |  |  |  |  |  |
| A7470 |  | Inst. elec-comun | 33d | 2027-06-10 | 2027-07-29 | A6880 FS-5d | 172.06d | 26d | Dummy [0.02 h] | 0.02 | N | N | B00043 | 14 | 1 | Mes-y-Gas |
|  | P14 | **Piso 14** |  | 2027-06-24 | 2027-08-12 |  |  |  |  |  |  |  |  |  |  |  |
| A7510 |  | Inst. elec-comun | 33d | 2027-06-24 | 2027-08-12 | A6910 FS-5d | 162.06d | 16d | Dummy [0.02 h] | 0.02 | N | N | B00043 | 15 | 1 | Mes-y-Gas |
|  | P15 | **Piso 15** |  | 2027-07-09 | 2027-08-23 |  |  |  |  |  |  |  |  |  |  |  |
| A7550 |  | Inst. elec-comun | 29d | 2027-07-09 | 2027-08-23 | A6940 FS-5d | 156.06d | 10d | Dummy [0.02 h] | 0.02 | N | N | B00043 | 16 | 1 | Mes-y-Gas |
|  | P16 | **Piso 16** |  | 2027-07-26 | 2027-09-06 |  |  |  |  |  |  |  |  |  |  |  |
| A15310 |  | Inst. elec-comun | 29d | 2027-07-26 | 2027-09-06 | A15300 FS-5d | 146.06d | 0d | Dummy [0.02 h] | 0.02 | N | N | B00043 |  |  |  |
|  | Carpinteria Madera | **Carpinteria Madera** |  | 2027-01-25 | 2027-10-25 |  |  |  |  |  |  |  |  |  |  |  |
|  | P03 | **Piso 03** |  | 2027-01-25 | 2027-04-08 |  |  |  |  |  |  |  |  |  |  |  |
| A19850 |  | Muebles de cocina | 4d | 2027-01-25 | 2027-01-29 | A19970 SS+20d | 96.36d | 0d | Dummy [0.02 h] | 0.02 |  |  | B00043 |  |  |  |
| A19860 |  | Mueble lavadero | 4d | 2027-01-29 | 2027-02-04 | A19850 | 96.36d | 0d | Dummy [0.02 h] | 0.02 |  |  | B00043 |  |  |  |
| A19870 |  | Muebles de baño | 16d | 2027-02-04 | 2027-02-26 | A19860 | 96.36d | 0d | Dummy [0.02 h] | 0.02 |  |  | B00043 |  |  |  |
| A19880 |  | Closets | 4d | 2027-02-26 | 2027-03-04 | A19870 | 96.36d | 0d | Dummy [0.02 h] | 0.02 |  |  | B00043 |  |  |  |
| A19890 |  | Muebles de lino | 8d | 2027-03-04 | 2027-03-16 | A19880 | 96.36d | 0d | Dummy [0.02 h] | 0.02 |  |  | B00043 |  |  |  |
| A19900 |  | Puertas | 12d | 2027-03-16 | 2027-04-08 | A19890 | 96.36d | 0d | Dummy [0.02 h] | 0.02 |  |  | B00043 |  |  |  |

| ID | WBS | Activity | Duration | Start | Finish | Predecessors | Total float | Free float | Resources | Cost | CBB_Obras |
| --- | --- | --- | --- | --- | --- | --- | --- | --- | --- | --- | --- |
|  | P04 | **Piso 04** |  | 2027-03-03 | 2027-05-18 |  |  |  |  |  |  |
| A19910 |  | Muebles de cocina | 4d | 2027-03-03 | 2027-03-09 | A6610 FS+30d | 129.06d | 0d | Dummy [0.02 h] | 0.02 | B00043 |
| A19920 |  | Mueble lavadero | 4d | 2027-03-09 | 2027-03-15 | A19910 | 129.06d | 0d | Dummy [0.02 h] | 0.02 | B00043 |
| A19930 |  | Muebles de baño | 16d | 2027-03-15 | 2027-04-13 | A19920 | 129.06d | 0d | Dummy [0.02 h] | 0.02 | B00043 |
| A19940 |  | Closets | 4d | 2027-04-13 | 2027-04-19 | A19930 | 129.06d | 0d | Dummy [0.02 h] | 0.02 | B00043 |
| A19950 |  | Muebles de lino | 8d | 2027-04-19 | 2027-04-29 | A19940 | 129.06d | 0d | Dummy [0.02 h] | 0.02 | B00043 |
| A19960 |  | Puertas | 12d | 2027-04-29 | 2027-05-18 | A19950 | 129.06d | 0d | Dummy [0.02 h] | 0.02 | B00043 |
|  | P05 | **Piso 05** |  | 2027-03-19 | 2027-06-04 |  |  |  |  |  |  |
| A19990 |  | Muebles de cocina | 4d | 2027-03-19 | 2027-04-01 | A6640 FS+30d | 112.06d | 0d | Dummy [0.02 h] | 0.02 | B00043 |
| A20000 |  | Mueble lavadero | 4d | 2027-04-01 | 2027-04-07 | A19990 | 112.06d | 0d | Dummy [0.02 h] | 0.02 | B00043 |
| A20010 |  | Muebles de baño | 16d | 2027-04-07 | 2027-04-29 | A20000 | 112.06d | 0d | Dummy [0.02 h] | 0.02 | B00043 |
| A20020 |  | Closets | 4d | 2027-04-29 | 2027-05-05 | A20010 | 112.06d | 0d | Dummy [0.02 h] | 0.02 | B00043 |
| A20030 |  | Muebles de lino | 8d | 2027-05-05 | 2027-05-18 | A20020 | 112.06d | 0d | Dummy [0.02 h] | 0.02 | B00043 |
| A20040 |  | Puertas | 12d | 2027-05-18 | 2027-06-04 | A20030 | 112.06d | 0d | Dummy [0.02 h] | 0.02 | B00043 |
|  | P06 | **Piso 06** |  | 2027-04-13 | 2027-06-23 |  |  |  |  |  |  |
| A20050 |  | Muebles de cocina | 4d | 2027-04-13 | 2027-04-19 | A6670 FS+30d | 97.06d | 0d | Dummy [0.02 h] | 0.02 | B00043 |
| A20060 |  | Mueble lavadero | 4d | 2027-04-19 | 2027-04-23 | A20050 | 97.06d | 0d | Dummy [0.02 h] | 0.02 | B00043 |
| A20070 |  | Muebles de baño | 16d | 2027-04-23 | 2027-05-18 | A20060 | 97.06d | 0d | Dummy [0.02 h] | 0.02 | B00043 |
| A20080 |  | Closets | 4d | 2027-05-18 | 2027-05-24 | A20070 | 97.06d | 0d | Dummy [0.02 h] | 0.02 | B00043 |
| A20090 |  | Muebles de lino | 8d | 2027-05-24 | 2027-06-04 | A20080 | 97.06d | 0d | Dummy [0.02 h] | 0.02 | B00043 |
| A20100 |  | Puertas | 12d | 2027-06-04 | 2027-06-23 | A20090 | 97.06d | 0d | Dummy [0.02 h] | 0.02 | B00043 |
|  | P07 | **Piso 07** |  | 2027-04-29 | 2027-07-12 |  |  |  |  |  |  |
| A20110 |  | Muebles de cocina | 4d | 2027-04-29 | 2027-05-05 | A6700 FS+30d | 91.06d | 0d | Dummy [0.02 h] | 0.02 | B00043 |
| A20120 |  | Mueble lavadero | 4d | 2027-05-05 | 2027-05-12 | A20110 | 91.06d | 0d | Dummy [0.02 h] | 0.02 | B00043 |
| A20130 |  | Muebles de baño | 16d | 2027-05-12 | 2027-06-04 | A20120 | 91.06d | 0d | Dummy [0.02 h] | 0.02 | B00043 |
| A20140 |  | Closets | 4d | 2027-06-04 | 2027-06-11 | A20130 | 91.06d | 0d | Dummy [0.02 h] | 0.02 | B00043 |
| A20150 |  | Muebles de lino | 8d | 2027-06-11 | 2027-06-23 | A20140 | 91.06d | 0d | Dummy [0.02 h] | 0.02 | B00043 |
| A20160 |  | Puertas | 12d | 2027-06-23 | 2027-07-12 | A20150 | 91.06d | 0d | Dummy [0.02 h] | 0.02 | B00043 |

| ID | WBS | Activity | Duration | Start | Finish | Predecessors | Total float | Free float | Resources | Cost | CBB_Obras |
| --- | --- | --- | --- | --- | --- | --- | --- | --- | --- | --- | --- |
|  | P08 | **Piso 08** |  | 2027-05-18 | 2027-07-29 |  |  |  |  |  |  |
| A20170 |  | Muebles de cocina | 4d | 2027-05-18 | 2027-05-24 | A6730 FS+30d | 71.06d | 0d | Dummy [0.02 h] | 0.02 | B00043 |
| A20180 |  | Mueble lavadero | 4d | 2027-05-24 | 2027-05-28 | A20170 | 71.06d | 0d | Dummy [0.02 h] | 0.02 | B00043 |
| A20190 |  | Muebles de baño | 16d | 2027-05-28 | 2027-06-23 | A20180 | 71.06d | 0d | Dummy [0.02 h] | 0.02 | B00043 |
| A20200 |  | Closets | 4d | 2027-06-23 | 2027-06-29 | A20190 | 71.06d | 0d | Dummy [0.02 h] | 0.02 | B00043 |
| A20210 |  | Muebles de lino | 8d | 2027-06-29 | 2027-07-12 | A20200 | 71.06d | 0d | Dummy [0.02 h] | 0.02 | B00043 |
| A20220 |  | Puertas | 12d | 2027-07-12 | 2027-07-29 | A20210 | 71.06d | 0d | Dummy [0.02 h] | 0.02 | B00043 |
|  | P09 | **Piso 09** |  | 2027-06-02 | 2027-08-02 |  |  |  |  |  |  |
| A20230 |  | Muebles de cocina | 3d | 2027-06-02 | 2027-06-08 | A6760 FS+30d | 68.06d | 0d | Dummy [0.02 h] | 0.02 | B00043 |
| A20240 |  | Mueble lavadero | 3d | 2027-06-08 | 2027-06-11 | A20230 | 68.06d | 0d | Dummy [0.02 h] | 0.02 | B00043 |
| A20250 |  | Muebles de baño | 14d | 2027-06-11 | 2027-07-01 | A20240 | 68.06d | 0d | Dummy [0.02 h] | 0.02 | B00043 |
| A20260 |  | Closets | 3d | 2027-07-01 | 2027-07-07 | A20250 | 68.06d | 0d | Dummy [0.02 h] | 0.02 | B00043 |
| A20270 |  | Muebles de lino | 7d | 2027-07-07 | 2027-07-16 | A20260 | 68.06d | 0d | Dummy [0.02 h] | 0.02 | B00043 |
| A20280 |  | Puertas | 10d | 2027-07-16 | 2027-08-02 | A20270 | 68.06d | 0d | Dummy [0.02 h] | 0.02 | B00043 |
|  | P10 | **Piso 10** |  | 2027-06-17 | 2027-08-17 |  |  |  |  |  |  |
| A20290 |  | Muebles de cocina | 3d | 2027-06-17 | 2027-06-22 | A6790 FS+30d | 63.06d | 0d | Dummy [0.02 h] | 0.02 | B00043 |
| A20300 |  | Mueble lavadero | 3d | 2027-06-22 | 2027-06-25 | A20290 | 63.06d | 0d | Dummy [0.02 h] | 0.02 | B00043 |
| A20310 |  | Muebles de baño | 14d | 2027-06-25 | 2027-07-16 | A20300 | 63.06d | 0d | Dummy [0.02 h] | 0.02 | B00043 |
| A20320 |  | Closets | 3d | 2027-07-16 | 2027-07-22 | A20310 | 63.06d | 0d | Dummy [0.02 h] | 0.02 | B00043 |
| A20330 |  | Muebles de lino | 7d | 2027-07-22 | 2027-08-02 | A20320 | 63.06d | 0d | Dummy [0.02 h] | 0.02 | B00043 |
| A20340 |  | Puertas | 10d | 2027-08-02 | 2027-08-17 | A20330 | 63.06d | 0d | Dummy [0.02 h] | 0.02 | B00043 |
|  | P11 | **Piso 11** |  | 2027-07-01 | 2027-08-26 |  |  |  |  |  |  |
| A20350 |  | Muebles de cocina | 3d | 2027-07-01 | 2027-07-07 | A6820 FS+30d | 35.06d | 0d | Dummy [0.02 h] | 0.02 | B00043 |
| A20360 |  | Mueble lavadero | 3d | 2027-07-07 | 2027-07-12 | A20350 | 35.06d | 0d | Dummy [0.02 h] | 0.02 | B00043 |
| A20370 |  | Muebles de baño | 13d | 2027-07-12 | 2027-07-30 | A20360 | 35.06d | 0d | Dummy [0.02 h] | 0.02 | B00043 |
| A20380 |  | Closets | 3d | 2027-07-30 | 2027-08-04 | A20370 | 35.06d | 0d | Dummy [0.02 h] | 0.02 | B00043 |
| A20390 |  | Muebles de lino | 6d | 2027-08-04 | 2027-08-12 | A20380 | 35.06d | 0d | Dummy [0.02 h] | 0.02 | B00043 |
| A20400 |  | Puertas | 9d | 2027-08-12 | 2027-08-26 | A20390 | 35.06d | 0d | Dummy [0.02 h] | 0.02 | B00043 |

| ID | WBS | Activity | Duration | Start | Finish | Predecessors | Total float | Free float | Resources | Cost | CBB_Obras |
| --- | --- | --- | --- | --- | --- | --- | --- | --- | --- | --- | --- |
|  | P12 | **Piso 12** |  | 2027-07-16 | 2027-09-09 |  |  |  |  |  |  |
| A20410 |  | Muebles de cocina | 3d | 2027-07-16 | 2027-07-22 | A6850 FS+30d | 70.06d | 0d | Dummy [0.02 h] | 0.02 | B00043 |
| A20420 |  | Mueble lavadero | 3d | 2027-07-22 | 2027-07-27 | A20410 | 70.06d | 0d | Dummy [0.02 h] | 0.02 | B00043 |
| A20430 |  | Muebles de baño | 13d | 2027-07-27 | 2027-08-13 | A20420 | 70.06d | 0d | Dummy [0.02 h] | 0.02 | B00043 |
| A20440 |  | Closets | 3d | 2027-08-13 | 2027-08-19 | A20430 | 70.06d | 0d | Dummy [0.02 h] | 0.02 | B00043 |
| A20450 |  | Muebles de lino | 6d | 2027-08-19 | 2027-08-27 | A20440 | 70.06d | 0d | Dummy [0.02 h] | 0.02 | B00043 |
| A20460 |  | Puertas | 9d | 2027-08-27 | 2027-09-09 | A20450 | 70.06d | 0d | Dummy [0.02 h] | 0.02 | B00043 |
|  | P13 | **Piso 13** |  | 2027-08-02 | 2027-09-21 |  |  |  |  |  |  |
| A20470 |  | Muebles de cocina | 3d | 2027-08-02 | 2027-08-05 | A6880 FS+30d | 59.06d | 0d | Dummy [0.02 h] | 0.02 | B00043 |
| A20480 |  | Mueble lavadero | 3d | 2027-08-05 | 2027-08-10 | A20470 | 59.06d | 0d | Dummy [0.02 h] | 0.02 | B00043 |
| A20490 |  | Muebles de baño | 12d | 2027-08-10 | 2027-08-27 | A20480 | 59.06d | 0d | Dummy [0.02 h] | 0.02 | B00043 |
| A20500 |  | Closets | 3d | 2027-08-27 | 2027-09-01 | A20490 | 59.06d | 0d | Dummy [0.02 h] | 0.02 | B00043 |
| A20510 |  | Muebles de lino | 6d | 2027-09-01 | 2027-09-09 | A20500 | 59.06d | 0d | Dummy [0.02 h] | 0.02 | B00043 |
| A20520 |  | Puertas | 8d | 2027-09-09 | 2027-09-21 | A20510 | 59.06d | 0d | Dummy [0.02 h] | 0.02 | B00043 |
|  | P14 | **Piso 14** |  | 2027-08-17 | 2027-10-05 |  |  |  |  |  |  |
| A20530 |  | Muebles de cocina | 3d | 2027-08-17 | 2027-08-20 | A6910 FS+30d | 54.06d | 0d | Dummy [0.02 h] | 0.02 | B00043 |
| A20540 |  | Mueble lavadero | 3d | 2027-08-20 | 2027-08-25 | A20530 | 54.06d | 0d | Dummy [0.02 h] | 0.02 | B00043 |
| A20550 |  | Muebles de baño | 12d | 2027-08-25 | 2027-09-10 | A20540 | 54.06d | 0d | Dummy [0.02 h] | 0.02 | B00043 |
| A20560 |  | Closets | 3d | 2027-09-10 | 2027-09-15 | A20550 | 54.06d | 0d | Dummy [0.02 h] | 0.02 | B00043 |
| A20570 |  | Muebles de lino | 6d | 2027-09-15 | 2027-09-23 | A20560 | 54.06d | 0d | Dummy [0.02 h] | 0.02 | B00043 |
| A20580 |  | Puertas | 8d | 2027-09-23 | 2027-10-05 | A20570 | 54.06d | 0d | Dummy [0.02 h] | 0.02 | B00043 |
|  | P15 | **Piso 15** |  | 2027-08-31 | 2027-10-08 |  |  |  |  |  |  |
| A20590 |  | Muebles de cocina | 2d | 2027-08-31 | 2027-09-02 | A6940 FS+30d | 43.06d | 0d | Dummy [0.02 h] | 0.02 | B00043 |
| A20600 |  | Mueble lavadero | 2d | 2027-09-02 | 2027-09-06 | A20590 | 43.06d | 0d | Dummy [0.02 h] | 0.02 | B00043 |
| A20610 |  | Muebles de baño | 10d | 2027-09-06 | 2027-09-20 | A20600 | 43.06d | 0d | Dummy [0.02 h] | 0.02 | B00043 |
| A20620 |  | Closets | 2d | 2027-09-20 | 2027-09-22 | A20610 | 43.06d | 0d | Dummy [0.02 h] | 0.02 | B00043 |
| A20630 |  | Muebles de lino | 5d | 2027-09-22 | 2027-09-29 | A20620 | 43.06d | 0d | Dummy [0.02 h] | 0.02 | B00043 |
| A20640 |  | Puertas | 7d | 2027-09-29 | 2027-10-08 | A20630 | 43.06d | 0d | Dummy [0.02 h] | 0.02 | B00043 |

| ID | WBS | Activity | Duration | Start | Finish | Predecessors | Total float | Free float | Resources | Cost | CBB_Obras |
| --- | --- | --- | --- | --- | --- | --- | --- | --- | --- | --- | --- |
|  | P16 | **Piso 16** |  | 2027-09-14 | 2027-10-25 |  |  |  |  |  |  |
| A20650 |  | Muebles de cocina | 2d | 2027-09-14 | 2027-09-16 | A15300 FS+30d | 38.06d | 0d | Dummy [0.02 h] | 0.02 | B00043 |
| A20660 |  | Mueble lavadero | 2d | 2027-09-16 | 2027-09-20 | A20650 | 38.06d | 0d | Dummy [0.02 h] | 0.02 | B00043 |
| A20670 |  | Muebles de baño | 10d | 2027-09-20 | 2027-10-04 | A20660 | 38.06d | 0d | Dummy [0.02 h] | 0.02 | B00043 |
| A20680 |  | Closets | 2d | 2027-10-04 | 2027-10-06 | A20670 | 38.06d | 0d | Dummy [0.02 h] | 0.02 | B00043 |
| A20690 |  | Muebles de lino | 5d | 2027-10-06 | 2027-10-13 | A20680 | 38.06d | 0d | Dummy [0.02 h] | 0.02 | B00043 |
| A20700 |  | Puertas | 7d | 2027-10-13 | 2027-10-25 | A20690 | 38.06d | 0d | Dummy [0.02 h] | 0.02 | B00043 |
|  | Mesones | **Mesones** |  | 2027-03-31 | 2027-11-02 |  |  |  |  |  |  |
|  | P03 | **Piso 03** |  | 2027-03-31 | 2027-04-26 |  |  |  |  |  |  |
| A20710 |  | Mesones de baño | 4d | 2027-03-31 | 2027-04-06 | A20730 | 96.36d | 0d | Dummy [0.02 h] | 0.02 | B00043 |
| A20720 |  | Mesones de cocina | 16d | 2027-04-02 | 2027-04-26 | A20710 FS-2d | 144.36d | 15.5d | Dummy [0.02 h] | 0.02 | B00043 |
|  | P04 | **Piso 04** |  | 2027-05-11 | 2027-06-08 |  |  |  |  |  |  |
| A20750 |  | Mesones de baño | 4d | 2027-05-11 | 2027-05-17 | A19960 FS-5d | 129.06d | 0d | Dummy [0.02 h] | 0.02 | B00043 |
| A20760 |  | Mesones de cocina | 16d | 2027-05-13 | 2027-06-08 | A20750 FS-2d | 207.06d | 100d | Dummy [0.02 h] | 0.02 | B00043 |
|  | P05 | **Piso 05** |  | 2027-05-27 | 2027-06-24 |  |  |  |  |  |  |
| A20770 |  | Mesones de baño | 4d | 2027-05-27 | 2027-06-03 | A20040 FS-5d | 112.06d | 0d | Dummy [0.02 h] | 0.02 | B00043 |
| A20780 |  | Mesones de cocina | 16d | 2027-06-01 | 2027-06-24 | A20770 FS-2d | 195.06d | 88d | Dummy [0.02 h] | 0.02 | B00043 |
|  | P06 | **Piso 06** |  | 2027-06-16 | 2027-07-13 |  |  |  |  |  |  |
| A20790 |  | Mesones de baño | 4d | 2027-06-16 | 2027-06-22 | A20100 FS-5d | 97.06d | 0d | Dummy [0.02 h] | 0.02 | B00043 |
| A20800 |  | Mesones de cocina | 16d | 2027-06-18 | 2027-07-13 | A20790 FS-2d | 183.06d | 76d | Dummy [0.02 h] | 0.02 | B00043 |
|  | P07 | **Piso 07** |  | 2027-07-02 | 2027-07-30 |  |  |  |  |  |  |
| A20810 |  | Mesones de baño | 4d | 2027-07-02 | 2027-07-09 | A20160 FS-5d | 91.06d | 0d | Dummy [0.02 h] | 0.02 | B00043 |
| A20820 |  | Mesones de cocina | 16d | 2027-07-07 | 2027-07-30 | A20810 FS-2d | 171.06d | 64d | Dummy [0.02 h] | 0.02 | B00043 |
|  | P08 | **Piso 08** |  | 2027-07-22 | 2027-08-18 |  |  |  |  |  |  |
| A20840 |  | Mesones de baño | 4d | 2027-07-22 | 2027-07-28 | A20220 FS-5d | 71.06d | 0d | Dummy [0.02 h] | 0.02 | B00043 |
| A20850 |  | Mesones de cocina | 16d | 2027-07-26 | 2027-08-18 | A20840 FS-2d | 159.06d | 52d | Dummy [0.02 h] | 0.02 | B00043 |

| ID | WBS | Activity | Duration | Start | Finish | Predecessors | Total float | Free float | Resources | Cost | CBB_Obras |
| --- | --- | --- | --- | --- | --- | --- | --- | --- | --- | --- | --- |
|  | P09 | **Piso 09** |  | 2027-07-26 | 2027-08-17 |  |  |  |  |  |  |
| A20860 |  | Mesones de baño | 3d | 2027-07-26 | 2027-07-29 | A20280 FS-5d | 68.06d | 0d | Dummy [0.02 h] | 0.02 | B00043 |
| A20870 |  | Mesones de cocina | 14d | 2027-07-27 | 2027-08-17 | A20860 FS-2d | 160.06d | 53d | Dummy [0.02 h] | 0.02 | B00043 |
|  | P10 | **Piso 10** |  | 2027-08-09 | 2027-08-31 |  |  |  |  |  |  |
| A20880 |  | Mesones de baño | 3d | 2027-08-09 | 2027-08-12 | A20340 FS-5d | 63.06d | 0d | Dummy [0.02 h] | 0.02 | B00043 |
| A20890 |  | Mesones de cocina | 14d | 2027-08-10 | 2027-08-31 | A20880 FS-2d | 150.06d | 43d | Dummy [0.02 h] | 0.02 | B00043 |
|  | P11 | **Piso 11** |  | 2027-08-19 | 2027-09-08 |  |  |  |  |  |  |
| A20900 |  | Mesones de baño | 3d | 2027-08-19 | 2027-08-24 | A20400 FS-5d | 35.06d | 0d | Dummy [0.02 h] | 0.02 | B00043 |
| A20910 |  | Mesones de cocina | 13d | 2027-08-20 | 2027-09-08 | A20900 FS-2d | 144.06d | 37d | Dummy [0.02 h] | 0.02 | B00043 |
|  | P12 | **Piso 12** |  | 2027-09-02 | 2027-09-22 |  |  |  |  |  |  |
| A20920 |  | Mesones de baño | 3d | 2027-09-02 | 2027-09-07 | A20460 FS-5d | 70.06d | 0d | Dummy [0.02 h] | 0.02 | B00043 |
| A20930 |  | Mesones de cocina | 13d | 2027-09-03 | 2027-09-22 | A20920 FS-2d | 134.06d | 27d | Dummy [0.02 h] | 0.02 | B00043 |
|  | P13 | **Piso 13** |  | 2027-09-14 | 2027-10-01 |  |  |  |  |  |  |
| A20940 |  | Mesones de baño | 3d | 2027-09-14 | 2027-09-17 | A20520 FS-5d | 59.06d | 0d | Dummy [0.02 h] | 0.02 | B00043 |
| A20950 |  | Mesones de cocina | 12d | 2027-09-15 | 2027-10-01 | A20940 FS-2d | 127.06d | 20d | Dummy [0.02 h] | 0.02 | B00043 |
|  | P14 | **Piso 14** |  | 2027-09-28 | 2027-10-15 |  |  |  |  |  |  |
| A20960 |  | Mesones de baño | 3d | 2027-09-28 | 2027-10-01 | A20580 FS-5d | 54.06d | 0d | Dummy [0.02 h] | 0.02 | B00043 |
| A20970 |  | Mesones de cocina | 12d | 2027-09-29 | 2027-10-15 | A20960 FS-2d | 117.06d | 10d | Dummy [0.02 h] | 0.02 | B00043 |
|  | P15 | **Piso 15** |  | 2027-10-01 | 2027-10-15 |  |  |  |  |  |  |
| A20980 |  | Mesones de baño | 2d | 2027-10-01 | 2027-10-05 | A20640 FS-5d | 43.06d | 0d | Dummy [0.02 h] | 0.02 | B00043 |
| A20990 |  | Mesones de cocina | 10d | 2027-10-01 | 2027-10-15 | A20980 FS-2d | 117.06d | 10d | Dummy [0.02 h] | 0.02 | B00043 |
|  | P16 | **Piso 16** |  | 2027-10-15 | 2027-11-02 |  |  |  |  |  |  |
| A21000 |  | Mesones de baño | 2d | 2027-10-15 | 2027-10-20 | A20700 FS-5d | 38.06d | 0d | Dummy [0.02 h] | 0.02 | B00043 |
| A21010 |  | Mesones de cocina | 10d | 2027-10-15 | 2027-11-02 | A21000 FS-2d | 107.06d | 0d | Dummy [0.02 h] | 0.02 | B00043 |

| ID | WBS | Activity | Duration | Start | Finish | Predecessors | Total float | Free float | CBB_Obras |
| --- | --- | --- | --- | --- | --- | --- | --- | --- | --- |
|  | Inst. Baranda Divisiones Banos y Espejos | **Inst. Baranda Divisiones Banos y Espejos** |  | 2027-04-20 | 2027-12-01 |  |  |  |  |
|  | P03 | **Piso 03** |  | 2027-04-20 | 2027-06-30 |  |  |  |  |
| A21020 |  | Division de duchas | 20d | 2027-04-20 | 2027-05-19 | A1370 SS+10d | 96.36d | 0d | B00043 |
| A21030 |  | Espejos de baño | 12d | 2027-04-26 | 2027-05-13 | A21020 SS+4d | 223.06d | 133d | B00043 |
| A21040 |  | Barandas balcon | 28d | 2027-05-19 | 2027-06-30 | A21020 | 191.06d | 101d | B00043 |
|  | P04 | **Piso 04** |  | 2027-05-17 | 2027-07-28 |  |  |  |  |
| A21080 |  | Division de duchas | 20d | 2027-05-17 | 2027-06-16 | A20750 | 129.06d | 0d | B00043 |
| A21090 |  | Espejos de baño | 12d | 2027-05-21 | 2027-06-10 | A21080 SS+4d | 205.06d | 115d | B00043 |
| A21100 |  | Barandas balcon | 28d | 2027-06-16 | 2027-07-28 | A21080 | 173.06d | 83d | B00043 |
|  | P05 | **Piso 05** |  | 2027-06-03 | 2027-08-13 |  |  |  |  |
| A21050 |  | Division de duchas | 20d | 2027-06-03 | 2027-07-02 | A20770 | 112.06d | 0d | B00043 |
| A21060 |  | Espejos de baño | 12d | 2027-06-10 | 2027-06-28 | A21050 SS+4d | 193.06d | 103d | B00043 |
| A21070 |  | Barandas balcon | 28d | 2027-07-02 | 2027-08-13 | A21050 | 161.06d | 71d | B00043 |
|  | P06 | **Piso 06** |  | 2027-06-22 | 2027-09-01 |  |  |  |  |
| A21110 |  | Division de duchas | 20d | 2027-06-22 | 2027-07-22 | A20790 | 97.06d | 0d | B00043 |
| A21120 |  | Espejos de baño | 12d | 2027-06-28 | 2027-07-15 | A21110 SS+4d | 181.06d | 91d | B00043 |
| A21130 |  | Barandas balcon | 28d | 2027-07-22 | 2027-09-01 | A21110 | 149.06d | 59d | B00043 |
|  | P07 | **Piso 07** |  | 2027-07-09 | 2027-09-17 |  |  |  |  |
| A21140 |  | Division de duchas | 20d | 2027-07-09 | 2027-08-09 | A20810 | 91.06d | 0d | B00043 |
| A21150 |  | Espejos de baño | 12d | 2027-07-15 | 2027-08-03 | A21140 SS+4d | 169.06d | 79d | B00043 |
| A21160 |  | Barandas balcon | 28d | 2027-08-09 | 2027-09-17 | A21140 | 137.06d | 47d | B00043 |
|  | P08 | **Piso 08** |  | 2027-07-28 | 2027-10-05 |  |  |  |  |
| A21170 |  | Division de duchas | 20d | 2027-07-28 | 2027-08-26 | A20840 | 71.06d | 0d | B00043 |
| A21180 |  | Espejos de baño | 12d | 2027-08-03 | 2027-08-20 | A21170 SS+4d | 157.06d | 67d | B00043 |
| A21190 |  | Barandas balcon | 28d | 2027-08-26 | 2027-10-05 | A21170 | 125.06d | 35d | B00043 |

| ID | WBS | Activity | Duration | Start | Finish | Predecessors | Total float | Free float | CBB_Obras |
| --- | --- | --- | --- | --- | --- | --- | --- | --- | --- |
|  | P09 | **Piso 09** |  | 2027-07-29 | 2027-09-28 |  |  |  |  |
| A21200 |  | Division de duchas | 17d | 2027-07-29 | 2027-08-24 | A20860 | 68.06d | 0d | B00043 |
| A21210 |  | Espejos de baño | 9d | 2027-08-04 | 2027-08-18 | A21200 SS+4d | 159.06d | 69d | B00043 |
| A21220 |  | Barandas balcon | 25d | 2027-08-24 | 2027-09-28 | A21200 | 130.06d | 40d | B00043 |
|  | P10 | **Piso 10** |  | 2027-08-12 | 2027-10-12 |  |  |  |  |
| A21230 |  | Division de duchas | 17d | 2027-08-12 | 2027-09-07 | A20880 | 63.06d | 0d | B00043 |
| A21240 |  | Espejos de baño | 9d | 2027-08-19 | 2027-09-01 | A21230 SS+4d | 149.06d | 59d | B00043 |
| A21250 |  | Barandas balcon | 25d | 2027-09-07 | 2027-10-12 | A21230 | 120.06d | 30d | B00043 |
|  | P11 | **Piso 11** |  | 2027-08-24 | 2027-10-15 |  |  |  |  |
| A21260 |  | Division de duchas | 15d | 2027-08-24 | 2027-09-14 | A20900 | 35.06d | 0d | B00043 |
| A21270 |  | Espejos de baño | 9d | 2027-08-30 | 2027-09-10 | A21260 SS+4d | 142.06d | 52d | B00043 |
| A21280 |  | Barandas balcon | 23d | 2027-09-14 | 2027-10-15 | A21260 | 117.06d | 27d | B00043 |
|  | P12 | **Piso 12** |  | 2027-09-07 | 2027-11-02 |  |  |  |  |
| A21290 |  | Division de duchas | 15d | 2027-09-07 | 2027-09-28 | A20920 | 70.06d | 0d | B00043 |
| A21300 |  | Espejos de baño | 9d | 2027-09-13 | 2027-09-24 | A21290 SS+4d | 132.06d | 42d | B00043 |
| A21310 |  | Barandas balcon | 23d | 2027-09-28 | 2027-11-02 | A21290 | 107.06d | 17d | B00043 |
|  | P13 | **Piso 13** |  | 2027-09-17 | 2027-11-10 |  |  |  |  |
| A21320 |  | Division de duchas | 15d | 2027-09-17 | 2027-10-08 | A20940 | 59.06d | 0d | B00043 |
| A21330 |  | Espejos de baño | 9d | 2027-09-23 | 2027-10-06 | A21320 SS+4d | 124.06d | 34d | B00043 |
| A21340 |  | Barandas balcon | 21d | 2027-10-08 | 2027-11-10 | A21320 | 101.06d | 11d | B00043 |
|  | P14 | **Piso 14** |  | 2027-10-01 | 2027-11-25 |  |  |  |  |
| A21350 |  | Division de duchas | 15d | 2027-10-01 | 2027-10-25 | A20960 | 54.06d | 0d | B00043 |
| A21360 |  | Espejos de baño | 9d | 2027-10-07 | 2027-10-21 | A21350 SS+4d | 114.06d | 24d | B00043 |
| A21370 |  | Barandas balcon | 21d | 2027-10-25 | 2027-11-25 | A21350 | 91.06d | 1d | B00043 |

| ID | WBS | Activity | Duration | Start | Finish | Predecessors | Total float | Free float | Resources | Cost | CBB_Obras |
| --- | --- | --- | --- | --- | --- | --- | --- | --- | --- | --- | --- |
|  | P15 | **Piso 15** |  | 2027-10-05 | 2027-11-19 |  |  |  |  |  |  |
| A21380 |  | Division de duchas | 12d | 2027-10-05 | 2027-10-22 | A20980 | 43.06d | 0d |  |  | B00043 |
| A21390 |  | Espejos de baño | 6d | 2027-10-11 | 2027-10-20 | A21380 SS+4d | 115.06d | 25d |  |  | B00043 |
| A21400 |  | Barandas balcon | 18d | 2027-10-22 | 2027-11-19 | A21380 | 95.06d | 5d |  |  | B00043 |
|  | P16 | **Piso 16** |  | 2027-10-27 | 2027-12-01 |  |  |  |  |  |  |
| A21410 |  | Division de duchas | 12d | 2027-10-27 | 2027-11-16 | A21000 FS+5d | 38.06d | 0d |  |  | B00043 |
| A21420 |  | Espejos de baño | 6d | 2027-11-03 | 2027-11-11 | A21410 SS+4d | 100.06d | 10d |  |  | B00043 |
| A21430 |  | Barandas balcon 1 | 8d | 2027-11-16 | 2027-11-26 | A21410 | 87.06d | 0d |  |  | B00043 |
| A21440 |  | Barandas balcon 2 | 8d | 2027-11-19 | 2027-12-01 | A21430 SS+3d | 87.06d |  | Dummy [0.02 h] | 0.02 | B00043 |
|  | Dotacion | **Dotacion** |  | 2027-04-20 | 2028-01-26 |  |  |  |  |  |  |
|  | P03 | **Piso 03** |  | 2027-04-20 | 2027-07-09 |  |  |  |  |  |  |
| A21450 |  | Aparatos sanitarios y griferias | 40d | 2027-04-20 | 2027-06-18 | A1350 FS-20d | 96.36d | 0d | Dummy [0.02 h] | 0.02 | B00043 |
| A21460 |  | Aparatos electricos y comunicaciones | 22d | 2027-05-19 | 2027-06-22 | A21450 FS-20d | 96.36d | 0d | Dummy [0.02 h] | 0.02 | B00043 |
| A21470 |  | Gasodomesticos | 22d | 2027-06-08 | 2027-07-09 | A21460 FS-10d | 185.06d |  | Dummy [0.02 h] | 0.02 | B00043 |
|  | P04 | **Piso 04** |  | 2027-05-17 | 2027-08-05 |  |  |  |  |  |  |
| A21480 |  | Aparatos sanitarios y griferias | 40d | 2027-05-17 | 2027-07-15 | A21080 FS-20d | 129.06d | 0d | Dummy [0.02 h] | 0.02 | B00043 |
| A21490 |  | Aparatos electricos y comunicaciones | 22d | 2027-06-16 | 2027-07-19 | A21480 FS-20d | 129.06d | 0d | Dummy [0.02 h] | 0.02 | B00043 |
| A21500 |  | Gasodomesticos | 22d | 2027-07-02 | 2027-08-05 | A21490 FS-10d | 167.06d |  | Dummy [0.02 h] | 0.02 | B00043 |
|  | P05 | **Piso 05** |  | 2027-06-03 | 2027-08-24 |  |  |  |  |  |  |
| A21510 |  | Aparatos sanitarios y griferias | 40d | 2027-06-03 | 2027-08-03 | A21050 FS-20d | 112.06d | 0d | Dummy [0.02 h] | 0.02 | B00043 |
| A21520 |  | Aparatos electricos y comunicaciones | 22d | 2027-07-02 | 2027-08-05 | A21510 FS-20d | 112.06d | 0d | Dummy [0.02 h] | 0.02 | B00043 |
| A21530 |  | Gasodomesticos | 22d | 2027-07-22 | 2027-08-24 | A21520 FS-10d | 155.06d |  | Dummy [0.02 h] | 0.02 | B00043 |
|  | P06 | **Piso 06** |  | 2027-06-22 | 2027-09-09 |  |  |  |  |  |  |
| A21540 |  | Aparatos sanitarios y griferias | 40d | 2027-06-22 | 2027-08-20 | A21110 FS-20d | 97.06d | 0d | Dummy [0.02 h] | 0.02 | B00043 |
| A21550 |  | Aparatos electricos y comunicaciones | 22d | 2027-07-22 | 2027-08-24 | A21540 FS-20d | 97.06d | 0d | Dummy [0.02 h] | 0.02 | B00043 |
| A21560 |  | Gasodomesticos | 22d | 2027-08-09 | 2027-09-09 | A21550 FS-10d | 143.06d |  | Dummy [0.02 h] | 0.02 | B00043 |

| ID | WBS | Activity | Duration | Start | Finish | Predecessors | Total float | Free float | Resources | Cost | CBB_Obras |
| --- | --- | --- | --- | --- | --- | --- | --- | --- | --- | --- | --- |
|  | P07 | **Piso 07** |  | 2027-07-09 | 2027-09-27 |  |  |  |  |  |  |
| A21570 |  | Aparatos sanitarios y griferias | 40d | 2027-07-09 | 2027-09-07 | A21140 FS-20d | 91.06d | 0d | Dummy [0.02 h] | 0.02 | B00043 |
| A21580 |  | Aparatos electricos y comunicaciones | 22d | 2027-08-09 | 2027-09-09 | A21570 FS-20d | 91.06d | 0d | Dummy [0.02 h] | 0.02 | B00043 |
| A21590 |  | Gasodomesticos | 22d | 2027-08-26 | 2027-09-27 | A21580 FS-10d | 131.06d |  | Dummy [0.02 h] | 0.02 | B00043 |
|  | P08 | **Piso 08** |  | 2027-07-28 | 2027-10-13 |  |  |  |  |  |  |
| A21600 |  | Aparatos sanitarios y griferias | 40d | 2027-07-28 | 2027-09-23 | A21170 FS-20d | 71.06d | 0d | Dummy [0.02 h] | 0.02 | B00043 |
| A21610 |  | Aparatos electricos y comunicaciones | 22d | 2027-08-26 | 2027-09-27 | A21600 FS-20d | 71.06d | 0d | Dummy [0.02 h] | 0.02 | B00043 |
| A21620 |  | Gasodomesticos | 22d | 2027-09-13 | 2027-10-13 | A21610 FS-10d | 119.06d |  | Dummy [0.02 h] | 0.02 | B00043 |
|  | P09 | **Piso 09** |  | 2027-07-26 | 2027-09-29 |  |  |  |  |  |  |
| A21630 |  | Aparatos sanitarios y griferias | 34d | 2027-07-26 | 2027-09-13 | A21200 FS-20d | 68.06d | 0d | Dummy [0.02 h] | 0.02 | B00043 |
| A21640 |  | Aparatos electricos y comunicaciones | 17d | 2027-08-23 | 2027-09-15 | A21630 FS-15d | 68.06d | 0d | Dummy [0.02 h] | 0.02 | B00043 |
| A21650 |  | Gasodomesticos | 17d | 2027-09-06 | 2027-09-29 | A21640 FS-7d | 129.06d |  | Dummy [0.02 h] | 0.02 | B00043 |
|  | P10 | **Piso 10** |  | 2027-08-09 | 2027-10-13 |  |  |  |  |  |  |
| A21660 |  | Aparatos sanitarios y griferias | 34d | 2027-08-09 | 2027-09-27 | A21230 FS-20d | 63.06d | 0d | Dummy [0.02 h] | 0.02 | B00043 |
| A21670 |  | Aparatos electricos y comunicaciones | 17d | 2027-09-06 | 2027-09-29 | A21660 FS-15d | 63.06d | 0d | Dummy [0.02 h] | 0.02 | B00043 |
| A21680 |  | Gasodomesticos | 17d | 2027-09-20 | 2027-10-13 | A21670 FS-7d | 119.06d |  | Dummy [0.02 h] | 0.02 | B00043 |
|  | P11 | **Piso 11** |  | 2027-08-17 | 2027-10-21 |  |  |  |  |  |  |
| A21690 |  | Aparatos sanitarios y griferias | 34d | 2027-08-17 | 2027-10-04 | A21260 FS-20d | 35.06d | 0d | Dummy [0.02 h] | 0.02 | B00043 |
| A21700 |  | Aparatos electricos y comunicaciones | 17d | 2027-09-13 | 2027-10-06 | A21690 FS-15d | 35.06d | 0d | Dummy [0.02 h] | 0.02 | B00043 |
| A21710 |  | Gasodomesticos | 17d | 2027-09-27 | 2027-10-21 | A21700 FS-7d | 114.06d |  | Dummy [0.02 h] | 0.02 | B00043 |
|  | P12 | **Piso 12** |  | 2027-08-31 | 2027-11-05 |  |  |  |  |  |  |
| A21720 |  | Aparatos sanitarios y griferias | 34d | 2027-08-31 | 2027-10-19 | A21290 FS-20d | 70.06d | 0d | Dummy [0.02 h] | 0.02 | B00043 |
| A21730 |  | Aparatos electricos y comunicaciones | 17d | 2027-09-27 | 2027-10-21 | A21720 FS-15d | 70.06d | 0d | Dummy [0.02 h] | 0.02 | B00043 |
| A21740 |  | Gasodomesticos | 17d | 2027-10-11 | 2027-11-05 | A21730 FS-7d | 104.06d |  | Dummy [0.02 h] | 0.02 | B00043 |

| ID | WBS | Activity | Duration | Start | Finish | Predecessors | Total float | Free float | Resources | Cost | CBB_Obras |
| --- | --- | --- | --- | --- | --- | --- | --- | --- | --- | --- | --- |
|  | P13 | **Piso 13** |  | 2027-09-10 | 2027-11-17 |  |  |  |  |  |  |
| A21750 |  | Aparatos sanitarios y griferias | 30d | 2027-09-10 | 2027-10-25 | A21320 FS-20d | 59.06d | 0d | Dummy [0.02 h] | 0.02 | B00043 |
| A21760 |  | Aparatos electricos y comunicaciones | 15d | 2027-10-08 | 2027-11-02 | A21750 FS-10d | 59.06d | 0d | Dummy [0.02 h] | 0.02 | B00043 |
| A21770 |  | Gasodomesticos | 15d | 2027-10-25 | 2027-11-17 | A21760 FS-5d | 97.06d |  | Dummy [0.02 h] | 0.02 | B00043 |
|  | P14 | **Piso 14** |  | 2027-09-24 | 2027-12-01 |  |  |  |  |  |  |
| A21780 |  | Aparatos sanitarios y griferias | 30d | 2027-09-24 | 2027-11-09 | A21350 FS-20d | 54.06d | 0d | Dummy [0.02 h] | 0.02 | B00043 |
| A21790 |  | Aparatos electricos y comunicaciones | 15d | 2027-10-25 | 2027-11-17 | A21780 FS-10d | 54.06d | 0d | Dummy [0.02 h] | 0.02 | B00043 |
| A21800 |  | Gasodomesticos | 15d | 2027-11-09 | 2027-12-01 | A21790 FS-5d | 87.06d |  | Dummy [0.02 h] | 0.02 | B00043 |
|  | P15 | **Piso 15** |  | 2027-09-23 | 2027-12-10 |  |  |  |  |  |  |
| A21810 |  | Aparatos sanitarios y griferias | 24d | 2027-09-23 | 2027-10-28 | A21380 FS-20d | 43.06d | 0d | Dummy [0.02 h] | 0.02 | B00043 |
| A21820 |  | Aparatos electricos y comunicaciones | 14d | 2027-10-28 | 2027-11-19 | A21810 | 43.06d | 0d | Dummy [0.02 h] | 0.02 | B00043 |
| A21830 |  | Gasodomesticos | 14d | 2027-11-19 | 2027-12-10 | A21820 | 81.06d |  | Dummy [0.02 h] | 0.02 | B00043 |
|  | P16 | **Piso 16** |  | 2027-10-14 | 2028-01-26 |  |  |  |  |  |  |
| A21840 |  | Aparatos sanitarios y griferias | 24d | 2027-10-14 | 2027-11-22 | A21410 FS-20d | 38.06d | 0d | Dummy [0.02 h] | 0.02 | B00043 |
| A21850 |  | Aparatos electricos y comunicaciones | 14d | 2027-11-05 | 2027-11-26 | A21840 FS-10d | 38.06d | 0d | Dummy [0.02 h] | 0.02 | B00043 |
| A21860 |  | Gasodomesticos | 14d | 2027-11-19 | 2027-12-10 | A21850 FS-5d | 60.06d | 0d | Dummy [0.02 h] | 0.02 | B00043 |
| A21870 |  | Jaccuzzi | 16d | 2027-12-10 | 2028-01-19 | A21860 | 60.06d | 0d |  |  | B00043 |
| A21880 |  | BBQ | 5d | 2028-01-19 | 2028-01-26 | A21870 | 60.06d | 0d |  |  | B00043 |
|  | Estuco y Pintura-03 | **Estuco y Pintura-03** |  | 2027-05-06 | 2028-02-09 |  |  |  |  |  |  |
|  | P03 | **Piso 03** |  | 2027-05-06 | 2027-06-14 |  |  |  |  |  |  |
| A21890 |  | Tercera Mano de pintura | 24d | 2027-05-06 | 2027-06-14 | A22030 SS-20d | 96.36d | 0d | Dummy [0.02 h] | 0.02 | B00043 |
|  | P04 | **Piso 04** |  | 2027-07-02 | 2027-08-09 |  |  |  |  |  |  |
| A21900 |  | Tercera Mano de pintura | 24d | 2027-07-02 | 2027-08-09 | A21490 FS-10d | 129.06d | 0d | Dummy [0.02 h] | 0.02 | B00043 |
|  | P05 | **Piso 05** |  | 2027-07-22 | 2027-08-26 |  |  |  |  |  |  |
| A21910 |  | Tercera Mano de pintura | 24d | 2027-07-22 | 2027-08-26 | A21520 FS-10d | 112.06d | 0d | Dummy [0.02 h] | 0.02 | B00043 |

| ID | WBS | Activity | Duration | Start | Finish | Predecessors | Total float | Free float | Resources | Cost | CBB_Obras |
| --- | --- | --- | --- | --- | --- | --- | --- | --- | --- | --- | --- |
|  | P06 | **Piso 06** |  | 2027-08-09 | 2027-09-13 |  |  |  |  |  |  |
| A21920 |  | Tercera Mano de pintura | 24d | 2027-08-09 | 2027-09-13 | A21550 FS-10d | 97.06d | 0d | Dummy [0.02 h] | 0.02 | B00043 |
|  | P07 | **Piso 07** |  | 2027-08-26 | 2027-09-29 |  |  |  |  |  |  |
| A21930 |  | Tercera Mano de pintura | 24d | 2027-08-26 | 2027-09-29 | A21580 FS-10d | 91.06d | 0d | Dummy [0.02 h] | 0.02 | B00043 |
|  | P08 | **Piso 08** |  | 2027-09-13 | 2027-10-15 |  |  |  |  |  |  |
| A21940 |  | Tercera Mano de pintura | 24d | 2027-09-13 | 2027-10-15 | A21610 FS-10d | 71.06d | 0d | Dummy [0.02 h] | 0.02 | B00043 |
|  | P09 | **Piso 09** |  | 2027-09-29 | 2027-10-29 |  |  |  |  |  |  |
| A21950 |  | Tercera Mano de pintura | 21d | 2027-09-29 | 2027-10-29 | A21640 FS+10d | 68.06d | 0d | Dummy [0.02 h] | 0.02 | B00043 |
|  | P10 | **Piso 10** |  | 2027-10-13 | 2027-11-16 |  |  |  |  |  |  |
| A21960 |  | Tercera Mano de pintura | 21d | 2027-10-13 | 2027-11-16 | A21670 FS+10d | 63.06d | 0d | Dummy [0.02 h] | 0.02 | B00043 |
|  | P11 | **Piso 11** |  | 2027-10-21 | 2027-11-19 |  |  |  |  |  |  |
| A21970 |  | Tercera Mano de pintura | 19d | 2027-10-21 | 2027-11-19 | A21700 FS+10d | 35.06d | 0d | Dummy [0.02 h] | 0.02 | B00043 |
|  | P12 | **Piso 12** |  | 2027-11-05 | 2027-12-03 |  |  |  |  |  |  |
| A21980 |  | Tercera Mano de pintura | 19d | 2027-11-05 | 2027-12-03 | A21730 FS+10d | 70.06d | 0d | Dummy [0.02 h] | 0.02 | B00043 |
|  | P13 | **Piso 13** |  | 2027-11-24 | 2027-12-21 |  |  |  |  |  |  |
| A21990 |  | Tercera Mano de pintura | 18d | 2027-11-24 | 2027-12-21 | A21760 FS+15d | 59.06d | 0d | Dummy [0.02 h] | 0.02 | B00043 |
|  | P14 | **Piso 14** |  | 2027-12-01 | 2028-01-13 |  |  |  |  |  |  |
| A22000 |  | Tercera Mano de pintura | 18d | 2027-12-01 | 2028-01-13 | A21790 FS+10d | 54.06d | 0d | Dummy [0.02 h] | 0.02 | B00043 |
|  | P15 | **Piso 15** |  | 2028-01-12 | 2028-02-02 |  |  |  |  |  |  |
| A22010 |  | Tercera Mano de pintura | 15d | 2028-01-12 | 2028-02-02 | A21820 FS+25d | 43.06d | 0d | Dummy [0.02 h] | 0.02 | B00043 |
|  | P16 | **Piso 16** |  | 2028-01-19 | 2028-02-09 |  |  |  |  |  |  |
| A22020 |  | Tercera Mano de pintura | 15d | 2028-01-19 | 2028-02-09 | A21850 FS+25d | 38.06d | 0d | Dummy [0.02 h] | 0.02 | B00043 |
|  | Detallado y Aseo Apartamento | **Detallado y Aseo Apartamento** |  | 2027-06-14 | 2028-02-25 |  |  |  |  |  |  |
|  | P03 | **Piso 03** |  | 2027-06-14 | 2027-07-07 |  |  |  |  |  |  |
| A22060 |  | Detallado | 12d | 2027-06-14 | 2027-06-30 | A22090 | 172.06d | 0d | Dummy [0.02 h] | 0.02 | B00043 |
| A22080 |  | Aseo | 4d | 2027-06-30 | 2027-07-07 | A22060 | 172.06d | 102.36d | Dummy [0.02 h] | 0.02 | B00043 |

| ID | WBS | Activity | Duration | Start | Finish | Predecessors | Total float | Free float | Resources | Cost | CBB_Obras |
| --- | --- | --- | --- | --- | --- | --- | --- | --- | --- | --- | --- |
|  | P04 | **Piso 04** |  | 2027-08-09 | 2027-09-01 |  |  |  |  |  |  |
| A22110 |  | Detallado | 12d | 2027-08-09 | 2027-08-26 | A21900 | 129.06d | 0d | Dummy [0.02 h] | 0.02 | B00043 |
| A22120 |  | Aseo | 4d | 2027-08-26 | 2027-09-01 | A22110 | 129.06d | 64.36d | Dummy [0.02 h] | 0.02 | B00043 |
|  | P05 | **Piso 05** |  | 2027-08-26 | 2027-09-17 |  |  |  |  |  |  |
| A22130 |  | Detallado | 12d | 2027-08-26 | 2027-09-13 | A21910 | 112.06d | 0d | Dummy [0.02 h] | 0.02 | B00043 |
| A22140 |  | Aseo | 4d | 2027-09-13 | 2027-09-17 | A22130 | 112.06d | 52.36d | Dummy [0.02 h] | 0.02 | B00043 |
|  | P06 | **Piso 06** |  | 2027-09-13 | 2027-10-05 |  |  |  |  |  |  |
| A22150 |  | Detallado | 12d | 2027-09-13 | 2027-09-29 | A21920 | 97.06d | 0d | Dummy [0.02 h] | 0.02 | B00043 |
| A22160 |  | Aseo | 4d | 2027-09-29 | 2027-10-05 | A22150 | 97.06d | 40.36d | Dummy [0.02 h] | 0.02 | B00043 |
|  | P07 | **Piso 07** |  | 2027-09-29 | 2027-10-22 |  |  |  |  |  |  |
| A22170 |  | Detallado | 12d | 2027-09-29 | 2027-10-15 | A21930 | 91.06d | 0d | Dummy [0.02 h] | 0.02 | B00043 |
| A22180 |  | Aseo | 4d | 2027-10-15 | 2027-10-22 | A22170 | 91.06d | 48.36d | Dummy [0.02 h] | 0.02 | B00043 |
|  | P08 | **Piso 08** |  | 2027-11-02 | 2027-11-25 |  |  |  |  |  |  |
| A22190 |  | Detallado | 12d | 2027-11-02 | 2027-11-19 | A21940 FS+10d | 71.06d | 0d | Dummy [0.02 h] | 0.02 | B00043 |
| A22200 |  | Aseo | 4d | 2027-11-19 | 2027-11-25 | A22190 | 71.06d | 6.36d | Dummy [0.02 h] | 0.02 | B00043 |
|  | P09 | **Piso 09** |  | 2027-10-29 | 2027-11-23 |  |  |  |  |  |  |
| A22210 |  | Detallado | 12d | 2027-10-29 | 2027-11-18 | A21950 | 68.06d | 0d | Dummy [0.02 h] | 0.02 | B00043 |
| A22220 |  | Aseo | 3d | 2027-11-18 | 2027-11-23 | A22210 | 68.06d | 3.36d | Dummy [0.02 h] | 0.02 | B00043 |
|  | P10 | **Piso 10** |  | 2027-11-16 | 2027-12-07 |  |  |  |  |  |  |
| A22230 |  | Detallado | 12d | 2027-11-16 | 2027-12-02 | A21960 | 63.06d | 0d | Dummy [0.02 h] | 0.02 | B00043 |
| A22240 |  | Aseo | 3d | 2027-12-02 | 2027-12-07 | A22230 | 63.06d | 0d | Dummy [0.02 h] | 0.02 | B00043 |
|  | P11 | **Piso 11** |  | 2027-11-19 | 2027-12-13 |  |  |  |  |  |  |
| A22250 |  | Detallado | 12d | 2027-11-19 | 2027-12-07 | A21970 | 35.06d | 0d | Dummy [0.02 h] | 0.02 | B00043 |
| A22260 |  | Aseo | 3d | 2027-12-07 | 2027-12-13 | A22250 | 35.06d | 0d | Dummy [0.02 h] | 0.02 | B00043 |

| ID | WBS | Activity | Duration | Start | Finish | Predecessors | Complete | Remaining | Planned start | Planned finish | Total float | Free float | Resources | Cost | Actual cost | CBB_Obras |
| --- | --- | --- | --- | --- | --- | --- | --- | --- | --- | --- | --- | --- | --- | --- | --- | --- |
|  | P12 | **Piso 12** |  | 2027-12-03 | 2028-01-12 |  |  |  |  |  |  |  |  |  |  |  |
| A22270 |  | Detallado | 12d | 2027-12-03 | 2027-12-22 | A21980 |  |  |  |  | 70.06d | 0d | Dummy [0.02 h] | 0.02 |  | B00043 |
| A22280 |  | Aseo | 3d | 2027-12-22 | 2028-01-12 | A22270 |  |  |  |  | 70.06d | 32d | Dummy [0.02 h] | 0.02 |  | B00043 |
|  | P13 | **Piso 13** |  | 2027-12-21 | 2028-01-27 |  |  |  |  |  |  |  |  |  |  |  |
| A22290 |  | Detallado | 12d | 2027-12-21 | 2028-01-24 | A21990 |  |  |  |  | 59.06d | 0d | Dummy [0.02 h] | 0.02 |  | B00043 |
| A22300 |  | Aseo | 3d | 2028-01-24 | 2028-01-27 | A22290 |  |  |  |  | 59.06d | 21d | Dummy [0.02 h] | 0.02 |  | B00043 |
|  | P14 | **Piso 14** |  | 2028-01-13 | 2028-02-03 |  |  |  |  |  |  |  |  |  |  |  |
| A22310 |  | Detallado | 12d | 2028-01-13 | 2028-01-31 | A22000 |  |  |  |  | 54.06d | 0d | Dummy [0.02 h] | 0.02 |  | B00043 |
| A22320 |  | Aseo | 3d | 2028-01-31 | 2028-02-03 | A22310 |  |  |  |  | 54.06d | 16d | Dummy [0.02 h] | 0.02 |  | B00043 |
|  | P15 | **Piso 15** |  | 2028-02-02 | 2028-02-18 |  |  |  |  |  |  |  |  |  |  |  |
| A22330 |  | Detallado | 10d | 2028-02-02 | 2028-02-16 | A22010 |  |  |  |  | 43.06d | 0d | Dummy [0.02 h] | 0.02 |  | B00043 |
| A22340 |  | Aseo | 2d | 2028-02-16 | 2028-02-18 | A22330 |  |  |  |  | 43.06d | 5d | Dummy [0.02 h] | 0.02 |  | B00043 |
|  | P16 | **Piso 16** |  | 2028-02-09 | 2028-02-25 |  |  |  |  |  |  |  |  |  |  |  |
| A22350 |  | Detallado | 10d | 2028-02-09 | 2028-02-23 | A22020 |  |  |  |  | 38.06d | 0d | Dummy [0.02 h] | 0.02 |  | B00043 |
| A22360 |  | Aseo | 2d | 2028-02-23 | 2028-02-25 | A22350 |  |  |  |  | 38.06d | 0d | Dummy [0.02 h] | 0.02 |  | B00043 |
|  | 10Fac | **07. Fachada** |  | 2026-06-30 | 2028-01-17 |  |  |  |  |  |  |  |  |  |  |  |
|  | 01Fachada | **Fachadas** |  | 2026-06-30 | 2028-01-17 |  |  |  |  |  |  |  |  |  |  |  |
|  | FACHADA PISCINA Y MAR | **Fachada Piscina y Mar** |  | 2026-06-30 | 2028-01-17 |  |  |  |  |  |  |  |  |  |  |  |
|  | Paño 1 | **Paño 1** |  | 2026-06-30 | 2026-09-25 |  |  |  |  |  |  |  |  |  |  |  |
| A22370 |  | Mamposteria | 10d | 2026-06-30 A | 2026-07-22 | A1400 | 80% | 2d | 2026-06-30 | 2026-07-13 | 8d | 0d | Dummy [0.05 h] | 0.05 | 0.04 | B00043 |
| A22380 |  | Pañete | 17d | 2026-07-23 | 2026-08-18 | A22370 |  |  |  |  | 285d | 0d | Dummy [0.05 h] | 0.05 |  | B00043 |
| A22390 |  | Pintura | 28d | 2026-08-19 | 2026-09-25 | A22380 |  |  |  |  | 285d | 0d | Dummy [0.05 h] | 0.05 |  | B00043 |
|  | Paño 2 | **Paño 2** |  | 2026-07-23 | 2026-10-09 |  |  |  |  |  |  |  |  |  |  |  |
| A22460 |  | Mamposteria | 10d | 2026-07-23 | 2026-08-05 | A22370 |  |  |  |  | 8d | 0d | Dummy [0.05 h] | 0.05 |  | B00043 |
| A22470 |  | Pañete | 17d | 2026-08-06 | 2026-09-01 | A22460 |  |  |  |  | 353.7d | 0d | Dummy [0.05 h] | 0.05 |  | B00043 |
| A22480 |  | Pintura | 28d | 2026-09-02 | 2026-10-09 | A22470 |  |  |  |  | 353.7d |  | Dummy [0.05 h] | 0.05 |  | B00043 |

| ID | WBS | Activity | Duration | Start | Finish | Predecessors | Total float | Free float | Resources | Cost | CBB_Obras |
| --- | --- | --- | --- | --- | --- | --- | --- | --- | --- | --- | --- |
|  | Paño 3 | **Paño 3** |  | 2026-08-06 | 2026-12-17 |  |  |  |  |  |  |
| A22400 |  | Prolongaciones Elec-Hidr-Hvac-Comu | 10d | 2026-08-06 | 2026-08-21 | A22460 | 8d | 0d | Dummy [0.05 h] | 0.05 | B00043 |
| A22410 |  | Mamposteria | 10d | 2026-08-24 | 2026-09-04 | A22400 | 308.7d | 0d | Dummy [0.05 h] | 0.05 | B00043 |
| A22420 |  | Superboard | 25d | 2026-09-07 | 2026-10-09 | A22410 | 308.7d | 0d | Dummy [0.05 h] | 0.05 | B00043 |
| A22440 |  | Pañetes | 17d | 2026-10-13 | 2026-11-05 | A22420 | 308.7d | 0d | Dummy [0.05 h] | 0.05 | B00043 |
| A22450 |  | Pintura | 28d | 2026-11-06 | 2026-12-17 | A22440 | 308.7d |  | Dummy [0.05 h] | 0.05 | B00043 |
|  | Paño 4 | **Paño 4** |  | 2026-08-24 | 2027-01-19 |  |  |  |  |  |  |
| A22490 |  | Prolongaciones Elec-Hidr-Hvac-Comu | 10d | 2026-08-24 | 2026-09-04 | A22400 | 8d | 0d | Dummy [0.05 h] | 0.05 | B00043 |
| A22500 |  | Mamposteria | 10d | 2026-09-07 | 2026-09-18 | A22490 | 298.7d | 0d | Dummy [0.05 h] | 0.05 | B00043 |
| A22510 |  | Superboard | 25d | 2026-09-21 | 2026-10-26 | A22500 | 298.7d | 0d | Dummy [0.05 h] | 0.05 | B00043 |
| A22520 |  | Pañetes | 17d | 2026-10-27 | 2026-11-20 | A22510 | 298.7d | 0d | Dummy [0.05 h] | 0.05 | B00043 |
| A22530 |  | Pintura | 28d | 2026-11-23 | 2027-01-19 | A22520 | 298.7d |  | Dummy [0.05 h] | 0.05 | B00043 |
|  | Paño 5 | **Paño 5** |  | 2026-09-07 | 2027-02-26 |  |  |  |  |  |  |
| A22540 |  | Prolongaciones Elec-Hidr-Hvac-Comu | 12d | 2026-09-07 | 2026-09-22 | A22490 | 8d | 0d | Dummy [0.05 h] | 0.05 | B00043 |
| A22550 |  | Mamposteria | 12d | 2026-09-23 | 2026-10-08 | A22540 | 270.7d | 0d | Dummy [0.05 h] | 0.05 | B00043 |
| A22560 |  | Superboard | 31d | 2026-10-09 | 2026-11-25 | A22550 | 270.7d | 0d | Dummy [0.05 h] | 0.05 | B00043 |
| A22570 |  | Pañetes | 19d | 2026-11-26 | 2026-12-23 | A22560 | 270.7d | 0d | Dummy [0.05 h] | 0.05 | B00043 |
| A22580 |  | Pintura | 34d | 2027-01-12 | 2027-02-26 | A22570 | 270.7d |  | Dummy [0.05 h] | 0.05 | B00043 |
|  | Paño 6 | **Paño 6** |  | 2026-09-23 | 2027-04-19 |  |  |  |  |  |  |
| A22590 |  | Prolongaciones Elec-Hidr-Hvac-Comu | 14d | 2026-09-23 | 2026-10-13 | A22540 | 8d | 0d | Dummy [0.05 h] | 0.05 | B00043 |
| A22600 |  | Mamposteria | 14d | 2026-10-14 | 2026-11-03 | A22590 | 239.7d | 0d | Dummy [0.05 h] | 0.05 | B00043 |
| A22610 |  | Superboard | 37d | 2026-11-04 | 2027-01-14 | A22600 | 239.7d | 0d | Dummy [0.05 h] | 0.05 | B00043 |
| A22620 |  | Pañetes | 24d | 2027-01-15 | 2027-02-17 | A22610 | 239.7d | 0d | Dummy [0.05 h] | 0.05 | B00043 |
| A22630 |  | Pintura | 38d | 2027-02-18 | 2027-04-19 | A22620 | 239.7d |  | Dummy [0.05 h] | 0.05 | B00043 |

| ID | WBS | Activity | Duration | Start | Finish | Predecessors | Total float | Free float | Resources | Cost | CBB_Obras |
| --- | --- | --- | --- | --- | --- | --- | --- | --- | --- | --- | --- |
|  | Paño 7 | **Paño 7** |  | 2026-10-14 | 2027-06-01 |  |  |  |  |  |  |
| A22640 |  | Prolongaciones Elec-Hidr-Hvac-Comu | 16d | 2026-10-14 | 2026-11-05 | A22590 | 8d | 0d | Dummy [0.05 h] | 0.05 | B00043 |
| A22650 |  | Mamposteria | 16d | 2026-11-06 | 2026-11-30 | A22640 | 210.7d | 0d | Dummy [0.05 h] | 0.05 | B00043 |
| A22660 |  | Superboard | 38d | 2026-12-01 | 2027-02-10 | A22650 | 210.7d | 0d | Dummy [0.05 h] | 0.05 | B00043 |
| A22670 |  | Pañetes | 28d | 2027-02-11 | 2027-03-29 | A22660 | 210.7d | 0d | Dummy [0.05 h] | 0.05 | B00043 |
| A22680 |  | Pintura | 44d | 2027-03-30 | 2027-06-01 | A22670 | 210.7d |  | Dummy [0.05 h] | 0.05 | B00043 |
|  | Paño 8 | **Paño 8** |  | 2026-11-06 | 2027-06-30 |  |  |  |  |  |  |
| A22690 |  | Prolongaciones Elec-Hidr-Hvac-Comu | 18d | 2026-11-06 | 2026-12-02 | A22640 | 8d | 0d | Dummy [0.05 h] | 0.05 | B00043 |
| A22700 |  | Mamposteria | 18d | 2026-12-03 | 2027-01-15 | A22690 | 190.7d | 0d | Dummy [0.05 h] | 0.05 | B00043 |
| A22710 |  | Superboard | 30d | 2027-01-18 | 2027-02-26 | A22700 | 190.7d | 0d | Dummy [0.05 h] | 0.05 | B00043 |
| A22720 |  | Pañetes | 30d | 2027-03-01 | 2027-04-16 | A22710 | 190.7d | 0d | Dummy [0.05 h] | 0.05 | B00043 |
| A22730 |  | Pintura | 50d | 2027-04-19 | 2027-06-30 | A22720 | 190.7d |  | Dummy [0.05 h] | 0.05 | B00043 |
|  | Paño 9 | **Paño 9** |  | 2026-12-03 | 2027-07-28 |  |  |  |  |  |  |
| A22740 |  | Prolongaciones Elec-Hidr-Hvac-Comu | 18d | 2026-12-03 | 2027-01-15 | A22690 | 8d | 0d | Dummy [0.05 h] | 0.05 | B00043 |
| A22750 |  | Mamposteria | 18d | 2027-01-18 | 2027-02-10 | A22740 | 172.7d | 0d | Dummy [0.05 h] | 0.05 | B00043 |
| A22760 |  | Superboard | 30d | 2027-02-11 | 2027-03-31 | A22750 | 172.7d | 0d | Dummy [0.05 h] | 0.05 | B00043 |
| A22770 |  | Pañetes | 30d | 2027-04-01 | 2027-05-13 | A22760 | 172.7d | 0d | Dummy [0.05 h] | 0.05 | B00043 |
| A22780 |  | Pintura | 50d | 2027-05-14 | 2027-07-28 | A22770 | 172.7d |  | Dummy [0.05 h] | 0.05 | B00043 |
|  | Paño 10 | **Paño 10** |  | 2027-01-18 | 2027-08-24 |  |  |  |  |  |  |
| A22790 |  | Prolongaciones Elec-Hidr-Hvac-Comu | 18d | 2027-01-18 | 2027-02-10 | A22740 | 8d | 0d | Dummy [0.05 h] | 0.05 | B00043 |
| A22800 |  | Mamposteria | 18d | 2027-02-11 | 2027-03-08 | A22790 | 154.7d | 0d | Dummy [0.05 h] | 0.05 | B00043 |
| A22810 |  | Superboard | 30d | 2027-03-09 | 2027-04-26 | A22800 | 154.7d | 0d | Dummy [0.05 h] | 0.05 | B00043 |
| A22820 |  | Pañetes | 30d | 2027-04-27 | 2027-06-10 | A22810 | 154.7d | 0d | Dummy [0.05 h] | 0.05 | B00043 |
| A22830 |  | Pintura | 50d | 2027-06-11 | 2027-08-24 | A22820 | 154.7d |  | Dummy [0.05 h] | 0.05 | B00043 |

| ID | WBS | Activity | Duration | Start | Finish | Predecessors | Total float | Free float | Resources | Cost | CBB_Obras |
| --- | --- | --- | --- | --- | --- | --- | --- | --- | --- | --- | --- |
|  | Paño 11 | **Paño 11** |  | 2027-02-11 | 2027-09-17 |  |  |  |  |  |  |
| A22840 |  | Prolongaciones Elec-Hidr-Hvac-Comu | 18d | 2027-02-11 | 2027-03-08 | A22790 | 8d | 0d | Dummy [0.05 h] | 0.05 | B00043 |
| A22850 |  | Mamposteria | 18d | 2027-03-09 | 2027-04-08 | A22840 | 136.7d | 0d | Dummy [0.05 h] | 0.05 | B00043 |
| A22860 |  | Superboard | 30d | 2027-04-09 | 2027-05-21 | A22850 | 136.7d | 0d | Dummy [0.05 h] | 0.05 | B00043 |
| A22870 |  | Pañetes | 30d | 2027-05-24 | 2027-07-07 | A22860 | 136.7d | 0d | Dummy [0.05 h] | 0.05 | B00043 |
| A22880 |  | Pintura | 50d | 2027-07-08 | 2027-09-17 | A22870 | 136.7d |  | Dummy [0.05 h] | 0.05 | B00043 |
|  | Paño 12 | **Paño 12** |  | 2027-03-09 | 2027-10-13 |  |  |  |  |  |  |
| A22890 |  | Prolongaciones Elec-Hidr-Hvac-Comu | 18d | 2027-03-09 | 2027-04-08 | A22840 | 8d | 0d | Dummy [0.05 h] | 0.05 | B00043 |
| A22900 |  | Mamposteria | 18d | 2027-04-09 | 2027-05-04 | A22890 | 118.7d | 0d | Dummy [0.05 h] | 0.05 | B00043 |
| A22910 |  | Superboard | 30d | 2027-05-05 | 2027-06-18 | A22900 | 118.7d | 0d | Dummy [0.05 h] | 0.05 | B00043 |
| A22920 |  | Pañetes | 30d | 2027-06-21 | 2027-08-03 | A22910 | 118.7d | 0d | Dummy [0.05 h] | 0.05 | B00043 |
| A22930 |  | Pintura | 50d | 2027-08-04 | 2027-10-13 | A22920 | 118.7d |  | Dummy [0.05 h] | 0.05 | B00043 |
|  | Paño 13 | **Paño 13** |  | 2027-04-09 | 2027-11-10 |  |  |  |  |  |  |
| A22940 |  | Prolongaciones Elec-Hidr-Hvac-Comu | 18d | 2027-04-09 | 2027-05-04 | A22890 | 8d | 0d | Dummy [0.05 h] | 0.05 | B00043 |
| A22950 |  | Mamposteria | 18d | 2027-05-05 | 2027-06-01 | A22940 | 100.7d | 0d | Dummy [0.05 h] | 0.05 | B00043 |
| A22960 |  | Superboard | 30d | 2027-06-02 | 2027-07-15 | A22950 | 100.7d | 0d | Dummy [0.05 h] | 0.05 | B00043 |
| A22970 |  | Pañetes | 30d | 2027-07-16 | 2027-08-30 | A22960 | 100.7d | 0d | Dummy [0.05 h] | 0.05 | B00043 |
| A22980 |  | Pintura | 50d | 2027-08-31 | 2027-11-10 | A22970 | 100.7d |  | Dummy [0.05 h] | 0.05 | B00043 |
|  | Paño 14 | **Paño 14** |  | 2027-05-05 | 2027-12-07 |  |  |  |  |  |  |
| A22990 |  | Prolongaciones Elec-Hidr-Hvac-Comu | 18d | 2027-05-05 | 2027-06-01 | A22940 | 8d | 0d | Dummy [0.05 h] | 0.05 | B00043 |
| A23000 |  | Mamposteria | 18d | 2027-06-02 | 2027-06-28 | A22990 | 82.7d | 0d | Dummy [0.05 h] | 0.05 | B00043 |
| A23010 |  | Superboard | 30d | 2027-06-29 | 2027-08-11 | A23000 | 82.7d | 0d | Dummy [0.05 h] | 0.05 | B00043 |
| A23020 |  | Pañetes | 30d | 2027-08-12 | 2027-09-23 | A23010 | 82.7d | 0d | Dummy [0.05 h] | 0.05 | B00043 |
| A23030 |  | Pintura | 50d | 2027-09-24 | 2027-12-07 | A23020 | 82.7d |  | Dummy [0.05 h] | 0.05 | B00043 |

| ID | WBS | Activity | Duration | Start | Finish | Predecessors | Total float | Free float | Resources | Cost | CBB_Obras |
| --- | --- | --- | --- | --- | --- | --- | --- | --- | --- | --- | --- |
|  | Paño 15 | **Paño 15** |  | 2027-06-02 | 2027-12-03 |  |  |  |  |  |  |
| A23040 |  | Prolongaciones Elec-Hidr-Hvac-Comu | 18d | 2027-06-02 | 2027-06-28 | A22990 | 8d | 0d | Dummy [0.05 h] | 0.05 | B00043 |
| A23050 |  | Mamposteria | 18d | 2027-06-29 | 2027-07-26 | A23040 | 8d | 0d | Dummy [0.05 h] | 0.05 | B00043 |
| A23060 |  | Superboard | 30d | 2027-07-27 | 2027-09-07 | A23050 | 8d | 0d | Dummy [0.05 h] | 0.05 | B00043 |
| A23070 |  | Pañetes | 30d | 2027-09-08 | 2027-10-20 | A23060 | 8d | 0d | Dummy [0.05 h] | 0.05 | B00043 |
| A23080 |  | Pintura | 30d | 2027-10-21 | 2027-12-03 | A23070 | 8d | 0d | Dummy [0.05 h] | 0.05 | B00043 |
|  | Paño 16 | **Paño 16** |  | 2027-06-29 | 2028-01-17 |  |  |  |  |  |  |
| A23090 |  | Prolongaciones Elec-Hidr-Hvac-Comu | 18d | 2027-06-29 | 2027-07-26 | A23040 | 42.7d | 0d | Dummy [0.05 h] | 0.05 | B00043 |
| A23100 |  | Mamposteria | 18d | 2027-07-27 | 2027-08-20 | A23090 | 66.7d | 0d | Dummy [0.05 h] | 0.05 | B00043 |
| A23110 |  | Superboard | 30d | 2027-08-23 | 2027-10-01 | A23100 | 66.7d | 0d | Dummy [0.05 h] | 0.05 | B00043 |
| A23120 |  | Pañetes | 30d | 2027-10-04 | 2027-11-17 | A23110 | 66.7d | 0d | Dummy [0.05 h] | 0.05 | B00043 |
| A23130 |  | Pintura | 30d | 2027-11-18 | 2028-01-17 | A23120 | 66.7d |  | Dummy [0.05 h] | 0.05 | B00043 |
|  | Paño 17 | **Paño 17** |  | 2027-07-27 | 2027-12-20 |  |  |  |  |  |  |
| A23150 |  | Mamposteria | 20d | 2027-07-27 | 2027-08-24 | A23090 | 42.7d | 0d | Dummy [0.05 h] | 0.05 | B00043 |
| A23170 |  | Pañetes | 30d | 2027-08-25 | 2027-10-05 | A23150 | 42.7d | 0d | Dummy [0.05 h] | 0.05 | B00043 |
| A23180 |  | Pintura | 50d | 2027-10-06 | 2027-12-20 | A23170 | 42.7d | 0d | Dummy [0.05 h] | 0.05 | B00043 |
|  | FACHADA TWO TOWER | **Fachada Two Tower** |  | 2026-10-30 | 2027-11-23 |  |  |  |  |  |  |
|  | Paño 1 | **Paño 1** |  | 2026-10-30 | 2027-02-24 |  |  |  |  |  |  |
| A23190 |  | Mamposteria | 12d | 2026-10-30 | 2026-11-18 | A1400 SS+70d | 60.7d | 0d | Dummy [0.05 h] | 0.05 | B00043 |
| A23200 |  | Pañetes | 27d | 2026-11-19 | 2027-01-14 | A23190 | 301.7d |  | Dummy [0.05 h] | 0.05 | B00043 |
| A23210 |  | Superboard | 28d | 2026-11-19 | 2027-01-15 | A23190 | 272.7d | 0d | Dummy [0.05 h] | 0.05 | B00043 |
| A23220 |  | Pintura | 28d | 2027-01-18 | 2027-02-24 | A23210 | 272.7d |  | Dummy [0.05 h] | 0.05 | B00043 |
|  | Paño 2 | **Paño 2** |  | 2026-11-19 | 2027-03-12 |  |  |  |  |  |  |
| A23230 |  | Mamposteria | 12d | 2026-11-19 | 2026-12-04 | A23190 | 60.7d | 0d | Dummy [0.05 h] | 0.05 | B00043 |
| A23240 |  | Pañetes | 27d | 2026-12-07 | 2027-02-01 | A23230 | 289.7d |  | Dummy [0.05 h] | 0.05 | B00043 |
| A23250 |  | Superboard | 28d | 2026-12-07 | 2027-02-02 | A23230 | 260.7d | 0d | Dummy [0.05 h] | 0.05 | B00043 |
| A23260 |  | Pintura | 28d | 2027-02-03 | 2027-03-12 | A23250 | 260.7d |  | Dummy [0.05 h] | 0.05 | B00043 |

| ID | WBS | Activity | Duration | Start | Finish | Predecessors | Total float | Free float | Resources | Cost | CBB_Obras |
| --- | --- | --- | --- | --- | --- | --- | --- | --- | --- | --- | --- |
|  | Paño 3 | **Paño 3** |  | 2026-12-07 | 2027-04-06 |  |  |  |  |  |  |
| A23270 |  | Mamposteria | 12d | 2026-12-07 | 2026-12-23 | A23230 | 60.7d | 0d | Dummy [0.05 h] | 0.05 | B00043 |
| A23280 |  | Pañetes | 27d | 2027-01-12 | 2027-02-17 | A23270 | 277.7d |  | Dummy [0.05 h] | 0.05 | B00043 |
| A23290 |  | Superboard | 28d | 2027-01-12 | 2027-02-18 | A23270 | 248.7d | 0d | Dummy [0.05 h] | 0.05 | B00043 |
| A23300 |  | Pintura | 28d | 2027-02-19 | 2027-04-06 | A23290 | 248.7d |  | Dummy [0.05 h] | 0.05 | B00043 |
|  | Paño 4 | **Paño 4** |  | 2027-01-12 | 2027-04-22 |  |  |  |  |  |  |
| A23310 |  | Mamposteria | 12d | 2027-01-12 | 2027-01-27 | A23270 | 60.7d | 0d | Dummy [0.05 h] | 0.05 | B00043 |
| A23320 |  | Pañetes | 27d | 2027-01-28 | 2027-03-05 | A23310 | 265.7d |  | Dummy [0.05 h] | 0.05 | B00043 |
| A23330 |  | Superboard | 28d | 2027-01-28 | 2027-03-08 | A23310 | 236.7d | 0d | Dummy [0.05 h] | 0.05 | B00043 |
| A23340 |  | Pintura | 28d | 2027-03-09 | 2027-04-22 | A23330 | 236.7d |  | Dummy [0.05 h] | 0.05 | B00043 |
|  | Paño 5 | **Paño 5** |  | 2027-01-28 | 2027-05-11 |  |  |  |  |  |  |
| A23350 |  | Mamposteria | 12d | 2027-01-28 | 2027-02-12 | A23310 | 60.7d | 0d | Dummy [0.05 h] | 0.05 | B00043 |
| A23360 |  | Pañetes | 27d | 2027-02-15 | 2027-03-30 | A23350 | 253.7d |  | Dummy [0.05 h] | 0.05 | B00043 |
| A23370 |  | Superboard | 28d | 2027-02-15 | 2027-03-31 | A23350 | 224.7d | 0d | Dummy [0.05 h] | 0.05 | B00043 |
| A23380 |  | Pintura | 28d | 2027-04-01 | 2027-05-11 | A23370 | 224.7d |  | Dummy [0.05 h] | 0.05 | B00043 |
|  | Paño 6 | **Paño 6** |  | 2027-02-15 | 2027-05-27 |  |  |  |  |  |  |
| A23390 |  | Mamposteria | 12d | 2027-02-15 | 2027-03-02 | A23350 | 60.7d | 0d | Dummy [0.05 h] | 0.05 | B00043 |
| A23400 |  | Pañetes | 27d | 2027-03-03 | 2027-04-15 | A23390 | 241.7d |  | Dummy [0.05 h] | 0.05 | B00043 |
| A23410 |  | Superboard | 28d | 2027-03-03 | 2027-04-16 | A23390 | 212.7d | 0d | Dummy [0.05 h] | 0.05 | B00043 |
| A23420 |  | Pintura | 28d | 2027-04-19 | 2027-05-27 | A23410 | 212.7d |  | Dummy [0.05 h] | 0.05 | B00043 |
|  | Paño 7 | **Paño 7** |  | 2027-03-03 | 2027-06-16 |  |  |  |  |  |  |
| A23430 |  | Mamposteria | 12d | 2027-03-03 | 2027-03-18 | A23390 | 60.7d | 0d | Dummy [0.05 h] | 0.05 | B00043 |
| A23440 |  | Pañetes | 27d | 2027-03-19 | 2027-05-03 | A23430 | 229.7d |  | Dummy [0.05 h] | 0.05 | B00043 |
| A23450 |  | Superboard | 28d | 2027-03-19 | 2027-05-04 | A23430 | 200.7d | 0d | Dummy [0.05 h] | 0.05 | B00043 |
| A23460 |  | Pintura | 28d | 2027-05-05 | 2027-06-16 | A23450 | 200.7d |  | Dummy [0.05 h] | 0.05 | B00043 |

| ID | WBS | Activity | Duration | Start | Finish | Predecessors | Total float | Free float | Resources | Cost | CBB_Obras |
| --- | --- | --- | --- | --- | --- | --- | --- | --- | --- | --- | --- |
|  | Paño 8 | **Paño 8** |  | 2027-03-19 | 2027-07-02 |  |  |  |  |  |  |
| A23470 |  | Mamposteria | 12d | 2027-03-19 | 2027-04-12 | A23430 | 60.7d | 0d | Dummy [0.05 h] | 0.05 | B00043 |
| A23480 |  | Pañetes | 27d | 2027-04-13 | 2027-05-20 | A23470 | 217.7d |  | Dummy [0.05 h] | 0.05 | B00043 |
| A23490 |  | Superboard | 28d | 2027-04-13 | 2027-05-21 | A23470 | 188.7d | 0d | Dummy [0.05 h] | 0.05 | B00043 |
| A23500 |  | Pintura | 28d | 2027-05-24 | 2027-07-02 | A23490 | 188.7d |  | Dummy [0.05 h] | 0.05 | B00043 |
|  | Paño 9 | **Paño 9** |  | 2027-04-13 | 2027-07-22 |  |  |  |  |  |  |
| A23510 |  | Mamposteria | 12d | 2027-04-13 | 2027-04-28 | A23470 | 60.7d | 0d | Dummy [0.05 h] | 0.05 | B00043 |
| A23520 |  | Pañetes | 27d | 2027-04-29 | 2027-06-09 | A23510 | 205.7d |  | Dummy [0.05 h] | 0.05 | B00043 |
| A23530 |  | Superboard | 28d | 2027-04-29 | 2027-06-10 | A23510 | 176.7d | 0d | Dummy [0.05 h] | 0.05 | B00043 |
| A23540 |  | Pintura | 28d | 2027-06-11 | 2027-07-22 | A23530 | 176.7d |  | Dummy [0.05 h] | 0.05 | B00043 |
|  | Paño 10 | **Paño 10** |  | 2027-04-29 | 2027-08-09 |  |  |  |  |  |  |
| A23550 |  | Mamposteria | 12d | 2027-04-29 | 2027-05-17 | A23510 | 60.7d | 0d | Dummy [0.05 h] | 0.05 | B00043 |
| A23560 |  | Pañetes | 27d | 2027-05-18 | 2027-06-25 | A23550 | 193.7d |  | Dummy [0.05 h] | 0.05 | B00043 |
| A23570 |  | Superboard | 28d | 2027-05-18 | 2027-06-28 | A23550 | 164.7d | 0d | Dummy [0.05 h] | 0.05 | B00043 |
| A23580 |  | Pintura | 28d | 2027-06-29 | 2027-08-09 | A23570 | 164.7d |  | Dummy [0.05 h] | 0.05 | B00043 |
|  | Paño 11 | **Paño 11** |  | 2027-05-18 | 2027-08-26 |  |  |  |  |  |  |
| A23590 |  | Mamposteria | 12d | 2027-05-18 | 2027-06-03 | A23550 | 60.7d | 0d | Dummy [0.05 h] | 0.05 | B00043 |
| A23600 |  | Pañetes | 27d | 2027-06-04 | 2027-07-14 | A23590 | 181.7d |  | Dummy [0.05 h] | 0.05 | B00043 |
| A23610 |  | Superboard | 28d | 2027-06-04 | 2027-07-15 | A23590 | 152.7d | 0d | Dummy [0.05 h] | 0.05 | B00043 |
| A23620 |  | Pintura | 28d | 2027-07-16 | 2027-08-26 | A23610 | 152.7d |  | Dummy [0.05 h] | 0.05 | B00043 |
|  | Paño 12 | **Paño 12** |  | 2027-06-04 | 2027-09-13 |  |  |  |  |  |  |
| A23630 |  | Mamposteria | 12d | 2027-06-04 | 2027-06-22 | A23590 | 60.7d | 0d | Dummy [0.05 h] | 0.05 | B00043 |
| A23640 |  | Pañetes | 27d | 2027-06-23 | 2027-08-02 | A23630 | 169.7d |  | Dummy [0.05 h] | 0.05 | B00043 |
| A23650 |  | Superboard | 28d | 2027-06-23 | 2027-08-03 | A23630 | 140.7d | 0d | Dummy [0.05 h] | 0.05 | B00043 |
| A23660 |  | Pintura | 28d | 2027-08-04 | 2027-09-13 | A23650 | 140.7d |  | Dummy [0.05 h] | 0.05 | B00043 |

| ID | WBS | Activity | Duration | Start | Finish | Predecessors | Complete | Remaining | Planned start | Planned finish | Total float | Free float | Constraint | Resources | Cost | Actual cost | CBB_Obras | Hito Inicio - Fin | Tipo 80-20 | CBB_Procesos | CBB_Etapas | CBB_Piso |
| --- | --- | --- | --- | --- | --- | --- | --- | --- | --- | --- | --- | --- | --- | --- | --- | --- | --- | --- | --- | --- | --- | --- |
|  | Paño 13 | **Paño 13** |  | 2027-06-23 | 2027-09-29 |  |  |  |  |  |  |  |  |  |  |  |  |  |  |  |  |  |
| A23670 |  | Mamposteria | 12d | 2027-06-23 | 2027-07-09 | A23630 |  |  |  |  | 60.7d | 0d |  | Dummy [0.05 h] | 0.05 |  | B00043 |  |  |  |  |  |
| A23680 |  | Pañetes | 27d | 2027-07-12 | 2027-08-19 | A23670 |  |  |  |  | 157.7d |  |  | Dummy [0.05 h] | 0.05 |  | B00043 |  |  |  |  |  |
| A23690 |  | Superboard | 28d | 2027-07-12 | 2027-08-20 | A23670 |  |  |  |  | 128.7d | 0d |  | Dummy [0.05 h] | 0.05 |  | B00043 |  |  |  |  |  |
| A23700 |  | Pintura | 28d | 2027-08-23 | 2027-09-29 | A23690 |  |  |  |  | 128.7d |  |  | Dummy [0.05 h] | 0.05 |  | B00043 |  |  |  |  |  |
|  | Paño 14 | **Paño 14** |  | 2027-07-12 | 2027-10-15 |  |  |  |  |  |  |  |  |  |  |  |  |  |  |  |  |  |
| A23710 |  | Mamposteria | 12d | 2027-07-12 | 2027-07-28 | A23670 |  |  |  |  | 60.7d | 0d |  | Dummy [0.05 h] | 0.05 |  | B00043 |  |  |  |  |  |
| A23720 |  | Pañetes | 27d | 2027-07-29 | 2027-09-06 | A23710 |  |  |  |  | 145.7d |  |  | Dummy [0.05 h] | 0.05 |  | B00043 |  |  |  |  |  |
| A23730 |  | Superboard | 28d | 2027-07-29 | 2027-09-07 | A23710 |  |  |  |  | 116.7d | 0d |  | Dummy [0.05 h] | 0.05 |  | B00043 |  |  |  |  |  |
| A23740 |  | Pintura | 28d | 2027-09-08 | 2027-10-15 | A23730 |  |  |  |  | 116.7d |  |  | Dummy [0.05 h] | 0.05 |  | B00043 |  |  |  |  |  |
|  | Paño 15 | **Paño 15** |  | 2027-07-29 | 2027-11-04 |  |  |  |  |  |  |  |  |  |  |  |  |  |  |  |  |  |
| A23750 |  | Mamposteria | 12d | 2027-07-29 | 2027-08-13 | A23710 |  |  |  |  | 60.7d | 0d |  | Dummy [0.05 h] | 0.05 |  | B00043 |  |  |  |  |  |
| A23760 |  | Pañetes | 27d | 2027-08-17 | 2027-09-22 | A23750 |  |  |  |  | 133.7d |  |  | Dummy [0.05 h] | 0.05 |  | B00043 |  |  |  |  |  |
| A23770 |  | Superboard | 28d | 2027-08-17 | 2027-09-23 | A23750 |  |  |  |  | 104.7d | 0d |  | Dummy [0.05 h] | 0.05 |  | B00043 |  |  |  |  |  |
| A23780 |  | Pintura | 28d | 2027-09-24 | 2027-11-04 | A23770 |  |  |  |  | 104.7d |  |  | Dummy [0.05 h] | 0.05 |  | B00043 |  |  |  |  |  |
|  | Paño 16 | **Paño 16** |  | 2027-08-17 | 2027-11-23 |  |  |  |  |  |  |  |  |  |  |  |  |  |  |  |  |  |
| A23790 |  | Mamposteria | 12d | 2027-08-17 | 2027-09-01 | A23750 |  |  |  |  | 60.7d | 0d |  | Dummy [0.05 h] | 0.05 |  | B00043 |  |  |  |  |  |
| A23800 |  | Pañetes | 27d | 2027-09-02 | 2027-10-08 | A23790 |  |  |  |  | 121.7d |  |  | Dummy [0.05 h] | 0.05 |  | B00043 |  |  |  |  |  |
| A23810 |  | Superboard | 28d | 2027-09-02 | 2027-10-11 | A23790 |  |  |  |  | 60.7d | 0d |  | Dummy [0.05 h] | 0.05 |  | B00043 |  |  |  |  |  |
| A23820 |  | Pintura | 28d | 2027-10-12 | 2027-11-23 | A23810 |  |  |  |  | 60.7d | 18d |  | Dummy [0.05 h] | 0.05 |  | B00043 |  |  |  |  |  |
|  | 11PFJ | **08. Punto Fijo** |  | 2026-04-28 | 2028-04-27 |  |  |  |  |  |  |  |  |  |  |  |  |  |  |  |  |  |
|  | 01PfjOG | **Punto Fijo Obra Gris** |  | 2026-04-28 | 2027-09-27 |  |  |  |  |  |  |  |  |  |  |  |  |  |  |  |  |  |
|  | P03 | **Piso 03** |  | 2026-05-18 | 2026-08-21 |  |  |  |  |  |  |  |  |  |  |  |  |  |  |  |  |  |
| A24090 |  | Descolg. Prolong. Inst. Electricas | 8d | 2026-05-18 A | 2026-05-26 A | A1550 SS | 100% |  | 2026-05-26 | 2026-06-05 |  |  |  | Dummy [0.01 h] | 0.01 | 0.01 | B00043 | N | N | Obr-Gri | 1 | 4 |
| A24100 |  | Descolg. Prolong. Inst. hidrosanitarias | 8d | 2026-05-18 A | 2026-07-21 | A24090 SS+4d | 100% | 0d | 2026-05-26 | 2026-06-05 | 1.62d | 0d |  | Dummy [0.01 h] | 0.01 | 0.01 | B00043 | N | N | Obr-Gri | 1 | 4 |
| A24110 |  | Descolg. Prolong. Inst. Comunicaciones | 8d | 2026-05-20 A | 2026-05-28 A | A24100 SS+4d | 100% |  | 2026-05-26 | 2026-06-05 |  |  |  | Dummy [0.01 h] | 0.01 | 0.01 | B00043 | N | N | Obr-Gri | 1 | 4 |
| A24120 |  | Descolg. Prolong. Inst. Sanitarias | 8d | 2026-05-26 A | 2026-07-28 | A24110 SS+4d | 29% | 5.68d | 2026-05-26 | 2026-06-05 | 1.62d | 0d |  | Dummy [0.01 h] | 0.01 | 0 | B00043 | N | N | Obr-Gri | 1 | 4 |
| A24130 |  | Descolg. Prolong. HVAC y gas | 8d | 2026-05-26 A | 2026-07-22 | A24120 SS+4d | 75% | 2d | 2026-05-26 | 2026-06-05 | 1.62d | 0d |  | Dummy [0.01 h] | 0.01 | 0.01 | B00043 | N | N | Obr-Gri | 1 | 4 |
| A24160 |  | Pañete Resanes | 12d | 2026-05-28 A | 2026-07-21 | A24150 FS-6d | 93% | 0.84d | 2026-05-28 | 2026-06-17 | -3.54d | 0d |  | Dummy [0.01 h] | 0.01 | 0.01 | B00043 |  |  |  |  |  |
| A24150 |  | Mamposteria | 12d | 2026-06-01 A | 2026-07-21 | A24140 FS-4d | 93% | 0.84d | 2026-06-01 | 2026-06-19 | 1.62d | 0d | start on or after 2026-04-25 | Dummy [0.01 h] | 0.01 | 0.01 | B00043 |  |  |  |  |  |
| A24140 |  | Descolg. Prolong. Inst. RCI | 8d | 2026-06-22 A | 2026-07-24 | A24130 SS+4d | 50% | 4d | 2026-07-13 | 2026-07-23 | 1.62d | 0d |  | Dummy [0.01 h] | 0.01 | 0 | B00043 | N | N |  |  |  |
| A24170 |  | Viga Condensadora | 10d | 2026-07-21 | 2026-08-03 | A24160 FS-6d |  |  |  |  | -8.7d | 0d |  | Dummy [0.03 h] | 0.03 |  | B00043 |  |  |  |  |  |
| A24180 |  | Dintel descolgado | 10d | 2026-07-28 | 2026-08-11 | A24170 FS-5d |  |  |  |  | -8.7d | 0d |  | Dummy [0.01 h] | 0.01 |  | B00043 |  |  |  |  |  |
| A24190 |  | Impermeabilizacion Corredor | 8d | 2026-08-04 | 2026-08-14 | A24180 FS-5d |  |  |  |  | -8.7d | 0d |  | Dummy [0.02 h] | 0.02 |  | B00043 |  |  |  |  |  |
| A24200 |  | Afinado de Pisos | 8d | 2026-08-11 | 2026-08-21 | A24190 FS-4d |  |  |  |  | -8.7d | 0d |  | Dummy [0.01 h] | 0.01 |  | B00043 |  |  |  |  |  |

| ID | WBS | Activity | Duration | Start | Finish | Predecessors | Complete | Remaining | Planned start | Planned finish | Total float | Free float | Resources | Cost | Actual cost | Tipo 80-20 | Hito Inicio - Fin | CBB_Piso | CBB_Obras | CBB_Etapas | CBB_Procesos |
| --- | --- | --- | --- | --- | --- | --- | --- | --- | --- | --- | --- | --- | --- | --- | --- | --- | --- | --- | --- | --- | --- |
|  | P04 | **Piso 04** |  | 2026-04-28 | 2027-04-13 |  |  |  |  |  |  |  |  |  |  |  |  |  |  |  |  |
| A24240 |  | Descolg. Prolong. Inst. Sanitarias | 8d | 2026-04-28 A | 2026-07-29 | A24230 SS+4d | 71% | 2.32d | 2026-07-16 | 2026-07-28 | 130.7d | 0d | Dummy [0.01 h] | 0.01 | 0.01 | N | N | 4 | B00043 | 1 | Obr-Gri |
| A24250 |  | Descolg. Prolong. HVAC y gas | 8d | 2026-06-02 A | 2026-07-30 | A24240 SS+4d | 50% | 4d | 2026-07-23 | 2026-08-04 | 130.7d | 0d | Dummy [0.01 h] | 0.01 | 0.01 | N | N | 4 | B00043 | 1 | Obr-Gri |
| A24280 |  | Pañete Resanes | 12d | 2026-06-11 A | 2026-07-29 | A24270 FS-6d | 70% | 3.6d | 2026-08-10 | 2026-08-27 | 388.26d | 0d | Dummy [0.01 h] | 0.01 | 0.01 |  |  |  | B00043 |  |  |
| A24230 |  | Descolg. Prolong. Inst. Comunicaciones | 8d | 2026-06-12 A | 2026-07-06 A | A24220 SS+4d | 100% |  | 2026-06-12 | 2026-06-25 |  |  | Dummy [0.01 h] | 0.01 | 0.01 | N | N | 4 | B00043 | 1 | Obr-Gri |
| A24220 |  | Descolg. Prolong. Inst. hidrosanitarias | 8d | 2026-06-24 A | 2026-07-27 | A24210 SS+4d | 100% | 0d | 2026-07-10 | 2026-07-23 | 130.7d | 0d | Dummy [0.01 h] | 0.01 | 0.01 | N | N | 4 | B00043 | 1 | Obr-Gri |
| A24290 |  | Viga Condensadora | 10d | 2026-07-21 | 2026-08-04 | A24280 FS-6d |  |  |  |  | 388.26d | 0d | Dummy [0.03 h] | 0.03 |  |  |  |  | B00043 |  |  |
| A24270 |  | Mamposteria | 12d | 2026-07-21 A | 2026-07-31 | A24260 FS-4d | 93% | 0.84d | 2026-07-21 | 2026-08-06 | 130.7d | 0d | Dummy [0.01 h] | 0.01 | 0.01 |  |  |  | B00043 |  |  |
| A24260 |  | Descolg. Prolong. Inst. RCI | 8d | 2026-07-27 | 2026-08-05 | A24250 SS+4d |  |  |  |  | 130.7d | 0d | Dummy [0.01 h] | 0.01 |  | N | N |  | B00043 |  |  |
| A24300 |  | Dintel descolgado | 10d | 2026-07-28 | 2026-08-12 | A24290 FS-5d |  |  |  |  | 388.26d | 0d | Dummy [0.01 h] | 0.01 |  |  |  |  | B00043 |  |  |
| A24310 |  | Impermeabilizacion Corredor | 8d | 2026-08-04 | 2026-08-18 | A24300 FS-5d |  |  |  |  | 388.26d | 0d | Dummy [0.02 h] | 0.02 |  |  |  |  | B00043 |  |  |
| A24320 |  | Afinado de Pisos | 8d | 2026-08-11 | 2026-08-24 | A24310 FS-4d |  |  |  |  | 388.26d |  | Dummy [0.01 h] | 0.01 |  |  |  |  | B00043 |  |  |
| A24210 |  | Descolg. Prolong. Inst. Electricas | 8d | 2027-04-13 A | 2027-04-13 A | A24150 SS | 100% |  | 2027-08-17 | 2027-08-26 |  |  | Dummy [0.01 h] | 0.01 | 0.01 | N | N | 4 | B00043 | 1 | Obr-Gri |
|  | P05 | **Piso 05** |  | 2026-05-21 | 2026-09-03 |  |  |  |  |  |  |  |  |  |  |  |  |  |  |  |  |
| A24480 |  | Pañete Resanes | 12d | 2026-05-21 A | 2026-08-11 | A24470 FS-6d | 68% | 3.84d | 2026-09-15 | 2026-10-01 | 380.02d | 0d | Dummy [0.01 h] | 0.01 | 0.01 |  |  |  | B00043 |  |  |
| A24450 |  | Descolg. Prolong. HVAC y gas | 8d | 2026-06-26 A | 2026-08-12 | A24440 SS+4d | 50% | 4d | 2026-08-28 | 2026-09-09 | 130.7d | 0d | Dummy [0.01 h] | 0.01 | 0.01 | N | N | 4 | B00043 | 1 | Obr-Gri |
| A24410 |  | Descolg. Prolong. Inst. Electricas | 8d | 2026-07-02 A | 2026-07-31 | A24270 SS | 100% | 0d | 2026-07-02 | 2026-07-14 | 130.7d | 0d | Dummy [0.01 h] | 0.01 | 0.01 | N | N | 4 | B00043 | 1 | Obr-Gri |
| A24420 |  | Descolg. Prolong. Inst. hidrosanitarias | 8d | 2026-07-03 A | 2026-08-12 | A24410 SS+4d | 8% | 7.36d | 2026-07-31 | 2026-08-13 | 130.7d | 0d | Dummy [0.01 h] | 0.01 | 0 | N | N | 4 | B00043 | 1 | Obr-Gri |
| A24430 |  | Descolg. Prolong. Inst. Comunicaciones | 8d | 2026-07-08 A | 2026-08-11 A | A24420 SS+4d | 100% |  | 2026-07-08 | 2026-07-21 |  |  | Dummy [0.01 h] | 0.01 | 0.01 | N | N | 4 | B00043 | 1 | Obr-Gri |
| A24440 |  | Descolg. Prolong. Inst. Sanitarias | 8d | 2026-07-31 | 2026-08-12 | A24430 SS+4d |  |  |  |  | 130.7d | 0d | Dummy [0.01 h] | 0.01 |  | N | N | 4 | B00043 | 1 | Obr-Gri |
| A24490 |  | Viga Condensadora | 10d | 2026-07-31 | 2026-08-18 | A24480 FS-6d |  |  |  |  | 380.02d | 0d | Dummy [0.03 h] | 0.03 |  |  |  |  | B00043 |  |  |
| A24460 |  | Descolg. Prolong. Inst. RCI | 8d | 2026-08-06 | 2026-08-19 | A24450 SS+4d |  |  |  |  | 130.7d | 0d | Dummy [0.01 h] | 0.01 |  | N | N |  | B00043 |  |  |
| A24500 |  | Dintel descolgado | 10d | 2026-08-10 | 2026-08-25 | A24490 FS-5d |  |  |  |  | 380.02d | 0d | Dummy [0.01 h] | 0.01 |  |  |  |  | B00043 |  |  |
| A24510 |  | Impermeabilizacion Corredor | 8d | 2026-08-18 | 2026-08-28 | A24500 FS-5d |  |  |  |  | 380.02d | 0d | Dummy [0.02 h] | 0.02 |  |  |  |  | B00043 |  |  |
| A24520 |  | Afinado de Pisos | 8d | 2026-08-24 | 2026-09-03 | A24510 FS-4d |  |  |  |  | 380.02d |  | Dummy [0.01 h] | 0.01 |  |  |  |  | B00043 |  |  |
| A24470 |  | Mamposteria | 12d | 2026-08-26 A | 2026-08-13 | A24460 FS-4d | 93% | 0.84d | 2026-08-26 | 2026-09-11 | 130.7d | 0d | Dummy [0.01 h] | 0.01 | 0.01 |  |  |  | B00043 |  |  |

| ID | WBS | Activity | Duration | Start | Finish | Predecessors | Complete | Remaining | Planned start | Planned finish | Total float | Free float | Resources | Cost | Actual cost | Tipo 80-20 | Hito Inicio - Fin | CBB_Piso | CBB_Obras | CBB_Procesos | CBB_Etapas |
| --- | --- | --- | --- | --- | --- | --- | --- | --- | --- | --- | --- | --- | --- | --- | --- | --- | --- | --- | --- | --- | --- |
|  | P06 | **Piso 06** |  | 2026-05-26 | 2026-10-16 |  |  |  |  |  |  |  |  |  |  |  |  |  |  |  |  |
| A24550 |  | Descolg. Prolong. Inst. Comunicaciones | 8d | 2026-05-26 A | 2026-08-20 | A24540 SS+4d | 100% | 0d | 2026-09-15 | 2026-09-25 | 130.7d | 0d | Dummy [0.01 h] | 0.01 | 0.01 | N | N | 4 | B00043 | Obr-Gri | 1 |
| A24530 |  | Descolg. Prolong. Inst. Electricas | 8d | 2026-06-09 A | 2026-08-13 | A24470 SS | 100% | 0d | 2026-06-09 | 2026-06-19 | 130.7d | 0d | Dummy [0.01 h] | 0.01 | 0.01 | N | N | 4 | B00043 | Obr-Gri | 1 |
| A24570 |  | Descolg. Prolong. HVAC y gas | 8d | 2026-07-03 A | 2026-08-31 | A24560 SS+4d | 50% | 4d | 2026-07-03 | 2026-07-15 | 130.7d | 0d | Dummy [0.01 h] | 0.01 | 0.01 | N | N | 4 | B00043 | Obr-Gri | 1 |
| A24540 |  | Descolg. Prolong. Inst. hidrosanitarias | 8d | 2026-08-13 | 2026-08-25 | A24530 SS+4d |  |  |  |  | 130.7d | 0d | Dummy [0.01 h] | 0.01 |  | N | N | 4 | B00043 | Obr-Gri | 1 |
| A24560 |  | Descolg. Prolong. Inst. Sanitarias | 8d | 2026-08-20 | 2026-08-31 | A24550 SS+4d |  |  |  |  | 130.7d | 0d | Dummy [0.01 h] | 0.01 |  | N | N | 4 | B00043 | Obr-Gri | 1 |
| A24580 |  | Descolg. Prolong. Inst. RCI | 8d | 2026-08-26 | 2026-09-04 | A24570 SS+4d |  |  |  |  | 130.7d | 0d | Dummy [0.01 h] | 0.01 |  | N | N |  | B00043 |  |  |
| A24590 |  | Mamposteria | 12d | 2026-08-28 | 2026-09-14 | A24580 FS-6d |  |  |  |  | 130.7d | 0d | Dummy [0.01 h] | 0.01 |  |  |  |  | B00043 |  |  |
| A24600 |  | Pañete Resanes | 12d | 2026-09-07 | 2026-09-22 | A24590 FS-6d |  |  |  |  | 349.7d | 0d | Dummy [0.01 h] | 0.01 |  |  |  |  | B00043 |  |  |
| A24610 |  | Viga Condensadora | 10d | 2026-09-16 | 2026-09-29 | A24600 FS-5d |  |  |  |  | 349.7d | 0d | Dummy [0.03 h] | 0.03 |  |  |  |  | B00043 |  |  |
| A24620 |  | Dintel descolgado | 10d | 2026-09-23 | 2026-10-06 | A24610 FS-5d |  |  |  |  | 349.7d | 0d | Dummy [0.01 h] | 0.01 |  |  |  |  | B00043 |  |  |
| A24630 |  | Impermeabilizacion Corredor | 8d | 2026-09-30 | 2026-10-09 | A24620 FS-5d |  |  |  |  | 349.7d | 0d | Dummy [0.02 h] | 0.02 |  |  |  |  | B00043 |  |  |
| A24640 |  | Afinado de Pisos | 8d | 2026-10-06 | 2026-10-16 | A24630 FS-4d |  |  |  |  | 349.7d |  | Dummy [0.01 h] | 0.01 |  |  |  |  | B00043 |  |  |
|  | P07 | **Piso 07** |  | 2026-06-24 | 2026-11-04 |  |  |  |  |  |  |  |  |  |  |  |  |  |  |  |  |
| A24650 |  | Descolg. Prolong. Inst. Electricas | 8d | 2026-06-24 A | 2026-08-28 | A24590 SS | 100% | 0d | 2026-10-05 | 2026-10-16 | 130.7d | 0d | Dummy [0.01 h] | 0.01 | 0.01 | N | N | 4 | B00043 | Obr-Gri | 1 |
| A24710 |  | Mamposteria | 12d | 2026-06-30 A | 2026-10-01 | A24700 FS-4d | 29% | 8.52d | 2026-11-10 | 2026-11-27 | 130.7d | 0d | Dummy [0.01 h] | 0.01 | 0 |  |  |  | B00043 |  |  |
| A24690 |  | Descolg. Prolong. HVAC y gas | 8d | 2026-07-10 A | 2026-09-18 | A24680 SS+4d | 50% | 4d | 2026-09-15 | 2026-09-24 | 130.7d | 0d | Dummy [0.01 h] | 0.01 | 0.01 | N | N | 4 | B00043 | Obr-Gri | 1 |
| A24660 |  | Descolg. Prolong. Inst. hidrosanitarias | 8d | 2026-08-28 | 2026-09-08 | A24650 SS+4d |  |  |  |  | 130.7d | 0d | Dummy [0.01 h] | 0.01 |  | N | N | 4 | B00043 | Obr-Gri | 1 |
| A24680 |  | Descolg. Prolong. Inst. Sanitarias | 8d | 2026-09-09 | 2026-09-18 | A24670 SS+4d |  |  |  |  | 130.7d | 0d | Dummy [0.01 h] | 0.01 |  | N | N | 4 | B00043 | Obr-Gri | 1 |
| A24700 |  | Descolg. Prolong. Inst. RCI | 8d | 2026-09-15 | 2026-09-24 | A24690 SS+4d |  |  |  |  | 130.7d | 0d | Dummy [0.01 h] | 0.01 |  | N | N |  | B00043 |  |  |
| A24720 |  | Pañete Resanes | 12d | 2026-09-23 | 2026-10-09 | A24710 FS-6d |  |  |  |  | 338.18d | 0d | Dummy [0.01 h] | 0.01 |  |  |  |  | B00043 |  |  |
| A24730 |  | Viga Condensadora | 10d | 2026-10-01 | 2026-10-16 | A24720 FS-6d |  |  |  |  | 338.18d | 0d | Dummy [0.03 h] | 0.03 |  |  |  |  | B00043 |  |  |
| A24740 |  | Dintel descolgado | 10d | 2026-10-08 | 2026-10-23 | A24730 FS-5d |  |  |  |  | 338.18d | 0d | Dummy [0.01 h] | 0.01 |  |  |  |  | B00043 |  |  |
| A24750 |  | Impermeabilizacion Corredor | 8d | 2026-10-16 | 2026-10-28 | A24740 FS-5d |  |  |  |  | 338.18d | 0d | Dummy [0.02 h] | 0.02 |  |  |  |  | B00043 |  |  |
| A24670 |  | Descolg. Prolong. Inst. Comunicaciones | 8d | 2026-10-16 A | 2026-09-03 | A24660 SS+4d | 100% | 0d | 2026-10-16 | 2026-10-28 | 130.7d | 0d | Dummy [0.01 h] | 0.01 | 0.01 | N | N | 4 | B00043 | Obr-Gri | 1 |
| A24760 |  | Afinado de Pisos | 8d | 2026-10-22 | 2026-11-04 | A24750 FS-4d |  |  |  |  | 338.18d |  | Dummy [0.01 h] | 0.01 |  |  |  |  | B00043 |  |  |

| ID | WBS | Activity | Duration | Start | Finish | Predecessors | Complete | Remaining | Planned start | Planned finish | Total float | Free float | Resources | Cost | Actual cost | Hito Inicio - Fin | Tipo 80-20 | CBB_Etapas | CBB_Obras | CBB_Procesos | CBB_Piso |
| --- | --- | --- | --- | --- | --- | --- | --- | --- | --- | --- | --- | --- | --- | --- | --- | --- | --- | --- | --- | --- | --- |
|  | P08 | **Piso 08** |  | 2026-06-29 | 2026-12-04 |  |  |  |  |  |  |  |  |  |  |  |  |  |  |  |  |
| A24770 |  | Descolg. Prolong. Inst. Electricas | 8d | 2026-06-29 A | 2026-09-21 | A24710 SS | 100% | 0d | 2026-11-10 | 2026-11-23 | 130.7d | 0d | Dummy [0.01 h] | 0.01 | 0.01 | N | N | 1 | B00043 | Obr-Gri | 4 |
| A24790 |  | Descolg. Prolong. Inst. Comunicaciones | 8d | 2026-07-10 A | 2026-09-25 | A24780 SS+4d | 100% | 0d | 2026-07-10 | 2026-07-22 | 130.7d | 0d | Dummy [0.01 h] | 0.01 | 0.01 | N | N | 1 | B00043 | Obr-Gri | 4 |
| A24780 |  | Descolg. Prolong. Inst. hidrosanitarias | 8d | 2026-09-21 | 2026-09-30 | A24770 SS+4d |  |  |  |  | 130.7d | 0d | Dummy [0.01 h] | 0.01 |  | N | N | 1 | B00043 | Obr-Gri | 4 |
| A24800 |  | Descolg. Prolong. Inst. Sanitarias | 8d | 2026-09-25 | 2026-10-06 | A24790 SS+4d |  |  |  |  | 130.7d | 0d | Dummy [0.01 h] | 0.01 |  | N | N | 1 | B00043 | Obr-Gri | 4 |
| A24810 |  | Descolg. Prolong. HVAC y gas | 8d | 2026-10-01 | 2026-10-13 | A24800 SS+4d |  |  |  |  | 130.7d | 0d | Dummy [0.01 h] | 0.01 |  | N | N | 1 | B00043 | Obr-Gri | 4 |
| A24820 |  | Descolg. Prolong. Inst. RCI | 8d | 2026-10-07 | 2026-10-19 | A24810 SS+4d |  |  |  |  | 130.7d | 0d | Dummy [0.01 h] | 0.01 |  | N | N |  | B00043 |  |  |
| A24830 |  | Mamposteria | 12d | 2026-10-14 | 2026-10-29 | A24820 FS-4d |  |  |  |  | 130.7d | 0d | Dummy [0.01 h] | 0.01 |  |  |  |  | B00043 |  |  |
| A24840 |  | Pañete Resanes | 12d | 2026-10-22 | 2026-11-09 | A24830 FS-6d |  |  |  |  | 316.7d | 0d | Dummy [0.01 h] | 0.01 |  |  |  |  | B00043 |  |  |
| A24850 |  | Viga Condensadora | 10d | 2026-11-03 | 2026-11-17 | A24840 FS-5d |  |  |  |  | 316.7d | 0d | Dummy [0.03 h] | 0.03 |  |  |  |  | B00043 |  |  |
| A24860 |  | Dintel descolgado | 10d | 2026-11-10 | 2026-11-24 | A24850 FS-5d |  |  |  |  | 316.7d | 0d | Dummy [0.01 h] | 0.01 |  |  |  |  | B00043 |  |  |
| A24870 |  | Impermeabilizacion Corredor | 8d | 2026-11-19 | 2026-11-30 | A24860 FS-4d |  |  |  |  | 316.7d | 0d | Dummy [0.02 h] | 0.02 |  |  |  |  | B00043 |  |  |
| A24880 |  | Afinado de Pisos | 8d | 2026-11-25 | 2026-12-04 | A24870 FS-4d |  |  |  |  | 316.7d |  | Dummy [0.01 h] | 0.01 |  |  |  |  | B00043 |  |  |
|  | P09 | **Piso 09** |  | 2026-06-30 | 2027-01-19 |  |  |  |  |  |  |  |  |  |  |  |  |  |  |  |  |
| A24890 |  | Descolg. Prolong. Inst. Electricas | 8d | 2026-06-30 A | 2026-10-23 | A24830 SS | 8% | 7.36d | 2026-11-12 | 2026-11-25 | 130.7d | 0d | Dummy [0.01 h] | 0.01 | 0 | N | N | 1 | B00043 | Obr-Gri | 4 |
| A24900 |  | Descolg. Prolong. Inst. hidrosanitarias | 8d | 2026-10-14 | 2026-10-23 | A24890 SS+4d |  |  |  |  | 130.7d | 0d | Dummy [0.01 h] | 0.01 |  | N | N | 1 | B00043 | Obr-Gri | 4 |
| A24910 |  | Descolg. Prolong. Inst. Comunicaciones | 8d | 2026-10-20 | 2026-10-29 | A24900 SS+4d |  |  |  |  | 130.7d | 0d | Dummy [0.01 h] | 0.01 |  | N | N | 1 | B00043 | Obr-Gri | 4 |
| A24920 |  | Descolg. Prolong. Inst. Sanitarias | 8d | 2026-10-26 | 2026-11-05 | A24910 SS+4d |  |  |  |  | 130.7d | 0d | Dummy [0.01 h] | 0.01 |  | N | N | 1 | B00043 | Obr-Gri | 4 |
| A24930 |  | Descolg. Prolong. HVAC y gas | 8d | 2026-10-30 | 2026-11-11 | A24920 SS+4d |  |  |  |  | 130.7d | 0d | Dummy [0.01 h] | 0.01 |  | N | N | 1 | B00043 | Obr-Gri | 4 |
| A24940 |  | Descolg. Prolong. Inst. RCI | 8d | 2026-11-06 | 2026-11-18 | A24930 SS+4d |  |  |  |  | 130.7d | 0d | Dummy [0.01 h] | 0.01 |  | N | N |  | B00043 |  |  |
| A24950 |  | Mamposteria | 12d | 2026-11-12 | 2026-11-30 | A24940 FS-4d |  |  |  |  | 130.7d | 0d | Dummy [0.01 h] | 0.01 |  |  |  |  | B00043 |  |  |
| A24960 |  | Pañete Resanes | 12d | 2026-11-23 | 2026-12-09 | A24950 FS-6d |  |  |  |  | 298.7d | 0d | Dummy [0.01 h] | 0.01 |  |  |  |  | B00043 |  |  |
| A24970 |  | Viga Condensadora | 10d | 2026-12-01 | 2026-12-15 | A24960 FS-6d |  |  |  |  | 298.7d | 0d | Dummy [0.03 h] | 0.03 |  |  |  |  | B00043 |  |  |
| A24980 |  | Dintel descolgado | 10d | 2026-12-09 | 2026-12-22 | A24970 FS-5d |  |  |  |  | 298.7d | 0d | Dummy [0.01 h] | 0.01 |  |  |  |  | B00043 |  |  |
| A24990 |  | Impermeabilizacion Corredor | 8d | 2026-12-16 | 2027-01-13 | A24980 FS-5d |  |  |  |  | 298.7d | 0d | Dummy [0.02 h] | 0.02 |  |  |  |  | B00043 |  |  |
| A25000 |  | Afinado de Pisos | 8d | 2026-12-22 | 2027-01-19 | A24990 FS-4d |  |  |  |  | 298.7d |  | Dummy [0.01 h] | 0.01 |  |  |  |  | B00043 |  |  |

| ID | WBS | Activity | Duration | Start | Finish | Predecessors | Total float | Free float | Resources | Cost | Hito Inicio - Fin | Tipo 80-20 | CBB_Obras | CBB_Etapas | CBB_Piso | CBB_Procesos |
| --- | --- | --- | --- | --- | --- | --- | --- | --- | --- | --- | --- | --- | --- | --- | --- | --- |
|  | P10 | **Piso 10** |  | 2026-11-12 | 2027-02-22 |  |  |  |  |  |  |  |  |  |  |  |
| A25010 |  | Descolg. Prolong. Inst. Electricas | 8d | 2026-11-12 | 2026-11-24 | A24950 SS | 130.7d | 0d | Dummy [0.01 h] | 0.01 | N | N | B00043 | 1 | 4 | Obr-Gri |
| A25020 |  | Descolg. Prolong. Inst. hidrosanitarias | 8d | 2026-11-19 | 2026-11-30 | A25010 SS+4d | 130.7d | 0d | Dummy [0.01 h] | 0.01 | N | N | B00043 | 1 | 4 | Obr-Gri |
| A25030 |  | Descolg. Prolong. Inst. Comunicaciones | 8d | 2026-11-25 | 2026-12-04 | A25020 SS+4d | 130.7d | 0d | Dummy [0.01 h] | 0.01 | N | N | B00043 | 1 | 4 | Obr-Gri |
| A25040 |  | Descolg. Prolong. Inst. Sanitarias | 8d | 2026-12-01 | 2026-12-11 | A25030 SS+4d | 130.7d | 0d | Dummy [0.01 h] | 0.01 | N | N | B00043 | 1 | 4 | Obr-Gri |
| A25050 |  | Descolg. Prolong. HVAC y gas | 8d | 2026-12-07 | 2026-12-17 | A25040 SS+4d | 130.7d | 0d | Dummy [0.01 h] | 0.01 | N | N | B00043 | 1 | 4 | Obr-Gri |
| A25060 |  | Descolg. Prolong. Inst. RCI | 8d | 2026-12-14 | 2026-12-23 | A25050 SS+4d | 130.7d | 0d | Dummy [0.01 h] | 0.01 | N | N | B00043 |  |  |  |
| A25070 |  | Mamposteria | 12d | 2026-12-18 | 2027-01-21 | A25060 FS-4d | 130.7d | 0d | Dummy [0.01 h] | 0.01 |  |  | B00043 |  |  |  |
| A25080 |  | Pañete Resanes | 12d | 2027-01-14 | 2027-01-29 | A25070 FS-6d | 274.7d | 0d | Dummy [0.01 h] | 0.01 |  |  | B00043 |  |  |  |
| A25090 |  | Viga Condensadora | 10d | 2027-01-22 | 2027-02-04 | A25080 FS-6d | 274.7d | 0d | Dummy [0.03 h] | 0.03 |  |  | B00043 |  |  |  |
| A25100 |  | Dintel descolgado | 10d | 2027-01-29 | 2027-02-11 | A25090 FS-5d | 274.7d | 0d | Dummy [0.01 h] | 0.01 |  |  | B00043 |  |  |  |
| A25110 |  | Impermeabilizacion Corredor | 8d | 2027-02-05 | 2027-02-16 | A25100 FS-5d | 274.7d | 0d | Dummy [0.02 h] | 0.02 |  |  | B00043 |  |  |  |
| A25120 |  | Afinado de Pisos | 8d | 2027-02-11 | 2027-02-22 | A25110 FS-4d | 274.7d |  | Dummy [0.01 h] | 0.01 |  |  | B00043 |  |  |  |
|  | P11 | **Piso 11** |  | 2026-12-18 | 2027-04-02 |  |  |  |  |  |  |  |  |  |  |  |
| A25130 |  | Descolg. Prolong. Inst. Electricas | 8d | 2026-12-18 | 2027-01-15 | A25070 SS | 130.7d | 0d | Dummy [0.01 h] | 0.01 | N | N | B00043 | 1 | 4 | Obr-Gri |
| A25140 |  | Descolg. Prolong. Inst. hidrosanitarias | 8d | 2027-01-12 | 2027-01-21 | A25130 SS+4d | 130.7d | 0d | Dummy [0.01 h] | 0.01 | N | N | B00043 | 1 | 4 | Obr-Gri |
| A25150 |  | Descolg. Prolong. Inst. Comunicaciones | 8d | 2027-01-18 | 2027-01-27 | A25140 SS+4d | 130.7d | 0d | Dummy [0.01 h] | 0.01 | N | N | B00043 | 1 | 4 | Obr-Gri |
| A25160 |  | Descolg. Prolong. Inst. Sanitarias | 8d | 2027-01-22 | 2027-02-02 | A25150 SS+4d | 130.7d | 0d | Dummy [0.01 h] | 0.01 | N | N | B00043 | 1 | 4 | Obr-Gri |
| A25170 |  | Descolg. Prolong. HVAC y gas | 8d | 2027-01-28 | 2027-02-08 | A25160 SS+4d | 130.7d | 0d | Dummy [0.01 h] | 0.01 | N | N | B00043 | 1 | 4 | Obr-Gri |
| A25180 |  | Descolg. Prolong. Inst. RCI | 8d | 2027-02-03 | 2027-02-12 | A25170 SS+4d | 130.7d | 0d | Dummy [0.01 h] | 0.01 | N | N | B00043 |  |  |  |
| A25190 |  | Mamposteria | 12d | 2027-02-09 | 2027-02-24 | A25180 FS-4d | 130.7d | 0d | Dummy [0.01 h] | 0.01 |  |  | B00043 |  |  |  |
| A25200 |  | Pañete Resanes | 12d | 2027-02-17 | 2027-03-04 | A25190 FS-6d | 250.7d | 0d | Dummy [0.01 h] | 0.01 |  |  | B00043 |  |  |  |
| A25210 |  | Viga Condensadora | 10d | 2027-02-25 | 2027-03-10 | A25200 FS-6d | 250.7d | 0d | Dummy [0.03 h] | 0.03 |  |  | B00043 |  |  |  |
| A25220 |  | Dintel descolgado | 10d | 2027-03-04 | 2027-03-17 | A25210 FS-5d | 250.7d | 0d | Dummy [0.01 h] | 0.01 |  |  | B00043 |  |  |  |
| A25230 |  | Impermeabilizacion Corredor | 8d | 2027-03-11 | 2027-03-29 | A25220 FS-5d | 250.7d | 0d | Dummy [0.02 h] | 0.02 |  |  | B00043 |  |  |  |
| A25240 |  | Afinado de Pisos | 8d | 2027-03-17 | 2027-04-02 | A25230 FS-4d | 250.7d |  | Dummy [0.01 h] | 0.01 |  |  | B00043 |  |  |  |

| ID | WBS | Activity | Duration | Start | Finish | Predecessors | Total float | Free float | Resources | Cost | Hito Inicio - Fin | Tipo 80-20 | CBB_Piso | CBB_Obras | CBB_Etapas | CBB_Procesos |
| --- | --- | --- | --- | --- | --- | --- | --- | --- | --- | --- | --- | --- | --- | --- | --- | --- |
|  | P12 | **Piso 12** |  | 2027-02-09 | 2027-05-06 |  |  |  |  |  |  |  |  |  |  |  |
| A25250 |  | Descolg. Prolong. Inst. Electricas | 8d | 2027-02-09 | 2027-02-18 | A25190 SS | 130.7d | 0d | Dummy [0.01 h] | 0.01 | N | N | 4 | B00043 | 1 | Obr-Gri |
| A25260 |  | Descolg. Prolong. Inst. hidrosanitarias | 8d | 2027-02-15 | 2027-02-24 | A25250 SS+4d | 130.7d | 0d | Dummy [0.01 h] | 0.01 | N | N | 4 | B00043 | 1 | Obr-Gri |
| A25270 |  | Descolg. Prolong. Inst. Comunicaciones | 8d | 2027-02-19 | 2027-03-02 | A25260 SS+4d | 130.7d | 0d | Dummy [0.01 h] | 0.01 | N | N | 4 | B00043 | 1 | Obr-Gri |
| A25280 |  | Descolg. Prolong. Inst. Sanitarias | 8d | 2027-02-25 | 2027-03-08 | A25270 SS+4d | 130.7d | 0d | Dummy [0.01 h] | 0.01 | N | N | 4 | B00043 | 1 | Obr-Gri |
| A25290 |  | Descolg. Prolong. HVAC y gas | 8d | 2027-03-03 | 2027-03-12 | A25280 SS+4d | 130.7d | 0d | Dummy [0.01 h] | 0.01 | N | N | 4 | B00043 | 1 | Obr-Gri |
| A25300 |  | Descolg. Prolong. Inst. RCI | 8d | 2027-03-09 | 2027-03-18 | A25290 SS+4d | 130.7d | 0d | Dummy [0.01 h] | 0.01 | N | N |  | B00043 |  |  |
| A25310 |  | Mamposteria | 12d | 2027-03-15 | 2027-04-06 | A25300 FS-4d | 130.7d | 0d | Dummy [0.01 h] | 0.01 |  |  |  | B00043 |  |  |
| A25320 |  | Pañete Resanes | 12d | 2027-03-30 | 2027-04-14 | A25310 FS-6d | 226.7d | 0d | Dummy [0.01 h] | 0.01 |  |  |  | B00043 |  |  |
| A25330 |  | Viga Condensadora | 10d | 2027-04-07 | 2027-04-20 | A25320 FS-6d | 226.7d | 0d | Dummy [0.03 h] | 0.03 |  |  |  | B00043 |  |  |
| A25340 |  | Dintel descolgado | 10d | 2027-04-14 | 2027-04-27 | A25330 FS-5d | 226.7d | 0d | Dummy [0.01 h] | 0.01 |  |  |  | B00043 |  |  |
| A25350 |  | Impermeabilizacion Corredor | 8d | 2027-04-21 | 2027-04-30 | A25340 FS-5d | 226.7d | 0d | Dummy [0.02 h] | 0.02 |  |  |  | B00043 |  |  |
| A25360 |  | Afinado de Pisos | 8d | 2027-04-27 | 2027-05-06 | A25350 FS-4d | 226.7d |  | Dummy [0.01 h] | 0.01 |  |  |  | B00043 |  |  |
|  | P13 | **Piso 13** |  | 2027-03-15 | 2027-06-14 |  |  |  |  |  |  |  |  |  |  |  |
| A25370 |  | Descolg. Prolong. Inst. Electricas | 8d | 2027-03-15 | 2027-03-31 | A25310 SS | 130.7d | 0d | Dummy [0.01 h] | 0.01 | N | N | 4 | B00043 | 1 | Obr-Gri |
| A25380 |  | Descolg. Prolong. Inst. hidrosanitarias | 8d | 2027-03-19 | 2027-04-06 | A25370 SS+4d | 130.7d | 0d | Dummy [0.01 h] | 0.01 | N | N | 4 | B00043 | 1 | Obr-Gri |
| A25390 |  | Descolg. Prolong. Inst. Comunicaciones | 8d | 2027-04-01 | 2027-04-12 | A25380 SS+4d | 130.7d | 0d | Dummy [0.01 h] | 0.01 | N | N | 4 | B00043 | 1 | Obr-Gri |
| A25400 |  | Descolg. Prolong. Inst. Sanitarias | 8d | 2027-04-07 | 2027-04-16 | A25390 SS+4d | 130.7d | 0d | Dummy [0.01 h] | 0.01 | N | N | 4 | B00043 | 1 | Obr-Gri |
| A25410 |  | Descolg. Prolong. HVAC y gas | 8d | 2027-04-13 | 2027-04-22 | A25400 SS+4d | 130.7d | 0d | Dummy [0.01 h] | 0.01 | N | N | 4 | B00043 | 1 | Obr-Gri |
| A25420 |  | Descolg. Prolong. Inst. RCI | 8d | 2027-04-19 | 2027-04-28 | A25410 SS+4d | 130.7d | 0d | Dummy [0.01 h] | 0.01 | N | N |  | B00043 |  |  |
| A25430 |  | Mamposteria | 12d | 2027-04-23 | 2027-05-11 | A25420 FS-4d | 130.7d | 0d | Dummy [0.01 h] | 0.01 |  |  |  | B00043 |  |  |
| A25440 |  | Pañete Resanes | 12d | 2027-05-03 | 2027-05-19 | A25430 FS-6d | 202.7d | 0d | Dummy [0.01 h] | 0.01 |  |  |  | B00043 |  |  |
| A25450 |  | Viga Condensadora | 10d | 2027-05-12 | 2027-05-25 | A25440 FS-6d | 202.7d | 0d | Dummy [0.03 h] | 0.03 |  |  |  | B00043 |  |  |
| A25460 |  | Dintel descolgado | 10d | 2027-05-19 | 2027-06-02 | A25450 FS-5d | 202.7d | 0d | Dummy [0.01 h] | 0.01 |  |  |  | B00043 |  |  |
| A25470 |  | Impermeabilizacion Corredor | 8d | 2027-05-26 | 2027-06-08 | A25460 FS-5d | 202.7d | 0d | Dummy [0.02 h] | 0.02 |  |  |  | B00043 |  |  |
| A25480 |  | Afinado de Pisos | 8d | 2027-06-02 | 2027-06-14 | A25470 FS-4d | 202.7d |  | Dummy [0.01 h] | 0.01 |  |  |  | B00043 |  |  |

| ID | WBS | Activity | Duration | Start | Finish | Predecessors | Total float | Free float | Resources | Cost | Tipo 80-20 | Hito Inicio - Fin | CBB_Piso | CBB_Obras | CBB_Etapas | CBB_Procesos |
| --- | --- | --- | --- | --- | --- | --- | --- | --- | --- | --- | --- | --- | --- | --- | --- | --- |
|  | P14 | **Piso 14** |  | 2027-04-23 | 2027-07-19 |  |  |  |  |  |  |  |  |  |  |  |
| A25490 |  | Descolg. Prolong. Inst. Electricas | 8d | 2027-04-23 | 2027-05-04 | A25430 SS | 130.7d | 0d | Dummy [0.01 h] | 0.01 | N | N | 4 | B00043 | 1 | Obr-Gri |
| A25500 |  | Descolg. Prolong. Inst. hidrosanitarias | 8d | 2027-04-29 | 2027-05-11 | A25490 SS+4d | 130.7d | 0d | Dummy [0.01 h] | 0.01 | N | N | 4 | B00043 | 1 | Obr-Gri |
| A25510 |  | Descolg. Prolong. Inst. Comunicaciones | 8d | 2027-05-05 | 2027-05-17 | A25500 SS+4d | 130.7d | 0d | Dummy [0.01 h] | 0.01 | N | N | 4 | B00043 | 1 | Obr-Gri |
| A25520 |  | Descolg. Prolong. Inst. Sanitarias | 8d | 2027-05-12 | 2027-05-21 | A25510 SS+4d | 130.7d | 0d | Dummy [0.01 h] | 0.01 | N | N | 4 | B00043 | 1 | Obr-Gri |
| A25530 |  | Descolg. Prolong. HVAC y gas | 8d | 2027-05-18 | 2027-05-27 | A25520 SS+4d | 130.7d | 0d | Dummy [0.01 h] | 0.01 | N | N | 4 | B00043 | 1 | Obr-Gri |
| A25540 |  | Descolg. Prolong. Inst. RCI | 8d | 2027-05-24 | 2027-06-03 | A25530 SS+4d | 130.7d | 0d | Dummy [0.01 h] | 0.01 | N | N |  | B00043 |  |  |
| A25550 |  | Mamposteria | 12d | 2027-05-28 | 2027-06-16 | A25540 FS-4d | 130.7d | 0d | Dummy [0.01 h] | 0.01 |  |  |  | B00043 |  |  |
| A25560 |  | Pañete Resanes | 12d | 2027-06-09 | 2027-06-24 | A25550 FS-6d | 178.7d | 0d | Dummy [0.01 h] | 0.01 |  |  |  | B00043 |  |  |
| A25570 |  | Viga Condensadora | 10d | 2027-06-17 | 2027-06-30 | A25560 FS-6d | 178.7d | 0d | Dummy [0.03 h] | 0.03 |  |  |  | B00043 |  |  |
| A25580 |  | Dintel descolgado | 10d | 2027-06-24 | 2027-07-08 | A25570 FS-5d | 178.7d | 0d | Dummy [0.01 h] | 0.01 |  |  |  | B00043 |  |  |
| A25590 |  | Impermeabilizacion Corredor | 8d | 2027-07-01 | 2027-07-13 | A25580 FS-5d | 178.7d | 0d | Dummy [0.02 h] | 0.02 |  |  |  | B00043 |  |  |
| A25600 |  | Afinado de Pisos | 8d | 2027-07-08 | 2027-07-19 | A25590 FS-4d | 178.7d |  | Dummy [0.01 h] | 0.01 |  |  |  | B00043 |  |  |
|  | P15 | **Piso 15** |  | 2027-05-28 | 2027-08-24 |  |  |  |  |  |  |  |  |  |  |  |
| A25610 |  | Descolg. Prolong. Inst. Electricas | 8d | 2027-05-28 | 2027-06-10 | A25550 SS | 130.7d | 0d | Dummy [0.01 h] | 0.01 | N | N | 4 | B00043 | 1 | Obr-Gri |
| A25620 |  | Descolg. Prolong. Inst. hidrosanitarias | 8d | 2027-06-04 | 2027-06-16 | A25610 SS+4d | 130.7d | 0d | Dummy [0.01 h] | 0.01 | N | N | 4 | B00043 | 1 | Obr-Gri |
| A25630 |  | Descolg. Prolong. Inst. Comunicaciones | 8d | 2027-06-11 | 2027-06-22 | A25620 SS+4d | 130.7d | 0d | Dummy [0.01 h] | 0.01 | N | N | 4 | B00043 | 1 | Obr-Gri |
| A25640 |  | Descolg. Prolong. Inst. Sanitarias | 8d | 2027-06-17 | 2027-06-28 | A25630 SS+4d | 130.7d | 0d | Dummy [0.01 h] | 0.01 | N | N | 4 | B00043 | 1 | Obr-Gri |
| A25650 |  | Descolg. Prolong. HVAC y gas | 8d | 2027-06-23 | 2027-07-02 | A25640 SS+4d | 130.7d | 0d | Dummy [0.01 h] | 0.01 | N | N | 4 | B00043 | 1 | Obr-Gri |
| A25660 |  | Descolg. Prolong. Inst. RCI | 8d | 2027-06-29 | 2027-07-09 | A25650 SS+4d | 130.7d | 0d | Dummy [0.01 h] | 0.01 | N | N |  | B00043 |  |  |
| A25670 |  | Mamposteria | 12d | 2027-07-06 | 2027-07-22 | A25660 FS-4d | 130.7d | 0d | Dummy [0.01 h] | 0.01 |  |  |  | B00043 |  |  |
| A25680 |  | Pañete Resanes | 12d | 2027-07-14 | 2027-07-30 | A25670 FS-6d | 154.7d | 0d | Dummy [0.01 h] | 0.01 |  |  |  | B00043 |  |  |
| A25690 |  | Viga Condensadora | 10d | 2027-07-23 | 2027-08-05 | A25680 FS-6d | 154.7d | 0d | Dummy [0.03 h] | 0.03 |  |  |  | B00043 |  |  |
| A25700 |  | Dintel descolgado | 10d | 2027-07-30 | 2027-08-12 | A25690 FS-5d | 154.7d | 0d | Dummy [0.01 h] | 0.01 |  |  |  | B00043 |  |  |
| A25710 |  | Impermeabilizacion Corredor | 8d | 2027-08-06 | 2027-08-18 | A25700 FS-5d | 154.7d | 0d | Dummy [0.02 h] | 0.02 |  |  |  | B00043 |  |  |
| A25720 |  | Afinado de Pisos | 8d | 2027-08-12 | 2027-08-24 | A25710 FS-4d | 154.7d |  | Dummy [0.01 h] | 0.01 |  |  |  | B00043 |  |  |

| ID | WBS | Activity | Duration | Start | Finish | Predecessors | Complete | Remaining | Planned start | Planned finish | Total float | Free float | Resources | Cost | Actual cost | Hito Inicio - Fin | Tipo 80-20 | CBB_Piso | CBB_Obras | CBB_Etapas | CBB_Procesos |
| --- | --- | --- | --- | --- | --- | --- | --- | --- | --- | --- | --- | --- | --- | --- | --- | --- | --- | --- | --- | --- | --- |
|  | P16 | **Piso 16** |  | 2027-07-06 | 2027-09-27 |  |  |  |  |  |  |  |  |  |  |  |  |  |  |  |  |
| A25730 |  | Descolg. Prolong. Inst. Electricas | 8d | 2027-07-06 | 2027-07-15 | A25670 SS |  |  |  |  | 130.7d | 0d | Dummy [0.01 h] | 0.01 |  | N | N | 4 | B00043 | 1 | Obr-Gri |
| A25740 |  | Descolg. Prolong. Inst. hidrosanitarias | 8d | 2027-07-12 | 2027-07-22 | A25730 SS+4d |  |  |  |  | 130.7d | 0d | Dummy [0.01 h] | 0.01 |  | N | N | 4 | B00043 | 1 | Obr-Gri |
| A25750 |  | Descolg. Prolong. Inst. Comunicaciones | 8d | 2027-07-16 | 2027-07-28 | A25740 SS+4d |  |  |  |  | 130.7d | 0d | Dummy [0.01 h] | 0.01 |  | N | N | 4 | B00043 | 1 | Obr-Gri |
| A25760 |  | Descolg. Prolong. Inst. Sanitarias | 8d | 2027-07-23 | 2027-08-03 | A25750 SS+4d |  |  |  |  | 130.7d | 0d | Dummy [0.01 h] | 0.01 |  | N | N | 4 | B00043 | 1 | Obr-Gri |
| A25770 |  | Descolg. Prolong. HVAC y gas | 8d | 2027-07-29 | 2027-08-09 | A25760 SS+4d |  |  |  |  | 130.7d | 0d | Dummy [0.01 h] | 0.01 |  | N | N | 4 | B00043 | 1 | Obr-Gri |
| A25780 |  | Descolg. Prolong. Inst. RCI | 8d | 2027-08-04 | 2027-08-13 | A25770 SS+4d |  |  |  |  | 130.7d | 0d | Dummy [0.01 h] | 0.01 |  | N | N |  | B00043 |  |  |
| A25790 |  | Mamposteria | 12d | 2027-08-10 | 2027-08-26 | A25780 FS-4d |  |  |  |  | 130.7d | 0d | Dummy [0.01 h] | 0.01 |  |  |  |  | B00043 |  |  |
| A25800 |  | Pañete Resanes | 12d | 2027-08-19 | 2027-09-03 | A25790 FS-6d |  |  |  |  | 130.7d | 0d | Dummy [0.01 h] | 0.01 |  |  |  |  | B00043 |  |  |
| A25810 |  | Viga Condensadora | 10d | 2027-08-27 | 2027-09-09 | A25800 FS-6d |  |  |  |  | 130.7d | 0d | Dummy [0.03 h] | 0.03 |  |  |  |  | B00043 |  |  |
| A25820 |  | Dintel descolgado | 10d | 2027-09-03 | 2027-09-16 | A25810 FS-5d |  |  |  |  | 130.7d | 0d | Dummy [0.01 h] | 0.01 |  |  |  |  | B00043 |  |  |
| A25830 |  | Impermeabilizacion Corredor | 8d | 2027-09-10 | 2027-09-21 | A25820 FS-5d |  |  |  |  | 130.7d | 0d | Dummy [0.02 h] | 0.02 |  |  |  |  | B00043 |  |  |
| A25840 |  | Afinado de Pisos | 8d | 2027-09-16 | 2027-09-27 | A25830 FS-4d |  |  |  |  | 130.7d |  | Dummy [0.01 h] | 0.01 |  |  |  |  | B00043 |  |  |
|  | 02PfjACA | **Punto Fijo Acabados** |  | 2026-06-30 | 2028-04-27 |  |  |  |  |  |  |  |  |  |  |  |  |  |  |  |  |
|  | P03 | **Piso 03** |  | 2026-06-30 | 2026-12-15 |  |  |  |  |  |  |  |  |  |  |  |  |  |  |  |  |
| A25910 |  | Inst cableado elec-com | 10d | 2026-06-30 A | 2026-10-26 | A25900 FS-3d | 58% | 4.2d | 2026-10-07 | 2026-10-21 | 220.1d | 0d | Dummy [0.01 h] | 0.01 | 0.01 |  |  |  | B00043 |  |  |
| A25850 |  | Estructura cielo rasos | 10d | 2026-07-10 A | 2026-09-08 | A11970 | 8% | 9.2d | 2026-08-26 | 2026-09-08 | -8.7d | 0d | Dummy [0.02 h] | 0.02 | 0 | N | N | 4 | B00043 | 1 | Obr-Gri |
| A25860 |  | Dinteles borde losa | 10d | 2026-07-10 A | 2026-09-14 | A25850 FS-5d | 5% | 9.5d | 2026-09-02 | 2026-09-15 | -8.7d | 0d | Dummy [0.02 h] | 0.02 | 0 | N | N | 4 | B00043 | 1 | Obr-Gri |
| A11970 |  | Estuco y primera mano | 10d | 2026-08-11 | 2026-08-25 | A24200 SS |  |  |  |  | -8.7d | 0d | Dummy [0.06 h] | 0.06 |  | N | N | 3 | B00043 | 1 | Esc-Est |
| A25870 |  | Inst lamina y pintura cielos rasos u muros | 10d | 2026-09-14 | 2026-09-28 | A25860 |  |  |  |  | 220.1d | 0d | Dummy [0.02 h] | 0.02 |  | N | N | 4 | B00043 | 1 | Obr-Gri |
| A25880 |  | Segunda mano | 10d | 2026-09-22 | 2026-10-06 | A25870 FS-4d |  |  |  |  | 220.1d | 0d | Dummy [0.02 h] | 0.02 |  | N | N | 4 | B00043 | 1 | Obr-Gri |
| A25890 |  | Ceramina y guarda escobas | 10d | 2026-09-29 | 2026-10-14 | A25880 FS-5d |  |  |  |  | 220.1d | 0d | Dummy [0.02 h] | 0.02 |  | N | N | 4 | B00043 | 1 | Obr-Gri |
| A25900 |  | Instalacion materas | 10d | 2026-10-08 | 2026-10-23 | A25890 FS-3d |  |  |  |  | 220.1d | 0d | Dummy [0.01 h] | 0.01 |  | N | N |  | B00043 |  |  |
| A25920 |  | Inst apa elec-com | 10d | 2026-10-21 | 2026-11-05 | A25910 FS-3d |  |  |  |  | 220.1d | 0d | Dummy [0.01 h] | 0.01 |  |  |  |  | B00043 |  |  |
| A25930 |  | Carpinteria metalica | 10d | 2026-11-05 | 2026-11-20 | A25920 |  |  |  |  | 220.1d | 0d | Dummy [0.03 h] | 0.03 |  |  |  |  | B00043 |  |  |
| A25940 |  | Tercera mano | 10d | 2026-11-05 | 2026-11-20 | A25930 FS-10d |  |  |  |  | 310.8d | 0d | Dummy [0.01 h] | 0.01 |  |  |  |  | B00043 |  |  |
| A25950 |  | Detallado PF | 10d | 2026-11-13 | 2026-11-30 | A25940 FS-4d |  |  |  |  | 310.8d | 0d | Dummy [0.03 h] | 0.03 |  |  |  |  | B00043 |  |  |
| A25960 |  | Aseo | 10d | 2026-11-30 | 2026-12-15 | A25950 |  |  |  |  | 310.8d |  | Dummy [0.02 h] | 0.02 |  |  |  |  | B00043 |  |  |

| ID | WBS | Activity | Duration | Start | Finish | Predecessors | Total float | Free float | Resources | Cost | Tipo 80-20 | Hito Inicio - Fin | CBB_Procesos | CBB_Etapas | CBB_Piso | CBB_Obras |
| --- | --- | --- | --- | --- | --- | --- | --- | --- | --- | --- | --- | --- | --- | --- | --- | --- |
|  | P04 | **Piso 04** |  | 2026-09-07 | 2027-03-11 |  |  |  |  |  |  |  |  |  |  |  |
| A25970 |  | Estuco y primera mano | 10d | 2026-09-07 | 2026-09-21 | A25860 FS-5d | -8.7d | 0d | Dummy [0.06 h] | 0.06 | N | N | Esc-Est | 1 | 3 | B00043 |
| A25980 |  | Estructura cielo rasos | 10d | 2026-09-21 | 2026-10-05 | A25970 | -8.7d | 0d | Dummy [0.02 h] | 0.02 | N | N | Obr-Gri | 1 | 4 | B00043 |
| A25990 |  | Dinteles borde losa | 10d | 2026-10-05 | 2026-10-20 | A25980 | -8.7d | 0d | Dummy [0.02 h] | 0.02 | N | N | Obr-Gri | 1 | 4 | B00043 |
| A26000 |  | Inst lamina y pintura cielos rasos u muros | 10d | 2026-10-20 | 2026-11-04 | A25990 | 262d | 0d | Dummy [0.02 h] | 0.02 | N | N | Obr-Gri | 1 | 4 | B00043 |
| A26010 |  | Segunda mano | 10d | 2026-11-04 | 2026-11-19 | A26000 | 262d | 0d | Dummy [0.02 h] | 0.02 | N | N | Obr-Gri | 1 | 4 | B00043 |
| A26020 |  | Ceramina y guarda escobas | 10d | 2026-11-19 | 2026-12-03 | A26010 | 262d | 0d | Dummy [0.02 h] | 0.02 | N | N | Obr-Gri | 1 | 4 | B00043 |
| A26030 |  | Instalacion materas | 10d | 2026-12-03 | 2026-12-18 | A26020 | 262d | 0d | Dummy [0.01 h] | 0.01 | N | N |  |  |  | B00043 |
| A26040 |  | Inst cableado elec-com | 10d | 2026-12-18 | 2027-01-20 | A26030 | 262d | 0d | Dummy [0.01 h] | 0.01 |  |  |  |  |  | B00043 |
| A26050 |  | Inst apa elec-com | 10d | 2027-01-20 | 2027-02-03 | A26040 | 262d | 0d | Dummy [0.01 h] | 0.01 |  |  |  |  |  | B00043 |
| A26060 |  | Carpinteria metalica | 10d | 2027-02-03 | 2027-02-17 | A26050 | 262d | 0d | Dummy [0.03 h] | 0.03 |  |  |  |  |  | B00043 |
| A26070 |  | Tercera mano | 10d | 2027-02-03 | 2027-02-17 | A26060 FS-10d | 262d | 0d | Dummy [0.01 h] | 0.01 |  |  |  |  |  | B00043 |
| A26080 |  | Detallado PF | 10d | 2027-02-11 | 2027-02-25 | A26070 FS-4d | 262d | 0d | Dummy [0.03 h] | 0.03 |  |  |  |  |  | B00043 |
| A26090 |  | Aseo | 10d | 2027-02-25 | 2027-03-11 | A26080 | 262d |  | Dummy [0.02 h] | 0.02 |  |  |  |  |  | B00043 |
|  | P05 | **Piso 05** |  | 2026-10-13 | 2027-04-22 |  |  |  |  |  |  |  |  |  |  |  |
| A26100 |  | Estuco y primera mano | 10d | 2026-10-13 | 2026-10-27 | A25990 FS-5d | -8.7d | 0d | Dummy [0.06 h] | 0.06 | N | N | Esc-Est | 1 | 3 | B00043 |
| A26110 |  | Estructura cielo rasos | 10d | 2026-10-27 | 2026-11-11 | A26100 | -8.7d | 0d | Dummy [0.02 h] | 0.02 | N | N | Obr-Gri | 1 | 4 | B00043 |
| A26120 |  | Dinteles borde losa | 10d | 2026-11-11 | 2026-11-26 | A26110 | -8.7d | 0d | Dummy [0.02 h] | 0.02 | N | N | Obr-Gri | 1 | 4 | B00043 |
| A26130 |  | Inst lamina y pintura cielos rasos u muros | 10d | 2026-11-26 | 2026-12-11 | A26120 | 118.3d | 0d | Dummy [0.02 h] | 0.02 | N | N | Obr-Gri | 1 | 4 | B00043 |
| A26140 |  | Segunda mano | 10d | 2026-12-11 | 2027-01-13 | A26130 | 118.3d | 0d | Dummy [0.02 h] | 0.02 | N | N | Obr-Gri | 1 | 4 | B00043 |
| A26150 |  | Ceramina y guarda escobas | 10d | 2027-01-13 | 2027-01-27 | A26140 | 118.3d | 0d | Dummy [0.02 h] | 0.02 | N | N | Obr-Gri | 1 | 4 | B00043 |
| A26160 |  | Instalacion materas | 10d | 2027-01-27 | 2027-02-10 | A26150 | 118.3d | 0d | Dummy [0.01 h] | 0.01 | N | N |  |  |  | B00043 |
| A26170 |  | Inst cableado elec-com | 10d | 2027-02-10 | 2027-02-24 | A26160 | 118.3d | 0d | Dummy [0.01 h] | 0.01 |  |  |  |  |  | B00043 |
| A26180 |  | Inst apa elec-com | 10d | 2027-02-24 | 2027-03-10 | A26170 | 118.3d | 0d | Dummy [0.01 h] | 0.01 |  |  |  |  |  | B00043 |
| A26190 |  | Carpinteria metalica | 10d | 2027-03-10 | 2027-03-31 | A26180 | 237d | 0d | Dummy [0.03 h] | 0.03 |  |  |  |  |  | B00043 |
| A26200 |  | Tercera mano | 10d | 2027-03-10 | 2027-03-31 | A26190 FS-10d | 237d | 0d | Dummy [0.01 h] | 0.01 |  |  |  |  |  | B00043 |
| A26210 |  | Detallado PF | 10d | 2027-03-18 | 2027-04-08 | A26200 FS-4d | 237d | 0d | Dummy [0.03 h] | 0.03 |  |  |  |  |  | B00043 |
| A26220 |  | Aseo | 10d | 2027-04-08 | 2027-04-22 | A26210 | 237d |  | Dummy [0.02 h] | 0.02 |  |  |  |  |  | B00043 |

| ID | WBS | Activity | Duration | Start | Finish | Predecessors | Total float | Free float | Resources | Cost | Hito Inicio - Fin | Tipo 80-20 | CBB_Etapas | CBB_Procesos | CBB_Obras | CBB_Piso |
| --- | --- | --- | --- | --- | --- | --- | --- | --- | --- | --- | --- | --- | --- | --- | --- | --- |
|  | P06 | **Piso 06** |  | 2026-11-19 | 2027-05-28 |  |  |  |  |  |  |  |  |  |  |  |
| A26230 |  | Estuco y primera mano | 10d | 2026-11-19 | 2026-12-03 | A26120 FS-5d | -8.7d | 0d | Dummy [0.06 h] | 0.06 | N | N | 1 | Esc-Est | B00043 | 3 |
| A26240 |  | Estructura cielo rasos | 10d | 2026-12-03 | 2026-12-18 | A26230 | -8.7d | 0d | Dummy [0.02 h] | 0.02 | N | N | 1 | Obr-Gri | B00043 | 4 |
| A26250 |  | Dinteles borde losa | 10d | 2026-12-18 | 2027-01-20 | A26240 | -8.7d | 0d | Dummy [0.02 h] | 0.02 | N | N | 1 | Obr-Gri | B00043 | 4 |
| A26260 |  | Inst lamina y pintura cielos rasos u muros | 10d | 2027-01-20 | 2027-02-03 | A26250 | 125.3d | 0d | Dummy [0.02 h] | 0.02 | N | N | 1 | Obr-Gri | B00043 | 4 |
| A26270 |  | Segunda mano | 10d | 2027-02-03 | 2027-02-17 | A26260 | 125.3d | 0d | Dummy [0.02 h] | 0.02 | N | N | 1 | Obr-Gri | B00043 | 4 |
| A26280 |  | Ceramina y guarda escobas | 10d | 2027-02-17 | 2027-03-03 | A26270 | 125.3d | 0d | Dummy [0.02 h] | 0.02 | N | N | 1 | Obr-Gri | B00043 | 4 |
| A26290 |  | Instalacion materas | 10d | 2027-03-03 | 2027-03-17 | A26280 | 125.3d | 0d | Dummy [0.01 h] | 0.01 | N | N |  |  | B00043 |  |
| A26300 |  | Inst cableado elec-com | 10d | 2027-03-17 | 2027-04-07 | A26290 | 125.3d | 0d | Dummy [0.01 h] | 0.01 |  |  |  |  | B00043 |  |
| A26310 |  | Inst apa elec-com | 10d | 2027-04-07 | 2027-04-21 | A26300 | 125.3d | 0d | Dummy [0.01 h] | 0.01 |  |  |  |  | B00043 |  |
| A26320 |  | Carpinteria metalica | 10d | 2027-04-21 | 2027-05-05 | A26310 | 125.3d | 0d | Dummy [0.03 h] | 0.03 |  |  |  |  | B00043 |  |
| A26330 |  | Tercera mano | 10d | 2027-04-21 | 2027-05-05 | A26320 FS-10d | 125.3d | 0d | Dummy [0.01 h] | 0.01 |  |  |  |  | B00043 |  |
| A26340 |  | Detallado PF | 10d | 2027-04-29 | 2027-05-14 | A26330 FS-4d | 125.3d | 0d | Dummy [0.03 h] | 0.03 |  |  |  |  | B00043 |  |
| A26350 |  | Aseo | 10d | 2027-05-14 | 2027-05-28 | A26340 | 212d |  | Dummy [0.02 h] | 0.02 |  |  |  |  | B00043 |  |
|  | P07 | **Piso 07** |  | 2027-01-13 | 2027-07-07 |  |  |  |  |  |  |  |  |  |  |  |
| A26360 |  | Estuco y primera mano | 10d | 2027-01-13 | 2027-01-27 | A26250 FS-5d | -8.7d | 0d | Dummy [0.06 h] | 0.06 | N | N | 1 | Esc-Est | B00043 | 3 |
| A26370 |  | Estructura cielo rasos | 10d | 2027-01-27 | 2027-02-10 | A26360 | -8.7d | 0d | Dummy [0.02 h] | 0.02 | N | N | 1 | Obr-Gri | B00043 | 4 |
| A26380 |  | Dinteles borde losa | 10d | 2027-02-10 | 2027-02-24 | A26370 | -8.7d | 0d | Dummy [0.02 h] | 0.02 | N | N | 1 | Obr-Gri | B00043 | 4 |
| A26390 |  | Inst lamina y pintura cielos rasos u muros | 10d | 2027-02-24 | 2027-03-10 | A26380 | 187d | 0d | Dummy [0.02 h] | 0.02 | N | N | 1 | Obr-Gri | B00043 | 4 |
| A26400 |  | Segunda mano | 10d | 2027-03-10 | 2027-03-31 | A26390 | 187d | 0d | Dummy [0.02 h] | 0.02 | N | N | 1 | Obr-Gri | B00043 | 4 |
| A26410 |  | Ceramina y guarda escobas | 10d | 2027-03-31 | 2027-04-14 | A26400 | 187d | 0d | Dummy [0.02 h] | 0.02 | N | N | 1 | Obr-Gri | B00043 | 4 |
| A26420 |  | Instalacion materas | 10d | 2027-04-14 | 2027-04-28 | A26410 | 187d | 0d | Dummy [0.01 h] | 0.01 | N | N |  |  | B00043 |  |
| A26430 |  | Inst cableado elec-com | 10d | 2027-04-28 | 2027-05-13 | A26420 | 187d | 0d | Dummy [0.01 h] | 0.01 |  |  |  |  | B00043 |  |
| A26440 |  | Inst apa elec-com | 10d | 2027-05-13 | 2027-05-27 | A26430 | 187d | 0d | Dummy [0.01 h] | 0.01 |  |  |  |  | B00043 |  |
| A26450 |  | Carpinteria metalica | 10d | 2027-05-27 | 2027-06-14 | A26440 | 187d | 0d | Dummy [0.03 h] | 0.03 |  |  |  |  | B00043 |  |
| A26460 |  | Tercera mano | 10d | 2027-05-27 | 2027-06-14 | A26450 FS-10d | 187d | 0d | Dummy [0.01 h] | 0.01 |  |  |  |  | B00043 |  |
| A26470 |  | Detallado PF | 10d | 2027-06-08 | 2027-06-22 | A26460 FS-4d | 187d | 0d | Dummy [0.03 h] | 0.03 |  |  |  |  | B00043 |  |
| A26480 |  | Aseo | 10d | 2027-06-22 | 2027-07-07 | A26470 | 187d |  | Dummy [0.02 h] | 0.02 |  |  |  |  | B00043 |  |

| ID | WBS | Activity | Duration | Start | Finish | Predecessors | Total float | Free float | Resources | Cost | Tipo 80-20 | Hito Inicio - Fin | CBB_Piso | CBB_Obras | CBB_Procesos | CBB_Etapas |
| --- | --- | --- | --- | --- | --- | --- | --- | --- | --- | --- | --- | --- | --- | --- | --- | --- |
|  | P08 | **Piso 08** |  | 2027-02-17 | 2027-08-12 |  |  |  |  |  |  |  |  |  |  |  |
| A26490 |  | Estuco y primera mano | 10d | 2027-02-17 | 2027-03-03 | A26380 FS-5d | -8.7d | 0d | Dummy [0.06 h] | 0.06 | N | N | 3 | B00043 | Esc-Est | 1 |
| A26500 |  | Estructura cielo rasos | 10d | 2027-03-03 | 2027-03-17 | A26490 | -8.7d | 0d | Dummy [0.02 h] | 0.02 | N | N | 4 | B00043 | Obr-Gri | 1 |
| A26510 |  | Dinteles borde losa | 10d | 2027-03-17 | 2027-04-07 | A26500 | -8.7d | 0d | Dummy [0.02 h] | 0.02 | N | N | 4 | B00043 | Obr-Gri | 1 |
| A26520 |  | Inst lamina y pintura cielos rasos u muros | 10d | 2027-04-07 | 2027-04-21 | A26510 | 162d | 0d | Dummy [0.02 h] | 0.02 | N | N | 4 | B00043 | Obr-Gri | 1 |
| A26530 |  | Segunda mano | 10d | 2027-04-21 | 2027-05-05 | A26520 | 162d | 0d | Dummy [0.02 h] | 0.02 | N | N | 4 | B00043 | Obr-Gri | 1 |
| A26540 |  | Ceramina y guarda escobas | 10d | 2027-05-05 | 2027-05-20 | A26530 | 162d | 0d | Dummy [0.02 h] | 0.02 | N | N | 4 | B00043 | Obr-Gri | 1 |
| A26550 |  | Instalacion materas | 10d | 2027-05-20 | 2027-06-04 | A26540 | 162d | 0d | Dummy [0.01 h] | 0.01 | N | N |  | B00043 |  |  |
| A26560 |  | Inst cableado elec-com | 10d | 2027-06-04 | 2027-06-21 | A26550 | 162d | 0d | Dummy [0.01 h] | 0.01 |  |  |  | B00043 |  |  |
| A26570 |  | Inst apa elec-com | 10d | 2027-06-21 | 2027-07-06 | A26560 | 162d | 0d | Dummy [0.01 h] | 0.01 |  |  |  | B00043 |  |  |
| A26580 |  | Carpinteria metalica | 10d | 2027-07-06 | 2027-07-21 | A26570 | 162d | 0d | Dummy [0.03 h] | 0.03 |  |  |  | B00043 |  |  |
| A26590 |  | Tercera mano | 10d | 2027-07-06 | 2027-07-21 | A26580 FS-10d | 162d | 0d | Dummy [0.01 h] | 0.01 |  |  |  | B00043 |  |  |
| A26600 |  | Detallado PF | 10d | 2027-07-14 | 2027-07-29 | A26590 FS-4d | 162d | 0d | Dummy [0.03 h] | 0.03 |  |  |  | B00043 |  |  |
| A26610 |  | Aseo | 10d | 2027-07-29 | 2027-08-12 | A26600 | 162d |  | Dummy [0.02 h] | 0.02 |  |  |  | B00043 |  |  |
|  | P09 | **Piso 09** |  | 2027-03-31 | 2027-09-17 |  |  |  |  |  |  |  |  |  |  |  |
| A26620 |  | Estuco y primera mano | 10d | 2027-03-31 | 2027-04-14 | A26510 FS-5d | -8.7d | 0d | Dummy [0.06 h] | 0.06 | N | N | 3 | B00043 | Esc-Est | 1 |
| A26630 |  | Estructura cielo rasos | 10d | 2027-04-14 | 2027-04-28 | A26620 | -8.7d | 0d | Dummy [0.02 h] | 0.02 | N | N | 4 | B00043 | Obr-Gri | 1 |
| A26640 |  | Dinteles borde losa | 10d | 2027-04-28 | 2027-05-13 | A26630 | -8.7d | 0d | Dummy [0.02 h] | 0.02 | N | N | 4 | B00043 | Obr-Gri | 1 |
| A26650 |  | Inst lamina y pintura cielos rasos u muros | 10d | 2027-05-13 | 2027-05-27 | A26640 | 56.3d | 0d | Dummy [0.02 h] | 0.02 | N | N | 4 | B00043 | Obr-Gri | 1 |
| A26660 |  | Segunda mano | 10d | 2027-05-27 | 2027-06-14 | A26650 | 56.3d | 0d | Dummy [0.02 h] | 0.02 | N | N | 4 | B00043 | Obr-Gri | 1 |
| A26670 |  | Ceramina y guarda escobas | 10d | 2027-06-14 | 2027-06-28 | A26660 | 56.3d | 0d | Dummy [0.02 h] | 0.02 | N | N | 4 | B00043 | Obr-Gri | 1 |
| A26680 |  | Instalacion materas | 10d | 2027-06-28 | 2027-07-13 | A26670 | 56.3d | 0d | Dummy [0.01 h] | 0.01 | N | N |  | B00043 |  |  |
| A26690 |  | Inst cableado elec-com | 10d | 2027-07-13 | 2027-07-28 | A26680 | 56.3d | 0d | Dummy [0.01 h] | 0.01 |  |  |  | B00043 |  |  |
| A26700 |  | Inst apa elec-com | 10d | 2027-07-28 | 2027-08-11 | A26690 | 56.3d | 0d | Dummy [0.01 h] | 0.01 |  |  |  | B00043 |  |  |
| A26710 |  | Carpinteria metalica | 10d | 2027-08-11 | 2027-08-26 | A26700 | 56.3d | 0d | Dummy [0.03 h] | 0.03 |  |  |  | B00043 |  |  |
| A26720 |  | Tercera mano | 10d | 2027-08-11 | 2027-08-26 | A26710 FS-10d | 137d | 0d | Dummy [0.01 h] | 0.01 |  |  |  | B00043 |  |  |
| A26730 |  | Detallado PF | 10d | 2027-08-20 | 2027-09-03 | A26720 FS-4d | 137d | 0d | Dummy [0.03 h] | 0.03 |  |  |  | B00043 |  |  |
| A26740 |  | Aseo | 10d | 2027-09-03 | 2027-09-17 | A26730 | 137d |  | Dummy [0.02 h] | 0.02 |  |  |  | B00043 |  |  |

| ID | WBS | Activity | Duration | Start | Finish | Predecessors | Total float | Free float | Resources | Cost | Hito Inicio - Fin | Tipo 80-20 | CBB_Procesos | CBB_Obras | CBB_Piso | CBB_Etapas |
| --- | --- | --- | --- | --- | --- | --- | --- | --- | --- | --- | --- | --- | --- | --- | --- | --- |
|  | P10 | **Piso 10** |  | 2027-05-05 | 2027-10-25 |  |  |  |  |  |  |  |  |  |  |  |
| A26750 |  | Estuco y primera mano | 10d | 2027-05-05 | 2027-05-20 | A26640 FS-5d | -8.7d | 0d | Dummy [0.06 h] | 0.06 | N | N | Esc-Est | B00043 | 3 | 1 |
| A26760 |  | Estructura cielo rasos | 10d | 2027-05-20 | 2027-06-04 | A26750 | -8.7d | 0d | Dummy [0.02 h] | 0.02 | N | N | Obr-Gri | B00043 | 4 | 1 |
| A26770 |  | Dinteles borde losa | 10d | 2027-06-04 | 2027-06-21 | A26760 | -8.7d | 0d | Dummy [0.02 h] | 0.02 | N | N | Obr-Gri | B00043 | 4 | 1 |
| A26780 |  | Inst lamina y pintura cielos rasos u muros | 10d | 2027-06-21 | 2027-07-06 | A26770 | 112d | 0d | Dummy [0.02 h] | 0.02 | N | N | Obr-Gri | B00043 | 4 | 1 |
| A26790 |  | Segunda mano | 10d | 2027-07-06 | 2027-07-21 | A26780 | 112d | 0d | Dummy [0.02 h] | 0.02 | N | N | Obr-Gri | B00043 | 4 | 1 |
| A26800 |  | Ceramina y guarda escobas | 10d | 2027-07-21 | 2027-08-04 | A26790 | 112d | 0d | Dummy [0.02 h] | 0.02 | N | N | Obr-Gri | B00043 | 4 | 1 |
| A26810 |  | Instalacion materas | 10d | 2027-08-04 | 2027-08-19 | A26800 | 112d | 0d | Dummy [0.01 h] | 0.01 | N | N |  | B00043 |  |  |
| A26820 |  | Inst cableado elec-com | 10d | 2027-08-19 | 2027-09-02 | A26810 | 112d | 0d | Dummy [0.01 h] | 0.01 |  |  |  | B00043 |  |  |
| A26830 |  | Inst apa elec-com | 10d | 2027-09-02 | 2027-09-16 | A26820 | 112d | 0d | Dummy [0.01 h] | 0.01 |  |  |  | B00043 |  |  |
| A26840 |  | Carpinteria metalica | 10d | 2027-09-16 | 2027-09-30 | A26830 | 112d | 0d | Dummy [0.03 h] | 0.03 |  |  |  | B00043 |  |  |
| A26850 |  | Tercera mano | 10d | 2027-09-16 | 2027-09-30 | A26840 FS-10d | 112d | 0d | Dummy [0.01 h] | 0.01 |  |  |  | B00043 |  |  |
| A26860 |  | Detallado PF | 10d | 2027-09-24 | 2027-10-08 | A26850 FS-4d | 112d | 0d | Dummy [0.03 h] | 0.03 |  |  |  | B00043 |  |  |
| A26870 |  | Aseo | 10d | 2027-10-08 | 2027-10-25 | A26860 | 112d |  | Dummy [0.02 h] | 0.02 |  |  |  | B00043 |  |  |
|  | P11 | **Piso 11** |  | 2027-06-14 | 2027-12-01 |  |  |  |  |  |  |  |  |  |  |  |
| A26880 |  | Estuco y primera mano | 10d | 2027-06-14 | 2027-06-28 | A26770 FS-5d | -8.7d | 0d | Dummy [0.06 h] | 0.06 | N | N | Esc-Est | B00043 | 3 | 1 |
| A26890 |  | Estructura cielo rasos | 10d | 2027-06-28 | 2027-07-13 | A26880 | -8.7d | 0d | Dummy [0.02 h] | 0.02 | N | N | Obr-Gri | B00043 | 4 | 1 |
| A26900 |  | Dinteles borde losa | 10d | 2027-07-13 | 2027-07-28 | A26890 | -8.7d | 0d | Dummy [0.02 h] | 0.02 | N | N | Obr-Gri | B00043 | 4 | 1 |
| A26910 |  | Inst lamina y pintura cielos rasos u muros | 10d | 2027-07-28 | 2027-08-11 | A26900 | 87d | 0d | Dummy [0.02 h] | 0.02 | N | N | Obr-Gri | B00043 | 4 | 1 |
| A26920 |  | Segunda mano | 10d | 2027-08-11 | 2027-08-26 | A26910 | 87d | 0d | Dummy [0.02 h] | 0.02 | N | N | Obr-Gri | B00043 | 4 | 1 |
| A26930 |  | Ceramina y guarda escobas | 10d | 2027-08-26 | 2027-09-09 | A26920 | 87d | 0d | Dummy [0.02 h] | 0.02 | N | N | Obr-Gri | B00043 | 4 | 1 |
| A26940 |  | Instalacion materas | 10d | 2027-09-09 | 2027-09-23 | A26930 | 87d | 0d | Dummy [0.01 h] | 0.01 | N | N |  | B00043 |  |  |
| A26950 |  | Inst cableado elec-com | 10d | 2027-09-23 | 2027-10-07 | A26940 | 87d | 0d | Dummy [0.01 h] | 0.01 |  |  |  | B00043 |  |  |
| A26960 |  | Inst apa elec-com | 10d | 2027-10-07 | 2027-10-22 | A26950 | 87d | 0d | Dummy [0.01 h] | 0.01 |  |  |  | B00043 |  |  |
| A26970 |  | Carpinteria metalica | 10d | 2027-10-22 | 2027-11-08 | A26960 | 87d | 0d | Dummy [0.03 h] | 0.03 |  |  |  | B00043 |  |  |
| A26980 |  | Tercera mano | 10d | 2027-10-22 | 2027-11-08 | A26970 FS-10d | 87d | 0d | Dummy [0.01 h] | 0.01 |  |  |  | B00043 |  |  |
| A26990 |  | Detallado PF | 10d | 2027-11-02 | 2027-11-17 | A26980 FS-4d | 87d | 0d | Dummy [0.03 h] | 0.03 |  |  |  | B00043 |  |  |
| A27000 |  | Aseo | 10d | 2027-11-17 | 2027-12-01 | A26990 | 87d |  | Dummy [0.02 h] | 0.02 |  |  |  | B00043 |  |  |

| ID | WBS | Activity | Duration | Start | Finish | Predecessors | Total float | Free float | Resources | Cost | Tipo 80-20 | Hito Inicio - Fin | CBB_Procesos | CBB_Obras | CBB_Etapas | CBB_Piso |
| --- | --- | --- | --- | --- | --- | --- | --- | --- | --- | --- | --- | --- | --- | --- | --- | --- |
|  | P12 | **Piso 12** |  | 2027-07-21 | 2028-01-24 |  |  |  |  |  |  |  |  |  |  |  |
| A27010 |  | Estuco y primera mano | 10d | 2027-07-21 | 2027-08-04 | A26900 FS-5d | -8.7d | 0d | Dummy [0.06 h] | 0.06 | N | N | Esc-Est | B00043 | 1 | 3 |
| A27020 |  | Estructura cielo rasos | 10d | 2027-08-04 | 2027-08-19 | A27010 | -8.7d | 0d | Dummy [0.02 h] | 0.02 | N | N | Obr-Gri | B00043 | 1 | 4 |
| A27030 |  | Dinteles borde losa | 10d | 2027-08-19 | 2027-09-02 | A27020 | -8.7d | 0d | Dummy [0.02 h] | 0.02 | N | N | Obr-Gri | B00043 | 1 | 4 |
| A27040 |  | Inst lamina y pintura cielos rasos u muros | 10d | 2027-09-02 | 2027-09-16 | A27030 | -8.7d | 0d | Dummy [0.02 h] | 0.02 | N | N | Obr-Gri | B00043 | 1 | 4 |
| A27050 |  | Segunda mano | 10d | 2027-09-16 | 2027-09-30 | A27040 | -8.7d | 0d | Dummy [0.02 h] | 0.02 | N | N | Obr-Gri | B00043 | 1 | 4 |
| A27060 |  | Ceramina y guarda escobas | 10d | 2027-09-30 | 2027-10-14 | A27050 | -8.7d | 0d | Dummy [0.02 h] | 0.02 | N | N | Obr-Gri | B00043 | 1 | 4 |
| A27070 |  | Instalacion materas | 10d | 2027-10-14 | 2027-10-29 | A27060 | -8.7d | 0d | Dummy [0.01 h] | 0.01 | N | N |  | B00043 |  |  |
| A27080 |  | Inst cableado elec-com | 10d | 2027-10-29 | 2027-11-16 | A27070 | -8.7d | 0d | Dummy [0.01 h] | 0.01 |  |  |  | B00043 |  |  |
| A27090 |  | Inst apa elec-com | 10d | 2027-11-16 | 2027-11-30 | A27080 | -8.7d | 0d | Dummy [0.01 h] | 0.01 |  |  |  | B00043 |  |  |
| A27100 |  | Carpinteria metalica | 10d | 2027-11-30 | 2027-12-15 | A27090 | 62d | 0d | Dummy [0.03 h] | 0.03 |  |  |  | B00043 |  |  |
| A27110 |  | Tercera mano | 10d | 2027-11-30 | 2027-12-15 | A27100 FS-10d | 62d | 0d | Dummy [0.01 h] | 0.01 |  |  |  | B00043 |  |  |
| A27120 |  | Detallado PF | 10d | 2027-12-09 | 2027-12-23 | A27110 FS-4d | 62d | 0d | Dummy [0.03 h] | 0.03 |  |  |  | B00043 |  |  |
| A27130 |  | Aseo | 10d | 2027-12-23 | 2028-01-24 | A27120 | 62d |  | Dummy [0.02 h] | 0.02 |  |  |  | B00043 |  |  |
|  | P13 | **Piso 13** |  | 2027-08-26 | 2028-02-28 |  |  |  |  |  |  |  |  |  |  |  |
| A27140 |  | Estuco y primera mano | 10d | 2027-08-26 | 2027-09-09 | A27030 FS-5d | 0d |  | Dummy [0.06 h] | 0.06 | N | N | Esc-Est | B00043 | 1 | 3 |
| A27150 |  | Estructura cielo rasos | 10d | 2027-09-09 | 2027-09-23 | A27140 | 0d |  | Dummy [0.02 h] | 0.02 | N | N | Obr-Gri | B00043 | 1 | 4 |
| A27160 |  | Dinteles borde losa | 10d | 2027-09-23 | 2027-10-07 | A27150 | 0d |  | Dummy [0.02 h] | 0.02 | N | N | Obr-Gri | B00043 | 1 | 4 |
| A27170 |  | Inst lamina y pintura cielos rasos u muros | 10d | 2027-10-07 | 2027-10-22 | A27160 | 37d | 0d | Dummy [0.02 h] | 0.02 | N | N | Obr-Gri | B00043 | 1 | 4 |
| A27180 |  | Segunda mano | 10d | 2027-10-22 | 2027-11-08 | A27170 | 37d | 0d | Dummy [0.02 h] | 0.02 | N | N | Obr-Gri | B00043 | 1 | 4 |
| A27190 |  | Ceramina y guarda escobas | 10d | 2027-11-08 | 2027-11-23 | A27180 | 37d | 0d | Dummy [0.02 h] | 0.02 | N | N | Obr-Gri | B00043 | 1 | 4 |
| A27200 |  | Instalacion materas | 10d | 2027-11-23 | 2027-12-07 | A27190 | 37d | 0d | Dummy [0.01 h] | 0.01 | N | N |  | B00043 |  |  |
| A27210 |  | Inst cableado elec-com | 10d | 2027-12-07 | 2027-12-22 | A27200 | 37d | 0d | Dummy [0.01 h] | 0.01 |  |  |  | B00043 |  |  |
| A27220 |  | Inst apa elec-com | 10d | 2027-12-22 | 2028-01-21 | A27210 | 37d | 0d | Dummy [0.01 h] | 0.01 |  |  |  | B00043 |  |  |
| A27230 |  | Carpinteria metalica | 10d | 2028-01-21 | 2028-02-04 | A27220 | 37d | 0d | Dummy [0.03 h] | 0.03 |  |  |  | B00043 |  |  |
| A27240 |  | Tercera mano | 10d | 2028-01-21 | 2028-02-04 | A27230 FS-10d | 37d | 0d | Dummy [0.01 h] | 0.01 |  |  |  | B00043 |  |  |
| A27250 |  | Detallado PF | 10d | 2028-01-31 | 2028-02-14 | A27240 FS-4d | 37d | 0d | Dummy [0.03 h] | 0.03 |  |  |  | B00043 |  |  |
| A27260 |  | Aseo | 10d | 2028-02-14 | 2028-02-28 | A27250 | 37d |  | Dummy [0.02 h] | 0.02 |  |  |  | B00043 |  |  |

| ID | WBS | Activity | Duration | Start | Finish | Predecessors | Total float | Free float | Resources | Cost | Hito Inicio - Fin | Tipo 80-20 | CBB_Obras | CBB_Etapas | CBB_Piso | CBB_Procesos |
| --- | --- | --- | --- | --- | --- | --- | --- | --- | --- | --- | --- | --- | --- | --- | --- | --- |
|  | P14 | **Piso 14** |  | 2027-09-30 | 2028-02-25 |  |  |  |  |  |  |  |  |  |  |  |
| A27270 |  | Estuco y primera mano | 8d | 2027-09-30 | 2027-10-12 | A27160 FS-5d | 0d |  | Dummy [0.05 h] | 0.05 | N | N | B00043 | 1 | 3 | Esc-Est |
| A27280 |  | Estructura cielo rasos | 8d | 2027-10-12 | 2027-10-25 | A27270 | 0d |  | Dummy [0.01 h] | 0.01 | N | N | B00043 | 1 | 4 | Obr-Gri |
| A27290 |  | Dinteles borde losa | 8d | 2027-10-25 | 2027-11-05 | A27280 | 0d |  | Dummy [0.01 h] | 0.01 | N | N | B00043 | 1 | 4 | Obr-Gri |
| A27300 |  | Inst lamina y pintura cielos rasos u muros | 8d | 2027-11-05 | 2027-11-18 | A27290 | 38d | 0d | Dummy [0.01 h] | 0.01 | N | N | B00043 | 1 | 4 | Obr-Gri |
| A27310 |  | Segunda mano | 8d | 2027-11-18 | 2027-11-30 | A27300 | 38d | 0d | Dummy [0.01 h] | 0.01 | N | N | B00043 | 1 | 4 | Obr-Gri |
| A27320 |  | Ceramina y guarda escobas | 8d | 2027-11-30 | 2027-12-13 | A27310 | 38d | 0d | Dummy [0.01 h] | 0.01 | N | N | B00043 | 1 | 4 | Obr-Gri |
| A27330 |  | Instalacion materas | 8d | 2027-12-13 | 2027-12-23 | A27320 | 38d | 0d | Dummy [0.01 h] | 0.01 | N | N | B00043 |  |  |  |
| A27340 |  | Inst cableado elec-com | 8d | 2027-12-23 | 2028-01-20 | A27330 | 38d | 0d | Dummy [0.01 h] | 0.01 |  |  | B00043 |  |  |  |
| A27350 |  | Inst apa elec-com | 8d | 2028-01-20 | 2028-02-01 | A27340 | 38d | 0d | Dummy [0.01 h] | 0.01 |  |  | B00043 |  |  |  |
| A27370 |  | Tercera mano | 8d | 2028-01-28 | 2028-02-09 | A27360 FS-10d | 38d | 0d | Dummy [0.01 h] | 0.01 |  |  | B00043 |  |  |  |
| A27360 |  | Carpinteria metalica | 8d | 2028-02-01 | 2028-02-11 | A27350 | 38d | 0d | Dummy [0.02 h] | 0.02 |  |  | B00043 |  |  |  |
| A27380 |  | Detallado PF | 8d | 2028-02-03 | 2028-02-15 | A27370 FS-4d | 38d | 0d | Dummy [0.02 h] | 0.02 |  |  | B00043 |  |  |  |
| A27390 |  | Aseo | 8d | 2028-02-15 | 2028-02-25 | A27380 | 38d |  | Dummy [0.01 h] | 0.01 |  |  | B00043 |  |  |  |
|  | P15 | **Piso 15** |  | 2027-10-28 | 2028-03-24 |  |  |  |  |  |  |  |  |  |  |  |
| A27400 |  | Estuco y primera mano | 8d | 2027-10-28 | 2027-11-10 | A27290 FS-5d | 0d |  | Dummy [0.05 h] | 0.05 | N | N | B00043 | 1 | 3 | Esc-Est |
| A27410 |  | Estructura cielo rasos | 8d | 2027-11-10 | 2027-11-23 | A27400 | 0d |  | Dummy [0.01 h] | 0.01 | N | N | B00043 | 1 | 4 | Obr-Gri |
| A27420 |  | Dinteles borde losa | 8d | 2027-11-23 | 2027-12-03 | A27410 | 0d |  | Dummy [0.01 h] | 0.01 | N | N | B00043 | 1 | 4 | Obr-Gri |
| A27430 |  | Inst lamina y pintura cielos rasos u muros | 8d | 2027-12-03 | 2027-12-16 | A27420 | 19d | 0d | Dummy [0.01 h] | 0.01 | N | N | B00043 | 1 | 4 | Obr-Gri |
| A27440 |  | Segunda mano | 8d | 2027-12-16 | 2028-01-13 | A27430 | 19d | 0d | Dummy [0.01 h] | 0.01 | N | N | B00043 | 1 | 4 | Obr-Gri |
| A27450 |  | Ceramina y guarda escobas | 8d | 2028-01-13 | 2028-01-25 | A27440 | 19d | 0d | Dummy [0.01 h] | 0.01 | N | N | B00043 | 1 | 4 | Obr-Gri |
| A27460 |  | Instalacion materas | 8d | 2028-01-25 | 2028-02-04 | A27450 | 19d | 0d | Dummy [0.01 h] | 0.01 | N | N | B00043 |  |  |  |
| A27470 |  | Inst cableado elec-com | 8d | 2028-02-04 | 2028-02-16 | A27460 | 19d | 0d | Dummy [0.01 h] | 0.01 |  |  | B00043 |  |  |  |
| A27480 |  | Inst apa elec-com | 8d | 2028-02-16 | 2028-02-28 | A27470 | 19d | 0d | Dummy [0.01 h] | 0.01 |  |  | B00043 |  |  |  |
| A27500 |  | Tercera mano | 8d | 2028-02-24 | 2028-03-07 | A27490 FS-10d | 19d | 0d | Dummy [0.01 h] | 0.01 |  |  | B00043 |  |  |  |
| A27490 |  | Carpinteria metalica | 8d | 2028-02-28 | 2028-03-09 | A27480 | 19d | 0d | Dummy [0.02 h] | 0.02 |  |  | B00043 |  |  |  |
| A27510 |  | Detallado PF | 8d | 2028-03-01 | 2028-03-13 | A27500 FS-4d | 19d | 0d | Dummy [0.02 h] | 0.02 |  |  | B00043 |  |  |  |
| A27520 |  | Aseo | 8d | 2028-03-13 | 2028-03-24 | A27510 | 19d |  | Dummy [0.01 h] | 0.01 |  |  | B00043 |  |  |  |

| ID | WBS | Activity | Duration | Start | Finish | Predecessors | Total float | Free float | Resources | Cost | Tipo 80-20 | Hito Inicio - Fin | CBB_Etapas | CBB_Piso | CBB_Obras | CBB_Procesos |
| --- | --- | --- | --- | --- | --- | --- | --- | --- | --- | --- | --- | --- | --- | --- | --- | --- |
|  | P16 | **Piso 16** |  | 2027-11-26 | 2028-04-27 |  |  |  |  |  |  |  |  |  |  |  |
| A27530 |  | Estuco y primera mano | 8d | 2027-11-26 | 2027-12-09 | A27420 FS-5d | 0d |  | Dummy [0.05 h] | 0.05 | N | N | 1 | 3 | B00043 | Esc-Est |
| A27540 |  | Estructura cielo rasos | 8d | 2027-12-09 | 2027-12-21 | A27530 | 0d |  | Dummy [0.01 h] | 0.01 | N | N | 1 | 4 | B00043 | Obr-Gri |
| A27550 |  | Dinteles borde losa | 8d | 2027-12-21 | 2028-01-18 | A27540 | 0d |  | Dummy [0.01 h] | 0.01 | N | N | 1 | 4 | B00043 | Obr-Gri |
| A27560 |  | Inst lamina y pintura cielos rasos u muros | 8d | 2028-01-18 | 2028-01-28 | A27550 | 0d |  | Dummy [0.01 h] | 0.01 | N | N | 1 | 4 | B00043 | Obr-Gri |
| A27570 |  | Segunda mano | 8d | 2028-01-28 | 2028-02-09 | A27560 | 0d |  | Dummy [0.01 h] | 0.01 | N | N | 1 | 4 | B00043 | Obr-Gri |
| A27580 |  | Ceramina y guarda escobas | 8d | 2028-02-09 | 2028-02-21 | A27570 | 0d |  | Dummy [0.01 h] | 0.01 | N | N | 1 | 4 | B00043 | Obr-Gri |
| A27590 |  | Instalacion materas | 8d | 2028-02-21 | 2028-03-02 | A27580 | 0d |  | Dummy [0.01 h] | 0.01 | N | N |  |  | B00043 |  |
| A27600 |  | Inst cableado elec-com | 8d | 2028-03-02 | 2028-03-14 | A27590 | 0d |  | Dummy [0.01 h] | 0.01 |  |  |  |  | B00043 |  |
| A27610 |  | Inst apa elec-com | 8d | 2028-03-14 | 2028-03-27 | A27600 | 0d |  | Dummy [0.01 h] | 0.01 |  |  |  |  | B00043 |  |
| A27630 |  | Tercera mano | 8d | 2028-03-23 | 2028-04-04 | A27620 FS-10d | 0d |  | Dummy [0.01 h] | 0.01 |  |  |  |  | B00043 |  |
| A27620 |  | Carpinteria metalica | 8d | 2028-03-27 | 2028-04-06 | A27610 | 0d |  | Dummy [0.02 h] | 0.02 |  |  |  |  | B00043 |  |
| A27640 |  | Detallado PF | 8d | 2028-03-29 | 2028-04-17 | A27630 FS-4d | 0d |  | Dummy [0.02 h] | 0.02 |  |  |  |  | B00043 |  |
| A27650 |  | Aseo | 8d | 2028-04-17 | 2028-04-27 | A27640 | 0d |  | Dummy [0.01 h] | 0.01 |  |  |  |  | B00043 |  |
|  | 12ASC | **09. Ascensor** |  | 2027-01-15 | 2027-11-10 |  |  |  |  |  |  |  |  |  |  |  |
|  | 01Fos | **01. Foso** |  | 2027-01-15 | 2027-09-13 |  |  |  |  |  |  |  |  |  |  |  |
| A14030 |  | Resane interno foso | 20d | 2027-01-15 | 2027-02-12 | A1700 SS | 34.15d | 0d | Dummy [0.38 h] | 0.38 | N | N | 1 |  | B00043 | Fos-Asc |
| A14040 |  | Mochetas y dinteles entrada de ascensores | 20d | 2027-02-12 | 2027-03-12 | A14030 | 34.15d | 0d | Dummy [0.38 h] | 0.38 | N | N | 1 |  | B00043 | Fos-Asc |
| A14050 |  | Pintura blanca foso | 20d | 2027-03-12 | 2027-04-16 | A14040 | 34.15d | 0d | Dummy [0.38 h] | 0.38 | N | N | 1 |  | B00043 | Fos-Asc |
| A14060 |  | Inst. electricas | 20d | 2027-04-16 | 2027-05-17 | A14050 | 34.15d | 0d | Dummy [0.38 h] | 0.38 | N | N | 1 |  | B00043 | Fos-Asc |
| A14070 |  | Impermeabilizacion de PIT | 20d | 2027-05-17 | 2027-06-16 | A14060 | 34.15d | 0d | Dummy [0.38 h] | 0.38 | N | N | 1 |  | B00043 | Fos-Asc |
| A14080 |  | Montaje plataforma de proteccion foso | 20d | 2027-06-16 | 2027-07-15 | A14070 | 34.15d | 0d | Dummy [0.38 h] | 0.38 | N | N | 1 |  | B00043 | Fos-Asc |
| A14090 |  | Verificaciones generales de foso | 20d | 2027-07-15 | 2027-08-13 | A14080 | 34.15d | 0d | Dummy [0.38 h] | 0.38 | N | N | 1 |  | B00043 | Fos-Asc |
| A14100 |  | Punto de elevacion de carga y certificado de capacidad | 20d | 2027-08-13 | 2027-09-13 | A14090 | 34.15d | 0d | Dummy [0.38 h] | 0.38 | N | N | 1 |  | B00043 | Fos-Asc |

| ID | WBS | Activity | Duration | Start | Finish | Predecessors | Total float | Free float | Resources | Cost | Hito Inicio - Fin | Tipo 80-20 | CBB_Etapas | CBB_Obras | CBB_Procesos | CBB_Piso |
| --- | --- | --- | --- | --- | --- | --- | --- | --- | --- | --- | --- | --- | --- | --- | --- | --- |
|  | 02Inst_Asc | **02. Instalacion Ascensor** |  | 2027-09-13 | 2027-11-10 |  |  |  |  |  |  |  |  |  |  |  |
| A14110 |  | Inst. vigas y rieles fosos | 5d | 2027-09-13 | 2027-09-20 | A1720 SS | 34.15d | 0d | Dummy [0.09 h] | 0.09 | N | N | 1 | B00043 | Asc |  |
| A14120 |  | Izaje de cabina de ascensores | 5d | 2027-09-20 | 2027-09-27 | A14110 | 100.85d | 0d | Dummy [0.09 h] | 0.09 | N | N | 1 | B00043 | Asc |  |
| A14130 |  | Inst. marcos entrada | 5d | 2027-09-27 | 2027-10-04 | A14120 | 100.85d | 0d | Dummy [0.09 h] | 0.09 | N | N | 1 | B00043 | Asc |  |
| A14140 |  | Entradas en superboard | 5d | 2027-10-04 | 2027-10-11 | A14130 | 100.85d | 0d | Dummy [0.09 h] | 0.09 | N | N | 1 | B00043 | Asc |  |
| A14150 |  | Inst. accesorios de cabina y cables traccion | 5d | 2027-10-11 | 2027-10-19 | A14140 | 100.85d | 0d | Dummy [0.09 h] | 0.09 | N | N | 1 | B00043 | Asc |  |
| A14160 |  | Inst. elementos en el pozo y PIT | 5d | 2027-10-19 | 2027-10-26 | A14150 | 100.85d | 0d | Dummy [0.09 h] | 0.09 | N | N | 1 | B00043 | Asc |  |
| A14170 |  | Acabados, aseo y pint. general | 5d | 2027-10-26 | 2027-11-03 | A14160 | 100.85d | 0d | Dummy [0.09 h] | 0.09 | N | N | 1 | B00043 | Asc |  |
| A14180 |  | Inspeccion general de instalacion | 5d | 2027-11-03 | 2027-11-10 | A14170 | 100.85d | 0d | Dummy [0.09 h] | 0.09 | N | N | 1 | B00043 | Asc |  |
|  | 13CAL | **10. Entregas Calidad** |  | 2027-12-06 | 2028-03-01 |  |  |  |  |  |  |  |  |  |  |  |
|  | P03 | **Piso 03** |  | 2027-12-06 | 2028-01-12 |  |  |  |  |  |  |  |  |  |  |  |
| A14250 |  | Aseo Final | 5d | 2027-12-06 | 2027-12-13 | A1530 FS-10d, A22080 | 69.7d | 0d | Dummy [0.04 h] | 0.04 | N | N | 1 | B00043 | Ent-Cal | 3 |
| A14260 |  | Entrega a Calidad para Observaciones | 5d | 2027-12-21 | 2028-01-12 | A14250 FS+5d | 69.7d | 0d | Dummy [0.04 h] | 0.04 | N | N | 1 | B00043 | Ent-Cal | 3 |
|  | P04 | **Piso 04** |  | 2027-12-06 | 2028-01-19 |  |  |  |  |  |  |  |  |  |  |  |
| A14270 |  | Aseo Final | 10d | 2027-12-06 | 2027-12-20 | A1530 FS-10d, A22120 | 64.7d | 0d | Dummy [0.04 h] | 0.04 | N | N | 1 | B00043 | Ent-Cal | 4 |
| A14280 |  | Entrega a Calidad para Observaciones | 10d | 2027-12-21 | 2028-01-19 | A14270 | 64.7d | 0d | Dummy [0.04 h] | 0.04 | N | N | 1 | B00043 | Ent-Cal | 4 |
|  | P05 | **Piso 05** |  | 2027-12-06 | 2028-01-26 |  |  |  |  |  |  |  |  |  |  |  |
| A14290 |  | Aseo Final | 10d | 2027-12-06 | 2027-12-20 | A1530 FS-10d, A22140 | 59.7d | 0d | Dummy [0.04 h] | 0.04 | N | N | 1 | B00043 | Ent-Cal | 5 |
| A14300 |  | Entrega a Calidad para Observaciones | 10d | 2028-01-13 | 2028-01-26 | A14290 FS+5d | 59.7d | 0d | Dummy [0.04 h] | 0.04 | N | N | 1 | B00043 | Ent-Cal | 5 |
|  | P06 | **Piso 06** |  | 2027-12-06 | 2028-01-31 |  |  |  |  |  |  |  |  |  |  |  |
| A14310 |  | Aseo Final | 10d | 2027-12-06 | 2027-12-20 | A1530 FS-10d, A22160 | 56.7d | 0d | Dummy [0.04 h] | 0.04 | N | N | 1 | B00043 | Ent-Cal | 6 |
| A14320 |  | Entrega a Calidad para Observaciones | 10d | 2028-01-18 | 2028-01-31 | A14310 FS+8d | 56.7d | 0d | Dummy [0.04 h] | 0.04 | N | N | 1 | B00043 | Ent-Cal | 6 |
|  | P07 | **Piso 07** |  | 2027-12-21 | 2028-02-18 |  |  |  |  |  |  |  |  |  |  |  |
| A14330 |  | Aseo Final | 10d | 2027-12-21 | 2028-01-19 | A1530, A22180 FS-10d | 42.7d | 0d | Dummy [0.04 h] | 0.04 | N | N | 1 | B00043 | Ent-Cal | 7 |
| A14340 |  | Entrega a Calidad para Observaciones | 10d | 2028-02-07 | 2028-02-18 | A14330 FS+12d | 42.7d | 0d | Dummy [0.04 h] | 0.04 | N | N | 1 | B00043 | Ent-Cal | 7 |

| ID | WBS | Activity | Duration | Start | Finish | Predecessors | Total float | Free float | Resources | Cost | Hito Inicio - Fin | Tipo 80-20 | CBB_Piso | CBB_Obras | CBB_Procesos | CBB_Etapas |
| --- | --- | --- | --- | --- | --- | --- | --- | --- | --- | --- | --- | --- | --- | --- | --- | --- |
|  | P08 | **Piso 08** |  | 2027-12-06 | 2028-01-19 |  |  |  |  |  |  |  |  |  |  |  |
| A14350 |  | Aseo Final | 10d | 2027-12-06 | 2027-12-20 | A1530 FS-10d, A22200 | 64.7d | 0d | Dummy [0.04 h] | 0.04 | N | N | 8 | B00043 | Ent-Cal | 1 |
| A14360 |  | Entrega a Calidad para Observaciones | 10d | 2027-12-21 | 2028-01-19 | A14350 | 64.7d | 22d | Dummy [0.04 h] | 0.04 | N | N | 8 | B00043 | Ent-Cal | 1 |
|  | P09 | **Piso 09** |  | 2027-12-06 | 2028-01-19 |  |  |  |  |  |  |  |  |  |  |  |
| A14370 |  | Aseo Final | 10d | 2027-12-06 | 2027-12-20 | A1530 FS-10d, A22220 FS+5d | 64.7d | 0d | Dummy [0.04 h] | 0.04 | N | N | 9 | B00043 | Ent-Cal | 1 |
| A14380 |  | Entrega a Calidad para Observaciones | 10d | 2027-12-21 | 2028-01-19 | A14370 | 64.7d | 22d | Dummy [0.04 h] | 0.04 | N | N | 9 | B00043 | Ent-Cal | 1 |
|  | P10 | **Piso 10** |  | 2027-12-07 | 2028-01-21 |  |  |  |  |  |  |  |  |  |  |  |
| A14390 |  | Aseo Final | 10d | 2027-12-07 | 2027-12-22 | A1530 FS-10d, A22240 | 63.06d | 0d | Dummy [0.04 h] | 0.04 | N | N | 10 | B00043 | Ent-Cal | 1 |
| A14400 |  | Entrega a Calidad para Observaciones | 10d | 2027-12-22 | 2028-01-21 | A14390 | 63.06d | 20.36d | Dummy [0.04 h] | 0.04 | N | N | 10 | B00043 | Ent-Cal | 1 |
|  | P11 | **Piso 11** |  | 2027-12-20 | 2028-02-02 |  |  |  |  |  |  |  |  |  |  |  |
| A14410 |  | Aseo Final | 10d | 2027-12-20 | 2028-01-19 | A1530 FS-10d, A22260 FS+5d | 35.06d | 0d | Dummy [0.04 h] | 0.04 | N | N | 11 | B00043 | Ent-Cal | 1 |
| A14420 |  | Entrega a Calidad para Observaciones | 10d | 2028-01-19 | 2028-02-02 | A14410 | 55.06d | 12.36d | Dummy [0.04 h] | 0.04 | N | N | 11 | B00043 | Ent-Cal | 1 |
|  | P12 | **Piso 12** |  | 2028-01-19 | 2028-02-02 |  |  |  |  |  |  |  |  |  |  |  |
| A14430 |  | Aseo Final | 5d | 2028-01-19 | 2028-01-26 | A1530 FS-10d, A14410 | 35.06d | 0d | Dummy [0.02 h] | 0.02 | N | N | 12 | B00043 | Ent-Cal | 1 |
| A14440 |  | Entrega a Calidad para Observaciones | 5d | 2028-01-26 | 2028-02-02 | A14430 | 55.06d | 12.36d | Dummy [0.02 h] | 0.02 | N | N | 12 | B00043 | Ent-Cal | 1 |
|  | P13 | **Piso 13** |  | 2028-01-26 | 2028-02-09 |  |  |  |  |  |  |  |  |  |  |  |
| A14450 |  | Aseo Final | 5d | 2028-01-26 | 2028-02-02 | A1530 FS-10d, A14430 | 35.06d | 0d | Dummy [0.02 h] | 0.02 | N | N | 13 | B00043 | Ent-Cal | 1 |
| A14460 |  | Entrega a Calidad para Observaciones | 5d | 2028-02-02 | 2028-02-09 | A14450 | 50.06d | 7.36d | Dummy [0.02 h] | 0.02 | N | N | 13 | B00043 | Ent-Cal | 1 |
|  | P14 | **Piso 14** |  | 2028-02-02 | 2028-02-16 |  |  |  |  |  |  |  |  |  |  |  |
| A14470 |  | Aseo Final | 5d | 2028-02-02 | 2028-02-09 | A1530 FS-10d, A14450 | 35.06d | 0d | Dummy [0.02 h] | 0.02 | N | N | 14 | B00043 | Ent-Cal | 1 |
| A14480 |  | Entrega a Calidad para Observaciones | 5d | 2028-02-09 | 2028-02-16 | A14470 | 45.06d | 2.36d | Dummy [0.02 h] | 0.02 | N | N | 14 | B00043 | Ent-Cal | 1 |
|  | P15 | **Piso 15** |  | 2028-02-09 | 2028-03-01 |  |  |  |  |  |  |  |  |  |  |  |
| A14490 |  | Aseo Final | 5d | 2028-02-09 | 2028-02-16 | A1530 FS-10d, A14470 | 35.06d | 0d | Dummy [0.02 h] | 0.02 | N | N | 15 | B00043 | Ent-Cal | 1 |
| A14500 |  | Entrega a Calidad para Observaciones | 5d | 2028-02-23 | 2028-03-01 | A14490 FS+5d | 35.06d | 0d | Dummy [0.02 h] | 0.02 | N | N | 15 | B00043 | Ent-Cal | 1 |

| ID | WBS | Activity | Duration | Start | Finish | Predecessors | Total float | Free float | Resources | Cost | Hito Inicio - Fin | Tipo 80-20 | CBB_Etapas | CBB_Procesos | CBB_Obras | CBB_Piso |
| --- | --- | --- | --- | --- | --- | --- | --- | --- | --- | --- | --- | --- | --- | --- | --- | --- |
|  | P16 | **Piso 16** |  | 2028-02-16 | 2028-03-01 |  |  |  |  |  |  |  |  |  |  |  |
| A14510 |  | Aseo Final | 5d | 2028-02-16 | 2028-02-23 | A1530 FS-10d, A14490 | 35.06d | 0d | Dummy [0.02 h] | 0.02 | N | N | 1 | Ent-Cal | B00043 | 16 |
| A14520 |  | Entrega a Calidad para Observaciones | 5d | 2028-02-23 | 2028-03-01 | A14510 | 35.06d | 0d | Dummy [0.02 h] | 0.02 | N | N | 1 | Ent-Cal | B00043 | 16 |
|  | 14CTO | **11.CTO** |  | 2026-11-26 | 2026-12-11 |  |  |  |  |  |  |  |  |  |  |  |
| A14190 |  | Inicio CTO | 5d | 2026-11-26 | 2026-12-03 | A1740 SS | 312.85d | 0d | Dummy [0.12 h] | 0.12 | N | N | 1 |  | B00043 |  |
| A14200 |  | Entrega CTO | 5d | 2026-12-03 | 2026-12-11 | A14190 | 312.85d | 0d | Dummy [0.12 h] | 0.12 | N | N | 1 |  | B00043 |  |

## Activity codes

| Code | Value | Meaning |
| --- | --- | --- |
| CBB_Etapas | 1 | Etapa 1 |
| CBB_Obras | B00043 | Marawa |
| CBB_Piso | -2 | Piso -2 |
| CBB_Piso | 1 | Piso 1 |
| CBB_Piso | 10 | Piso 10 |
| CBB_Piso | 11 | Piso 11 |
| CBB_Piso | 12 | Piso 12 |
| CBB_Piso | 13 | Piso 13 |
| CBB_Piso | 14 | Piso 14 |
| CBB_Piso | 15 | Piso 15 |
| CBB_Piso | 16 | Piso 16 |
| CBB_Piso | 2 | Piso 2 |
| CBB_Piso | 3 | Piso 3 |
| CBB_Piso | 4 | Piso 4 |
| CBB_Piso | 5 | Piso 5 |
| CBB_Piso | 6 | Piso 6 |
| CBB_Piso | 7 | Piso 7 |
| CBB_Piso | 8 | Piso 8 |
| CBB_Piso | 9 | Piso 9 |
| CBB_Procesos | Asc | Ascensor |
| CBB_Procesos | Car-Mad | Carpinteria Madera |
| CBB_Procesos | Cie-Ras | Cielo Raso |
| CBB_Procesos | Cim | Cimentacion |
| CBB_Procesos | Cub-Aca | Cubierta Aca |
| CBB_Procesos | Cub-Est | Cubierta Est |
| CBB_Procesos | Enc | Enchapes |
| CBB_Procesos | Ent-Cal | Entrega Calidad |
| CBB_Procesos | Esc-Est | Escalera Estructura |
| CBB_Procesos | Est | Estructura |
| CBB_Procesos | Est- | Estuco |
| CBB_Procesos | Exc-&-Rel | Exc. & Relleno |
| CBB_Procesos | Fos-Asc | Foso Ascensor |
| CBB_Procesos | Mes-y-Gas | Mesones y Gasodomestico |
| CBB_Procesos | Obr-Gri | Obra Gris |
| CBB_Procesos | Pil | Pilotaje |
| CBB_Procesos | Pis | Pisos |
| Contratista | 860015576 | SUBSUELOS S.A.S |
