# TORRE SIERRA V2

Schedule from Primavera P6, 2025-01-13 to 2028-04-24, data date 2026-07-16, costs in COP, A marks actual dates.

## Calendars

- CBB_HOR_OBR: Mon-Fri 7:00-12:00, 13:00-16:00; Sat-Sun off. Exceptions (off unless hours are given): 2025-03-24, 2025-04-13 to 2025-04-20, 2025-05-01, 2025-06-02, 2025-06-23, 2025-06-30, 2025-07-20, 2025-08-07, 2025-08-18, 2025-10-13, 2025-11-03, 2025-11-17, 2025-12-08, 2025-12-24 to 2026-01-03, 2026-01-05 to 2026-01-10, 2026-01-12, 2026-03-23, 2026-03-29 to 2026-04-05, 2026-05-01, 2026-05-18, 2026-06-08, 2026-06-15, 2026-06-29, 2026-07-20, 2026-08-07, 2026-08-17, 2026-10-12, 2026-11-02, 2026-11-16, 2026-12-08, 2026-12-24 to 2027-01-02, 2027-01-04 to 2027-01-09, 2027-01-11, 2027-03-21 to 2027-03-28, 2027-05-01, 2027-05-10, 2027-05-31, 2027-06-07, 2027-07-05, 2027-07-20, 2027-08-07, 2027-08-16, 2027-10-18, 2027-11-01, 2027-11-15, 2027-12-08, 2027-12-24 to 2028-01-01, 2028-01-03 to 2028-01-08, 2028-01-10, 2028-03-20, 2028-04-09 to 2028-04-16.

## Resources

| Resource | Group | Rate |
| --- | --- | --- |
| Dummy | equipment | 1 |

## Schedule

| ID | WBS | Activity | Type | Duration | Start | Finish | Predecessors | Complete | Planned start | Planned finish | Total float | Free float | Constraint | Tipo 80-20 | Hito Inicio - Fin | CBB_Obras | CBB_Etapas | Tipo de hito | Holgura (FEO) |
| --- | --- | --- | --- | --- | --- | --- | --- | --- | --- | --- | --- | --- | --- | --- | --- | --- | --- | --- | --- |
|  | 00HIT | **00. Hitos** |  |  | 2025-01-13 | 2028-04-24 |  |  |  |  |  |  |  |  |  |  |  |  |  |
| A1000 |  | Inicio Proyecto | milestone | 0d | 2025-01-13 A | 2025-01-13 A |  | 100% | 2026-06-17 |  |  |  | start on or after 2025-01-13 | N | N | B00043 | 1 |  |  |
| A1040 |  | Inicio Exc. & Relleno | milestone | 0d | 2025-01-13 A | 2025-01-13 A | A1000 SS | 100% | 2026-06-17 |  |  |  |  | N | N | B00043 | 1 |  |  |
| A1060 |  | Inicio Pilotaje | milestone | 0d | 2025-01-27 A | 2025-01-27 A | A1040 SS+10d | 100% | 2026-07-02 |  |  |  |  | N | N | B00043 | 1 |  |  |
| A1070 |  | Fin Pilotaje | milestone | 0d | 2025-07-17 A | 2025-07-17 A | A1970 FF | 100% |  | 2026-07-02 |  |  |  | N | N | B00043 | 1 |  |  |
| A1010 |  | 20% Avance | milestone | 0d | 2025-08-12 A | 2025-08-12 A | A1970 SS+130d | 100% | 2026-07-02 |  |  |  |  | N | N | B00043 | 1 | Indicadores |  |
| A1080 |  | Inicio Cimentacion | milestone | 0d | 2025-08-27 A | 2025-08-27 A | A1060 SS+140d | 100% | 2027-02-11 |  |  |  |  | N | N | B00043 | 1 |  |  |
| A1090 |  | Fin Cimentacion | milestone | 0d | 2025-09-25 A | 2025-09-25 A | A2040 FF | 100% |  | 2027-02-11 |  |  |  | N | N | B00043 | 1 |  |  |
| A1100 |  | Inicio Estructura | milestone | 0d | 2025-09-25 A | 2025-09-25 A | A1090 | 100% | 2027-02-11 |  |  |  |  | N | N | B00043 | 1 |  |  |
| A1050 |  | Fin Exc. & Relleno | milestone | 0d | 2026-02-12 A | 2026-02-12 A | A1960 FF | 100% |  | 2026-06-17 |  |  |  | N | N | B00043 | 1 |  |  |
| A1160 |  | Inicio Apartamento | milestone | 0d | 2026-05-08 A | 2026-05-08 A | A2130 | 100% | 2026-06-17 |  |  |  | mandatory start 2026-05-08 | N | N | B00043 | 1 |  |  |
| A1170 |  | Inicio Obra Gris | milestone | 0d | 2026-05-08 A | 2026-05-08 A | A1160 SS | 100% | 2026-06-17 |  |  |  |  | N | N | B00043 | 1 |  |  |
| A1030 |  | UMO Fin | milestone | 0d | 2026-07-17 | 2026-07-17 |  |  |  | 2026-07-17 | 409d | 217.3d |  | N | N | B00043 | 1 | Estratégicos |  |
| A1400 |  | Inicio Fachada | milestone | 0d | 2026-07-17 | 2026-07-17 | A2190 |  | 2026-07-17 |  | 0d |  |  | N | N | B00043 | 1 |  |  |
| A1540 |  | Inicio Punto Fijo | milestone | 0d | 2026-07-17 | 2026-07-17 | A2160 |  | 2026-07-17 |  | 19.4d | 0d |  | N | N | B00043 | 1 |  |  |
| A1550 |  | Inicio Punto Fijo Obra Gris | milestone | 0d | 2026-07-17 | 2026-07-17 | A1540 SS |  | 2026-07-17 |  | 19.4d | 0d |  | N | N | B00043 | 1 |  |  |
| A1190 |  | Inicio Estuco y Pintura-01 | milestone | 0d | 2026-08-04 | 2026-08-04 | A14920 |  | 2026-08-04 |  | 31.93d | 0d |  | N | N | B00043 | 1 |  |  |
| A1230 |  | Inicio Cielo Raso | milestone | 0d | 2026-09-03 | 2026-09-03 | A3370 |  | 2026-09-03 |  | 31.93d | 0d |  | N | N | B00043 | 1 |  |  |
| A19590 |  | Inicio Dinteles | milestone | 0d | 2026-09-14 | 2026-09-14 | A18120 SS |  | 2026-09-14 |  | 223.93d | 0d |  | N | N | B00043 |  |  |  |
| A1250 |  | Inicio Laminado Pintura Cielo Raso | milestone | 0d | 2026-10-06 | 2026-10-06 | A18150 |  | 2026-10-06 |  | 31.93d | 0d |  | N | N | B00043 | 1 |  |  |
| A1310 |  | Inicio Estuco y Pintura-02 | milestone | 0d | 2026-11-09 | 2026-11-09 | A4800 FS-20d |  | 2026-11-09 |  | 31.93d | 0d |  | N | N | B00043 | 1 |  |  |
| A19790 |  | Inicio Ventaneria | milestone | 0d | 2026-11-18 | 2026-11-18 | A5710 |  | 2026-11-18 |  | 31.93d | 0d |  | N | N | B00043 |  |  |  |
| A1330 |  | Inicio Inst. elec-comun | milestone | 0d | 2026-12-10 | 2026-12-10 | A6580 FS-5d |  | 2026-12-10 |  | 267.93d | 0d |  | N | N | B00043 | 1 |  |  |
| A19970 |  | Inicio Carp. Madera | milestone | 0d | 2026-12-10 | 2026-12-10 | A6580 FS-5d |  | 2026-12-10 |  | 168.93d | 0d |  | N | N | B00043 |  |  |  |
| A1110 |  | Fin Estructura | milestone | 0d | 2027-01-26 | 2027-01-26 | A2350 FF, A2340 FF |  |  | 2027-01-26 | 49.9d | 0d |  | N | N | B00043 | 1 |  |  |
| A1120 |  | Inicio Cubierta Estructura | milestone | 0d | 2027-01-26 | 2027-01-26 | A1110 |  | 2027-01-26 |  | 49.9d | 0d |  | N | N | B00043 | 1 |  |  |
| A1740 |  | Inicio CTO | milestone | 0d | 2027-01-26 | 2027-01-26 | A1110 |  | 2027-01-26 |  | 281.9d | 0d |  | N | N | B00043 | 1 | Estratégicos |  |
| A1290 |  | Inicio Ceramica y Enchapes | milestone | 0d | 2027-01-27 | 2027-01-27 | A19650 |  | 2027-01-27 |  | 31.93d | 0d |  | N | N | B00043 | 1 |  |  |
| A1210 |  | Inicio Instalacion Soportes | milestone | 0d | 2027-01-28 | 2027-01-28 | A19370 |  | 2027-01-28 |  | 223.93d | 0d |  | N | N | B00043 | 1 |  |  |
| A1750 |  | Fin CTO | milestone | 0d | 2027-02-09 | 2027-02-09 | A14200 FF |  |  | 2027-02-09 | 281.9d |  |  | N | N | B00043 | 1 | Estratégicos |  |
| A1020 |  | 70% Avance | milestone | 0d | 2027-02-15 | 2027-02-15 | A3830, A2330 |  | 2027-02-15 |  | 277.93d | 237.93d |  | N | N | B00043 | 1 | Indicadores |  |
| A1130 |  | Fin Cubierta Estructura | milestone | 0d | 2027-02-25 | 2027-02-25 | A2380 FF |  |  | 2027-02-25 | 49.9d | 0d |  | N | N | B00043 | 1 |  |  |
| A1140 |  | Inicio Cubierta Acabados | milestone | 0d | 2027-02-25 | 2027-02-25 | A1130 |  | 2027-02-25 |  | 183.9d | 0d |  | N | N | B00043 | 1 |  |  |
| A20730 |  | Inicio Mesones | milestone | 0d | 2027-04-01 | 2027-04-01 | A19900 FS-6d |  | 2027-04-01 |  | 168.93d | 0d |  | N | N | B00043 |  |  |  |
| A1700 |  | Inicio Foso | milestone | 0d | 2027-04-01 | 2027-04-01 | A1130 FS+20d |  | 2027-04-01 |  | 49.9d | 0d |  | N | N | B00043 | 1 |  |  |
| A1370 |  | Inicio Barandas Divisiones Banos y Espejos | milestone | 0d | 2027-04-07 | 2027-04-07 | A20710 |  | 2027-04-07 |  | 168.93d | 0d |  | N | N | B00043 | 1 |  |  |
| A19600 |  | Fin Dinteles | milestone | 0d | 2027-04-26 | 2027-04-26 | A19560 FF |  |  | 2027-04-26 | 232.93d |  |  | N | N | B00043 |  |  |  |
| A1220 |  | Fin Instalacion Soportes | milestone | 0d | 2027-05-07 | 2027-05-07 | A15160 FF |  |  | 2027-05-07 | 223.93d | 167d |  | N | N | B00043 | 1 |  |  |
| A1350 |  | Inicio Dotacion | milestone | 0d | 2027-05-20 | 2027-05-20 | A21020 |  | 2027-05-20 |  | 168.93d | 0d |  | N | N | B00043 | 1 |  |  |
| A22030 |  | Inicio Estuco y Pintura-03 | milestone | 0d | 2027-06-09 | 2027-06-09 | A21460 FS-10d |  | 2027-06-09 |  | 168.93d | 0d |  | N | N | B00043 |  |  |  |
| A22090 |  | Inicio Detallado y Aseo Apartamentos | milestone | 0d | 2027-06-15 | 2027-06-15 | A21890 |  | 2027-06-15 |  | 168.93d | 0d |  | N | N | B00043 |  |  |  |
| A1240 |  | Fin Cielo Raso | milestone | 0d | 2027-06-23 | 2027-06-23 | A15210 |  |  | 2027-06-23 | 193.93d | 137d |  | N | N | B00043 | 1 |  |  |
| A1260 |  | Fin Laminado Pintura Cielo Raso | milestone | 0d | 2027-06-23 | 2027-06-23 | A15210 FF |  |  | 2027-06-23 | 193.93d | 137d |  | N | N | B00043 | 1 |  |  |
| A1180 |  | Fin Obra Gris | milestone | 0d | 2027-06-25 | 2027-06-25 | A18110, A1030 FF |  |  | 2027-06-25 | 191.7d | 134.77d |  | N | N | B00043 | 1 |  |  |
| A1150 |  | Fin Cubierta Acabados | milestone | 0d | 2027-07-08 | 2027-07-08 | A2460 FF |  |  | 2027-07-08 | 183.9d |  |  | N | N | B00043 | 1 |  |  |
| A1200 |  | Fin Estuco y Pintura-01 | milestone | 0d | 2027-07-12 | 2027-07-12 | A15140 FF |  |  | 2027-07-12 | 181.33d | 124.4d |  | N | N | B00043 | 1 |  |  |
| A1300 |  | Fin Ceramica y Enchapes | milestone | 0d | 2027-08-03 | 2027-08-03 | A15250 FF, A15290 FF, A15240 FF, A15270 FF, A15260 FF, A15280 FF |  |  | 2027-08-03 | 166.93d | 110d |  | N | N | B00043 | 1 |  |  |
| A19800 |  | Fin Ventaneria | milestone | 0d | 2027-08-03 | 2027-08-03 | A15300 FF |  |  | 2027-08-03 | 166.93d |  |  | N | N | B00043 |  |  |  |
| A1320 |  | Fin Estuco y Pintura-02 | milestone | 0d | 2027-08-17 | 2027-08-17 | A19780, A6940 FF |  |  | 2027-08-17 | 157.93d | 101d |  | N | N | B00043 | 1 |  |  |
| A1340 |  | Fin Inst. elec-comun | milestone | 0d | 2027-09-07 | 2027-09-07 | A7310, A7350, A15310, A7550, A7390, A7110 SS, A7430, A7470, A7110, A7150, A7070, A7230, A7190, A7270, A7510 |  |  | 2027-09-07 | 142.93d | 86d |  | N | N | B00043 | 1 |  |  |
| A19980 |  | Fin Carp. Madera | milestone | 0d | 2027-10-26 | 2027-10-26 | A20700 FF |  |  | 2027-10-26 | 108.93d |  |  | N | N | B00043 |  |  |  |
| A20740 |  | Fin Mesones | milestone | 0d | 2027-11-03 | 2027-11-03 | A20820, A20780, A20760, A20720, A20890, A20950, A21010 FF, A20930, A20910, A20870, A20850, A20800, A20970, A20990 |  |  | 2027-11-03 | 103.93d |  |  | N | N | B00043 |  |  |  |
| A1710 |  | Fin Foso | milestone | 0d | 2027-11-24 | 2027-11-24 | A14100 FF |  |  | 2027-11-24 | 49.9d | 0d |  | N | N | B00043 | 1 |  |  |
| A1720 |  | Inicio Instalacion Ascensor | milestone | 0d | 2027-11-24 | 2027-11-24 | A1710 |  | 2027-11-24 |  | 49.9d | 0d |  | N | N | B00043 | 1 | Estratégicos |  |
| A1380 |  | Fin Barandas Divisiones Banos y Espejos | milestone | 0d | 2027-11-29 | 2027-11-29 | A21250, A21240, A21210, A21220, A21090, A21100, A21390, A21400, A21180, A21190, A21160, A21150, A21060, A21070, A21330, A21340, A21310, A21300, A21360, A21370, A21280, A21270, A21030, A21120, A21130, A21040, A21430 FF, A21420 FF |  |  | 2027-11-29 | 86.93d | 30d |  | N | N | B00043 | 1 |  |  |
| A1360 |  | Fin Dotacion | milestone | 0d | 2028-01-27 | 2028-01-27 | A21880 |  |  | 2028-01-27 | 56.93d | 0d |  | N | N | B00043 | 1 |  |  |
| A1390 |  | Fin Apartamento | milestone | 0d | 2028-01-27 | 2028-01-27 | A1300, A1380, A1360, A1340, A1320, A1240, A1260, A1220, A1200, A1180 |  |  | 2028-01-27 | 56.93d |  |  | N | N | B00043 | 1 |  |  |
| A1730 |  | Fin Instalacion Ascensor | milestone | 0d | 2028-02-07 | 2028-02-07 | A14180 FF |  |  | 2028-02-07 | 49.9d |  |  | N | N | B00043 | 1 | Estratégicos |  |
| A22040 |  | Fin Estuco y Pintura-03 | milestone | 0d | 2028-02-10 | 2028-02-10 | A22020 FF, A22000, A21940, A21970, A21900, A21910, A22010, A21960, A21930, A21950, A21990, A21920, A21980, A21890 |  |  | 2028-02-10 | 46.93d |  |  | N | N | B00043 |  |  |  |
| A1530 |  | Fin Fachada | milestone | 0d | 2028-02-18 | 2028-02-18 | A23820 FF, A23180 FF+25d |  |  | 2028-02-18 | 0d |  |  | N | N | B00043 | 1 |  |  |
| A1760 |  | Inicio Entregas Calidad | milestone | 0d | 2028-02-21 | 2028-02-21 | A1530, A1010, A1020 |  | 2028-02-21 |  | 40d |  |  | N | N | B00043 | 1 | Entregas |  |
| A22100 |  | Fin Detallado y Aseo Apartamentos | milestone | 0d | 2028-02-28 | 2028-02-28 | A22360 FF, A22340, A22240, A22300, A22140, A22120, A22260, A22220, A22160, A22200, A22180, A22080, A22320, A22280 |  |  | 2028-02-28 | 34.93d |  |  | N | N | B00043 |  |  |  |
| A1770 |  | Entrega Calidad Piso 1 | milestone | 0d | 2028-03-06 | 2028-03-06 | A14400 SS |  |  | 2028-03-06 | 30d | 0d |  | N | N | B00043 | 1 | Entregas | 6.0 |
| A1780 |  | Entrega Calidad Piso 2 | milestone | 0d | 2028-03-06 | 2028-03-06 | A1770 |  |  | 2028-03-06 | 30d |  |  | N | N | B00043 | 1 | Entregas | -1.0 |
| A1790 |  | Entrega Calidad Piso 3 | milestone | 0d | 2028-03-10 | 2028-03-10 | A14260 FF |  |  | 2028-03-10 | 25d | 5d |  | N | N | B00043 | 1 | Entregas | -8.0 |
| A1800 |  | Entrega Calidad Piso 4 | milestone | 0d | 2028-03-17 | 2028-03-17 | A1790, A14280 FF |  |  | 2028-03-17 | 20d | 5d |  | N | N | B00043 | 1 | Entregas | -3.0 |
| A1560 |  | Fin Punto Fijo Obra Gris | milestone | 0d | 2028-03-21 | 2028-03-21 | A27650 |  |  | 2028-03-21 | 19.4d | 0d |  | N | N | B00043 | 1 |  |  |
| A1690 |  | Fin Punto Fijo | milestone | 0d | 2028-03-21 | 2028-03-21 | A1560 |  |  | 2028-03-21 | 19.4d |  |  | N | N | B00043 | 1 |  |  |
| A1810 |  | Entrega Calidad Piso 5 | milestone | 0d | 2028-03-27 | 2028-03-27 | A1800, A14300 FF |  |  | 2028-03-27 | 15d | 3d |  | N | N | B00043 | 1 | Entregas | 7.0 |
| A1820 |  | Entrega Calidad Piso 6 | milestone | 0d | 2028-03-30 | 2028-03-30 | A14320 FF, A1810 |  |  | 2028-03-30 | 12d | 4d |  | N | N | B00043 | 1 | Entregas | 9.0 |

| ID | WBS | Activity | Type | Duration | Start | Finish | Predecessors | Complete | Planned finish | Total float | Free float | Resources | Cost | Actual cost | Holgura (FEO) | Tipo de hito | Hito Inicio - Fin | Tipo 80-20 | CBB_Obras | CBB_Etapas | CBB_Piso | Contratista | CBB_Procesos |
| --- | --- | --- | --- | --- | --- | --- | --- | --- | --- | --- | --- | --- | --- | --- | --- | --- | --- | --- | --- | --- | --- | --- | --- |
| A1830 |  | Entrega Calidad Piso 7 | milestone | 0d | 2028-04-05 | 2028-04-05 | A14340 FF, A1820 |  | 2028-04-05 | 8d | 0d |  |  |  | 20.0 | Entregas | N | N | B00043 | 1 |  |  |  |
| A1840 |  | Entrega Calidad Piso 8 | milestone | 0d | 2028-04-05 | 2028-04-05 | A14360 FF, A1830 |  | 2028-04-05 | 8d | 0d |  |  |  | 24.0 | Entregas | N | N | B00043 | 1 |  |  |  |
| A1850 |  | Entrega Calidad Piso 9 | milestone | 0d | 2028-04-05 | 2028-04-05 | A14380 FF, A1840 |  | 2028-04-05 | 8d | 0d |  |  |  | 30.0 | Entregas | N | N | B00043 | 1 |  |  |  |
| A1860 |  | Entrega Calidad Piso 10 | milestone | 0d | 2028-04-05 | 2028-04-05 | A14400 FF, A1850 |  | 2028-04-05 | 8d | 0d |  |  |  | 11.0 | Entregas | N | N | B00043 | 1 |  |  |  |
| A1870 |  | Entrega Calidad Piso 11 | milestone | 0d | 2028-04-05 | 2028-04-05 | A14420 FF, A1860 |  | 2028-04-05 | 8d | 0d |  |  |  | 13.0 | Entregas | N | N | B00043 | 1 |  |  |  |
| A1880 |  | Entrega Calidad Piso 12 | milestone | 0d | 2028-04-05 | 2028-04-05 | A14440 FF, A1870 |  | 2028-04-05 | 8d | 0d |  |  |  | 14.0 | Entregas | N | N | B00043 | 1 |  |  |  |
| A1890 |  | Entrega Calidad Piso 13 | milestone | 0d | 2028-04-05 | 2028-04-05 | A14460 FF, A1880 |  | 2028-04-05 | 8d | 0d |  |  |  | 18.0 | Entregas | N | N | B00043 | 1 |  |  |  |
| A1900 |  | Entrega Calidad Piso 14 | milestone | 0d | 2028-04-05 | 2028-04-05 | A14480 FF, A1890 |  | 2028-04-05 | 8d |  |  |  |  | 20.0 | Entregas | N | N | B00043 | 1 |  |  |  |
| A1910 |  | Entrega Calidad Piso 15 | milestone | 0d | 2028-04-24 | 2028-04-24 | A14500 FF, A1900 |  | 2028-04-24 | 0d |  |  |  |  | 21.0 | Entregas | N | N | B00043 | 1 |  |  |  |
| A1920 |  | Entrega Calidad Piso 16 | milestone | 0d | 2028-04-24 | 2028-04-24 | A1910, A14520 FF |  | 2028-04-24 | 0d |  |  |  |  | 24.0 | Entregas | N | N | B00043 | 1 |  |  |  |
| A1930 |  | Fin Entrega Calidad | milestone | 0d | 2028-04-24 | 2028-04-24 | A1690, A1730, A1390, A1920 |  | 2028-04-24 | 0d |  |  |  |  |  |  | N | N | B00043 | 1 |  |  |  |
| A1940 |  | Fin Proyecto | milestone | 0d | 2028-04-24 | 2028-04-24 | A1150 FF, A22100 FF, A1930 FF, A1750 FF |  | 2028-04-24 | 0d |  |  |  |  |  |  | N | N | B00043 | 1 |  |  |  |
|  | 01EXC_REL | **01. Exc. & Relleno** |  |  | 2025-01-13 | 2025-02-11 |  |  |  |  |  |  |  |  |  |  |  |  |  |  |  |  |  |
| A1950 |  | Conformacion mecanica terreno |  | 11d | 2025-01-13 A | 2025-01-27 A | A1040 SS | 100% |  |  |  | Dummy [0.25 h] | 0.25 | 0.25 |  |  | N | N | B00043 | 1 | -2 | 860015576 | Exc-&-Rel |
| A1960 |  | Capa N° -Relleno Seleccionado (Aprobada) |  | 11d | 2025-01-28 A | 2025-02-11 A | A1950 | 100% |  |  |  | Dummy [0.25 h] | 0.25 | 0.25 |  |  | N | N | B00043 | 1 | -2 | 860015576 | Exc-&-Rel |
|  | 02PIL | **02. Pilotaje** |  |  | 2025-01-27 | 2025-07-16 |  |  |  |  |  |  |  |  |  |  |  |  |  |  |  |  |  |
| A1970 |  | Ejecución del Pilote |  | 113d | 2025-01-27 A | 2025-07-16 A | A1060 SS | 100% |  |  |  | Dummy [0.5 h] | 0.5 | 0.5 |  |  | N | N | B00043 | 1 | -2 | 860015576 | Pil |
|  | 05CIM | **03. Cimentacion** |  |  | 2025-08-27 | 2025-09-24 |  |  |  |  |  |  |  |  |  |  |  |  |  |  |  |  |  |
| A1980 |  | Descabece pilotes |  | 4d | 2025-08-27 A | 2025-09-01 A | A1080 SS | 100% |  |  |  | Dummy [0.07 h] | 0.07 | 0.07 |  |  | N | N | B00043 | 1 | -2 |  | Cim |
| A1990 |  | Amarre placa inferior |  | 3d | 2025-09-02 A | 2025-09-04 A | A1980 | 100% |  |  |  | Dummy [0.07 h] | 0.07 | 0.07 |  |  | N | N | B00043 | 1 | -2 |  | Cim |
| A2000 |  | Amarre acero vigas y arranques |  | 3d | 2025-09-05 A | 2025-09-09 A | A1990 | 100% |  |  |  | Dummy [0.07 h] | 0.07 | 0.07 |  |  | N | N | B00043 | 1 | -2 |  | Cim |
| A2010 |  | Fundida placa inferior |  | 3d | 2025-09-10 A | 2025-09-12 A | A2000 | 100% |  |  |  | Dummy [0.07 h] | 0.07 | 0.07 |  |  | N | N | B00043 | 1 | -2 |  | Cim |
| A2020 |  | Inst. Caseton |  | 3d | 2025-09-15 A | 2025-09-17 A | A2010 | 100% |  |  |  | Dummy [0.07 h] | 0.07 | 0.07 |  |  | N | N | B00043 | 1 | -2 |  | Cim |
| A2030 |  | Amarre acero placa contrapiso |  | 3d | 2025-09-18 A | 2025-09-22 A | A2020 | 100% |  |  |  | Dummy [0.07 h] | 0.07 | 0.07 |  |  | N | N | B00043 | 1 | -2 |  | Cim |
| A2040 |  | Fundida vigas y placa contrapiso |  | 2d | 2025-09-23 A | 2025-09-24 A | A2030 | 100% |  |  |  | Dummy [0.05 h] | 0.05 | 0.05 |  |  | N | N | B00043 | 1 | -2 |  | Cim |

| ID | WBS | Activity | Duration | Start | Finish | Predecessors | Complete | Remaining | Planned start | Planned finish | Total float | Constraint | Resources | Cost | Actual cost | Hito Inicio - Fin | Tipo 80-20 | CBB_Etapas | CBB_Obras | CBB_Procesos | CBB_Piso |
| --- | --- | --- | --- | --- | --- | --- | --- | --- | --- | --- | --- | --- | --- | --- | --- | --- | --- | --- | --- | --- | --- |
|  | 07EST | **04. Estructura** |  | 2025-09-25 | 2027-01-26 |  |  |  |  |  |  |  |  |  |  |  |  |  |  |  |  |
|  | P01 | **Sotano 2** |  | 2025-09-25 | 2025-11-07 |  |  |  |  |  |  |  |  |  |  |  |  |  |  |  |  |
| A2050 |  | Fundida de placa | 20d | 2025-09-25 A | 2025-10-23 A | A1100 SS | 100% |  |  |  |  |  | Dummy [0.08 h] | 0.08 | 0.08 | N | N | 1 | B00043 | Est | 1 |
| A14690 |  | Fundida de muros | 10d | 2025-10-09 A | 2025-10-23 A | A2050 SS+10d | 100% |  |  |  |  |  |  |  |  | N | N |  | B00043 |  |  |
| A14700 |  | Fundida de muros | 10d | 2025-10-24 A | 2025-11-07 A | A2050, A14690 SS+10d | 100% |  |  |  |  |  |  |  |  | N | N |  | B00043 |  |  |
|  | P02 | **Sotano 1** |  | 2025-10-24 | 2025-12-01 |  |  |  |  |  |  |  |  |  |  |  |  |  |  |  |  |
| A2060 |  | Fundida de placa | 15d | 2025-10-24 A | 2025-11-14 A | A2050, A14700 SS | 100% |  |  |  |  |  | Dummy [0.08 h] | 0.08 | 0.08 | N | N | 1 | B00043 | Est | 2 |
| A2070 |  | Fundida de muros | 15d | 2025-11-10 A | 2025-12-01 A | A14700, A2060 SS+5d | 100% |  |  |  |  |  | Dummy [0.08 h] | 0.08 | 0.08 | N | N | 1 | B00043 | Est | 2 |
|  | P03 | **Piso 03** |  | 2026-01-21 | 2026-02-17 |  |  |  |  |  |  |  |  |  |  |  |  |  |  |  |  |
| A2080 |  | Fundida de placa | 15d | 2026-01-21 A | 2026-02-10 A | A2060, A2070 SS+5d | 100% |  |  |  |  | mandatory start 2026-01-21 | Dummy [0.08 h] | 0.08 | 0.08 | N | N | 1 | B00043 | Est | 3 |
| A2090 |  | Fundida de muros | 15d | 2026-01-28 A | 2026-02-17 A | A2070, A2080 SS+5d | 100% |  |  |  |  |  | Dummy [0.08 h] | 0.08 | 0.08 | N | N | 1 | B00043 | Est | 3 |
|  | P04 | **Piso 04** |  | 2026-02-11 | 2026-03-10 |  |  |  |  |  |  |  |  |  |  |  |  |  |  |  |  |
| A2100 |  | Fundida de placa | 15d | 2026-02-11 A | 2026-03-03 A | A2080, A2090 SS+5d | 100% |  | 2026-12-23 | 2027-01-29 |  |  | Dummy [0.08 h] | 0.08 | 0.08 | N | N | 1 | B00043 | Est | 4 |
| A2110 |  | Fundida de muros | 15d | 2026-02-18 A | 2026-03-10 A | A2090, A2100 SS+5d | 100% |  | 2026-12-23 | 2027-01-29 |  |  | Dummy [0.08 h] | 0.08 | 0.08 | N | N | 1 | B00043 | Est | 4 |
|  | P05 | **Piso 05** |  | 2026-04-09 | 2026-05-07 |  |  |  |  |  |  |  |  |  |  |  |  |  |  |  |  |
| A2120 |  | Fundida de placa | 15d | 2026-04-09 A | 2026-04-29 A | A2110 SS+5d, A2100 | 100% |  | 2026-12-23 | 2027-01-29 |  |  | Dummy [0.08 h] | 0.08 | 0.08 | N | N | 1 | B00043 | Est | 5 |
| A2130 |  | Fundida de muros | 15d | 2026-04-16 A | 2026-05-07 A | A2110, A2120 SS+5d | 100% |  |  |  |  |  | Dummy [0.08 h] | 0.08 | 0.08 | N | N | 1 | B00043 | Est | 5 |
|  | P06 | **Piso 06** |  | 2026-04-30 | 2026-05-20 |  |  |  |  |  |  |  |  |  |  |  |  |  |  |  |  |
| A2140 |  | Fundida de placa | 15d | 2026-04-30 A | 2026-05-20 A | A2130 SS+5d, A2120 | 100% |  | 2027-01-12 | 2027-02-01 |  |  | Dummy [0.08 h] | 0.08 | 0.08 | N | N | 1 | B00043 | Est | 6 |
| A2150 |  | Fundida de muros | 15d | 2026-05-08 A | 2026-05-19 A | A2130, A2140 SS+5d | 100% |  | 2027-01-19 | 2027-02-08 |  |  | Dummy [0.08 h] | 0.08 | 0.08 | N | N | 1 | B00043 | Est | 6 |
|  | P07 | **Piso 07** |  | 2026-05-12 | 2026-06-12 |  |  |  |  |  |  |  |  |  |  |  |  |  |  |  |  |
| A2160 |  | Fundida de placa | 15d | 2026-05-12 A | 2026-06-05 A | A2140, A2150 SS+5d | 100% |  | 2026-06-22 | 2026-07-13 |  | mandatory start 2026-05-25 | Dummy [0.08 h] | 0.08 | 0.08 | N | N | 1 | B00043 | Est | 7 |
| A2170 |  | Fundida de muros | 15d | 2026-05-19 A | 2026-06-12 A | A2150, A2160 SS+5d | 100% |  | 2026-06-22 | 2026-07-13 |  | mandatory start 2026-06-01 | Dummy [0.08 h] | 0.08 | 0.08 | N | N | 1 | B00043 | Est | 7 |
|  | P08 | **Piso 08** |  | 2026-06-01 | 2026-07-17 |  |  |  |  |  |  |  |  |  |  |  |  |  |  |  |  |
| A2180 |  | Fundida de placa | 15d | 2026-06-01 A | 2026-06-20 A | A2160, A2170 SS+5d | 100% |  | 2026-07-14 | 2026-08-04 |  |  | Dummy [0.08 h] | 0.08 | 0.08 | N | N | 1 | B00043 | Est | 8 |
| A2190 |  | Fundida de muros | 15d | 2026-06-10 A | 2026-07-17 | A2180 SS+5d, A2170 | 100% | 0d | 2026-07-22 | 2026-08-12 | 0d |  | Dummy [0.08 h] | 0.08 | 0.08 | N | N | 1 | B00043 | Est | 8 |

| ID | WBS | Activity | Duration | Start | Finish | Predecessors | Complete | Remaining | Planned start | Planned finish | Total float | Free float | Resources | Cost | Actual cost | Hito Inicio - Fin | Tipo 80-20 | CBB_Piso | CBB_Procesos | CBB_Etapas | CBB_Obras |
| --- | --- | --- | --- | --- | --- | --- | --- | --- | --- | --- | --- | --- | --- | --- | --- | --- | --- | --- | --- | --- | --- |
|  | P09 | **Piso 09** |  | 2026-06-23 | 2026-07-27 |  |  |  |  |  |  |  |  |  |  |  |  |  |  |  |  |
| A2200 |  | Fundida de placa | 15d | 2026-06-23 A | 2026-07-17 | A2190 SS+5d, A2180 | 100% | 0d | 2026-08-05 | 2026-08-27 | 49.9d | 0d | Dummy [0.08 h] | 0.08 | 0.08 | N | N | 9 | Est | 1 | B00043 |
| A2210 |  | Fundida de muros | 15d | 2026-07-02 A | 2026-07-27 | A2200 SS+5d, A2190 | 66% | 5.1d | 2026-07-15 | 2026-08-05 | 49.9d | 0d | Dummy [0.08 h] | 0.08 | 0.05 | N | N | 9 | Est | 1 | B00043 |
|  | P10 | **Piso 10** |  | 2026-07-09 | 2026-08-19 |  |  |  |  |  |  |  |  |  |  |  |  |  |  |  |  |
| A2220 |  | Fundida de placa | 15d | 2026-07-09 A | 2026-08-03 | A2210 SS+5d, A2200 | 33% | 10.05d | 2026-07-28 | 2026-08-20 | 52.95d | 0.05d | Dummy [0.08 h] | 0.08 | 0.03 | N | N | 10 | Est | 1 | B00043 |
| A2230 |  | Fundida de muros | 15d | 2026-07-27 | 2026-08-19 | A2220 SS+5d, A2210 |  |  |  |  | 49.9d | 0d | Dummy [0.08 h] | 0.08 |  | N | N | 10 | Est | 1 | B00043 |
|  | P11 | **Piso 11** |  | 2026-08-03 | 2026-09-09 |  |  |  |  |  |  |  |  |  |  |  |  |  |  |  |  |
| A2240 |  | Fundida de placa | 15d | 2026-08-03 | 2026-08-26 | A2230 SS+5d, A2220 |  |  |  |  | 52.9d | 0d | Dummy [0.08 h] | 0.08 |  | N | N | 11 | Est | 1 | B00043 |
| A2250 |  | Fundida de muros | 15d | 2026-08-19 | 2026-09-09 | A2240 SS+5d, A2230 |  |  |  |  | 49.9d | 0d | Dummy [0.08 h] | 0.08 |  | N | N | 11 | Est | 1 | B00043 |
|  | P12 | **Piso 12** |  | 2026-08-26 | 2026-09-30 |  |  |  |  |  |  |  |  |  |  |  |  |  |  |  |  |
| A2260 |  | Fundida de placa | 15d | 2026-08-26 | 2026-09-16 | A2250 SS+5d, A2240 |  |  |  |  | 52.9d | 0d | Dummy [0.08 h] | 0.08 |  | N | N | 12 | Est | 1 | B00043 |
| A2270 |  | Fundida de muros | 15d | 2026-09-09 | 2026-09-30 | A2250, A2260 SS+5d |  |  |  |  | 49.9d | 0d | Dummy [0.08 h] | 0.08 |  | N | N | 12 | Est | 1 | B00043 |
|  | P13 | **Piso 13** |  | 2026-09-16 | 2026-10-22 |  |  |  |  |  |  |  |  |  |  |  |  |  |  |  |  |
| A2280 |  | Fundida de placa | 15d | 2026-09-16 | 2026-10-07 | A2260, A2270 SS+5d |  |  |  |  | 52.9d | 0d | Dummy [0.08 h] | 0.08 |  | N | N | 13 | Est | 1 | B00043 |
| A2290 |  | Fundida de muros | 15d | 2026-09-30 | 2026-10-22 | A2280 SS+5d, A2270 |  |  |  |  | 49.9d | 0d | Dummy [0.08 h] | 0.08 |  | N | N | 13 | Est | 1 | B00043 |
|  | P14 | **Piso 14** |  | 2026-10-07 | 2026-11-13 |  |  |  |  |  |  |  |  |  |  |  |  |  |  |  |  |
| A2300 |  | Fundida de placa | 15d | 2026-10-07 | 2026-10-29 | A2280, A2290 SS+5d |  |  |  |  | 52.9d | 0d | Dummy [0.08 h] | 0.08 |  | N | N | 14 | Est | 1 | B00043 |
| A2310 |  | Fundida de muros | 15d | 2026-10-22 | 2026-11-13 | A2290, A2300 SS+5d |  |  |  |  | 49.9d | 0d | Dummy [0.08 h] | 0.08 |  | N | N | 14 | Est | 1 | B00043 |
|  | P15 | **Piso 15** |  | 2026-10-29 | 2026-12-07 |  |  |  |  |  |  |  |  |  |  |  |  |  |  |  |  |
| A2320 |  | Fundida de placa | 15d | 2026-10-29 | 2026-11-23 | A2300, A2310 SS+5d |  |  |  |  | 52.9d | 0d | Dummy [0.08 h] | 0.08 |  | N | N | 15 | Est | 1 | B00043 |
| A2330 |  | Fundida de muros | 15d | 2026-11-13 | 2026-12-07 | A2310, A2320 SS+5d |  |  |  |  | 49.9d | 0d | Dummy [0.08 h] | 0.08 |  | N | N | 15 | Est | 1 | B00043 |
|  | P16 | **Piso 16** |  | 2026-11-23 | 2027-01-26 |  |  |  |  |  |  |  |  |  |  |  |  |  |  |  |  |
| A14710 |  | Fundida de placa | 12d | 2026-11-23 | 2026-12-10 | A2320, A2330 SS+5d |  |  |  |  | 52.9d | 3d |  |  |  | N | N |  |  |  | B00043 |
| A14720 |  | Fundida de muros | 12d | 2026-12-07 | 2027-01-12 | A2330, A14710 SS+5d |  |  |  |  | 49.9d | 0d |  |  |  | N | N |  |  |  | B00043 |
| A2340 |  | Fundida de placa | 12d | 2026-12-15 | 2027-01-19 | A14720 SS+5d, A14710 |  |  |  |  | 49.9d | 0d | Dummy [0.08 h] | 0.08 |  | N | N | 16 | Est | 1 | B00043 |
| A2350 |  | Fundida de muros | 12d | 2026-12-22 | 2027-01-26 | A14720 SS+5d, A2340 SS+5d |  |  |  |  | 49.9d | 0d | Dummy [0.08 h] | 0.08 |  | N | N | 16 | Est | 1 | B00043 |

| ID | WBS | Activity | Duration | Start | Finish | Predecessors | Complete | Remaining | Planned start | Planned finish | Total float | Free float | Resources | Cost | Actual cost | Tipo 80-20 | Hito Inicio - Fin | CBB_Obras | CBB_Etapas | CBB_Procesos | CBB_Piso |
| --- | --- | --- | --- | --- | --- | --- | --- | --- | --- | --- | --- | --- | --- | --- | --- | --- | --- | --- | --- | --- | --- |
|  | 08CUB | **05. Cubierta** |  | 2027-01-26 | 2027-07-08 |  |  |  |  |  |  |  |  |  |  |  |  |  |  |  |  |
|  | 01CubEst | **01. Cubierta Estructura** |  | 2027-01-26 | 2027-02-25 |  |  |  |  |  |  |  |  |  |  |  |  |  |  |  |  |
| A2360 |  | Amarre y cama Placa | 15d | 2027-01-26 | 2027-02-16 | A1120 SS |  |  |  |  | 49.9d | 0d | Dummy [0.17 h] | 0.17 |  | N | N | B00043 | 1 | Cub-Est |  |
| A2370 |  | Fundida Placa | 15d | 2027-01-28 | 2027-02-18 | A2360 SS+2d |  |  |  |  | 49.9d | 0d | Dummy [0.5 h] | 0.5 |  | N | N | B00043 | 1 | Cub-Est |  |
| A2380 |  | Fundida sobrerrecodido ascensores (si aplica) | 5d | 2027-02-18 | 2027-02-25 | A2370 |  |  |  |  | 49.9d | 0d | Dummy [0.17 h] | 0.17 |  | N | N | B00043 | 1 | Cub-Est |  |
|  | 02CubAca | **02. Cubierta Acabados** |  | 2027-02-25 | 2027-07-08 |  |  |  |  |  |  |  |  |  |  |  |  |  |  |  |  |
| A2390 |  | Muros de Antepecho, ductos y cuarto Maquinas | 15d | 2027-02-25 | 2027-03-18 | A1140 SS |  |  |  |  | 183.9d | 0d | Dummy [0.09 h] | 0.09 |  | N | N | B00043 | 1 | Cub-Aca |  |
| A2400 |  | Inst. ductos ventilacion | 5d | 2027-03-18 | 2027-04-01 | A2390 |  |  |  |  | 183.9d | 0d | Dummy [0.09 h] | 0.09 |  | N | N | B00043 | 1 | Cub-Aca |  |
| A2410 |  | Panete de muros ductos (Si Aplica) | 15d | 2027-04-01 | 2027-04-22 | A2400 |  |  |  |  | 183.9d | 0d | Dummy [0.09 h] | 0.09 |  | N | N | B00043 | 1 | Cub-Aca |  |
| A2420 |  | Resanes de cubierta | 15d | 2027-04-22 | 2027-05-14 | A2410 |  |  |  |  | 183.9d | 0d | Dummy [0.09 h] | 0.09 |  | N | N | B00043 | 1 | Cub-Aca |  |
| A2430 |  | Apantallamiento | 8d | 2027-05-14 | 2027-05-26 | A2420 |  |  |  |  | 183.9d | 0d | Dummy [0.09 h] | 0.09 |  | N | N | B00043 | 1 | Cub-Aca |  |
| A2440 |  | Impermeabilizacion y prueba estanqueidad | 4d | 2027-05-26 | 2027-06-02 | A2430 |  |  |  |  | 183.9d | 0d | Dummy [0.09 h] | 0.09 |  | N | N | B00043 | 1 | Cub-Aca |  |
| A2450 |  | Cargue de piso | 18d | 2027-06-02 | 2027-06-29 | A2440 |  |  |  |  | 183.9d | 0d | Dummy [0.09 h] | 0.09 |  | N | N | B00043 | 1 | Cub-Aca |  |
| A2460 |  | Pintura de muros | 6d | 2027-06-29 | 2027-07-08 | A2450 |  |  |  |  | 183.9d | 0d | Dummy [0.09 h] | 0.09 |  | N | N | B00043 | 1 | Cub-Aca |  |
|  | 09APT | **06. Apartamentos** |  | 2026-05-15 | 2028-02-28 |  |  |  |  |  |  |  |  |  |  |  |  |  |  |  |  |
|  | ObrGris | **Obra Gris** |  | 2026-05-15 | 2027-06-25 |  |  |  |  |  |  |  |  |  |  |  |  |  |  |  |  |
|  | P03 | **Piso 03** |  | 2026-05-15 | 2026-09-30 |  |  |  |  |  |  |  |  |  |  |  |  |  |  |  |  |
| A16200 |  | Mamposteria Interna | 15d | 2026-05-15 A | 2026-08-05 | A14920 | 95% | 0.75d | 2026-08-13 | 2026-09-04 | 378.08d | 0d | Dummy [0.02 h] | 0.02 | 0.02 | N | N | B00043 |  |  |  |
| A2620 |  | Descolg. Prolong. Inst. Electricas | 10d | 2026-06-04 A | 2026-07-17 | A1170 SS | 97% | 0.3d | 2026-06-04 | 2026-06-22 | 31.93d | 0d | Dummy [0.02 h] | 0.02 | 0.02 | N | N | B00043 | 1 | Obr-Gri | 4 |
| A16220 |  | Pañete Interno y Resanes | 15d | 2026-06-10 A | 2026-08-10 | A16200 FS-2d | 70% | 4.5d | 2026-08-27 | 2026-09-17 | 378.08d | 0d | Dummy [0.02 h] | 0.02 | 0.01 | N | N | B00043 |  |  |  |
| A2630 |  | Descolg. Prolong. Inst. hidrosanitarias | 8d | 2026-06-16 A | 2026-07-17 | A2620 SS+6d | 90% | 0.8d | 2026-06-16 | 2026-06-26 | 31.93d | 0d | Dummy [0.02 h] | 0.02 | 0.02 | N | N | B00043 | 1 | Obr-Gri | 4 |
| A2640 |  | Descolg. Prolong. Inst. Comunicaciones | 8d | 2026-06-24 A | 2026-07-17 | A2630 SS+6d | 99% | 0.08d | 2026-06-24 | 2026-07-07 | 31.93d | 0d | Dummy [0.02 h] | 0.02 | 0.02 | N | N | B00043 | 1 | Obr-Gri | 4 |
| A14920 |  | Descolg. Prolong. Inst. RCI | 15d | 2026-06-26 A | 2026-08-04 | A2660 SS+6d | 22% | 11.67d | 2026-07-22 | 2026-08-13 | 31.93d | 0d | Dummy [0.02 h] | 0.02 | 0 | N | N | B00043 |  |  |  |
| A2650 |  | Descolg. Prolong. Inst. Sanitarias | 8d | 2026-07-03 A | 2026-07-22 | A2640 SS+6d | 67% | 2.66d | 2026-07-03 | 2026-07-15 | 31.93d | 0d | Dummy [0.02 h] | 0.02 | 0.01 | N | N | B00043 | 1 | Obr-Gri | 4 |
| A2660 |  | Descolg. Prolong. HVAC y gas | 8d | 2026-07-06 A | 2026-07-28 | A2650 SS+6d | 20% | 6.4d | 2026-07-13 | 2026-07-24 | 31.93d | 0d | Dummy [0.02 h] | 0.02 | 0 | N | N | B00043 | 1 | Obr-Gri | 4 |
| A16230 |  | Poyos Cocina y Labores | 8d | 2026-08-03 | 2026-08-14 | A16220 FS-4d |  |  |  |  | 378.08d | 0d | Dummy [0.02 h] | 0.02 |  | N | N | B00043 |  |  |  |
| A16210 |  | Sobre Muros | 4d | 2026-08-05 | 2026-08-12 | A16200 |  |  |  |  | 392.58d |  | Dummy [0.02 h] | 0.02 |  | N | N | B00043 |  |  |  |
| A16240 |  | Viga Baranda | 10d | 2026-08-10 | 2026-08-25 | A16230 FS-4d |  |  |  |  | 378.08d | 0d | Dummy [0.02 h] | 0.02 |  | N | N | B00043 |  |  |  |
| A16250 |  | Dintel descolgado | 10d | 2026-08-12 | 2026-08-27 | A16240 FS-8d |  |  |  |  | 378.08d | 0d | Dummy [0.02 h] | 0.02 |  | N | N | B00043 |  |  |  |
| A16260 |  | Impermeabilizacion Zonas Humedas | 8d | 2026-08-14 | 2026-08-27 | A16250 FS-8d |  |  |  |  | 378.08d | 0d | Dummy [0.02 h] | 0.02 |  | N | N | B00043 |  |  |  |
| A16280 |  | Afinado de Pisos | 8d | 2026-08-21 | 2026-09-02 | A16260 FS-4d |  |  |  |  | 378.08d |  | Dummy [0.02 h] | 0.02 |  | N | N | B00043 |  |  |  |
| A19090 |  | Dinteles Ventana | 4d | 2026-09-14 | 2026-09-18 | A19590 SS |  |  |  |  | 223.93d | 0d | Dummy [0.02 h] | 0.02 |  | N | N | B00043 |  |  |  |
| A19100 |  | Dinteles Puerta Ventana | 4d | 2026-09-18 | 2026-09-24 | A19090 |  |  |  |  | 223.93d | 0d | Dummy [0.02 h] | 0.02 |  | N | N | B00043 |  |  |  |
| A19110 |  | Dintel Balcon | 4d | 2026-09-24 | 2026-09-30 | A19100 |  |  |  |  | 223.93d | 0d | Dummy [0.02 h] | 0.02 |  | N | N | B00043 |  |  |  |

| ID | WBS | Activity | Duration | Start | Finish | Predecessors | Complete | Remaining | Planned start | Planned finish | Total float | Free float | Resources | Cost | Actual cost | Hito Inicio - Fin | Tipo 80-20 | CBB_Procesos | CBB_Etapas | CBB_Piso | CBB_Obras |
| --- | --- | --- | --- | --- | --- | --- | --- | --- | --- | --- | --- | --- | --- | --- | --- | --- | --- | --- | --- | --- | --- |
|  | P04 | **Piso 04** |  | 2026-06-15 | 2026-10-22 |  |  |  |  |  |  |  |  |  |  |  |  |  |  |  |  |
| A16290 |  | Descolg. Prolong. Inst. Electricas | 10d | 2026-06-15 A | 2026-07-27 | A2620 | 50% | 5d | 2026-07-01 | 2026-07-15 | 191.7d | 0d | Dummy [0.02 h] | 0.02 | 0.01 | N | N | Obr-Gri | 1 | 4 | B00043 |
| A16300 |  | Descolg. Prolong. Inst. hidrosanitarias | 8d | 2026-06-15 A | 2026-07-27 | A16290 SS+6d | 31% | 5.54d | 2026-07-09 | 2026-07-22 | 343.7d | 0d | Dummy [0.02 h] | 0.02 | 0.01 | N | N | Obr-Gri | 1 | 4 | B00043 |
| A16310 |  | Descolg. Prolong. Inst. Comunicaciones | 8d | 2026-06-15 A | 2026-07-24 | A16300 SS+6d | 50% | 4d | 2026-07-17 | 2026-07-30 | 343.7d | 0d | Dummy [0.02 h] | 0.02 | 0.01 | N | N | Obr-Gri | 1 | 4 | B00043 |
| A16320 |  | Descolg. Prolong. Inst. Sanitarias | 8d | 2026-06-16 A | 2026-07-23 | A16310 SS+6d | 61% | 3.1d | 2026-06-16 | 2026-06-25 | 343.7d | 0d | Dummy [0.02 h] | 0.02 | 0.01 | N | N | Obr-Gri | 1 | 4 | B00043 |
| A16330 |  | Descolg. Prolong. HVAC y gas | 8d | 2026-07-17 | 2026-07-30 | A16320 SS+6d |  |  |  |  | 343.7d | 0d | Dummy [0.02 h] | 0.02 |  | N | N | Obr-Gri | 1 | 4 | B00043 |
| A16340 |  | Descolg. Prolong. Inst. RCI | 15d | 2026-07-28 | 2026-08-20 | A16330 SS+6d |  |  |  |  | 343.7d | 0d | Dummy [0.02 h] | 0.02 |  | N | N |  |  |  | B00043 |
| A16350 |  | Mamposteria Interna | 15d | 2026-08-20 | 2026-09-10 | A16340 |  |  |  |  | 343.7d | 0d | Dummy [0.02 h] | 0.02 |  | N | N |  |  |  | B00043 |
| A16370 |  | Pañete Interno y Resanes | 15d | 2026-09-08 | 2026-09-29 | A16350 FS-2d |  |  |  |  | 343.7d | 0d | Dummy [0.02 h] | 0.02 |  | N | N |  |  |  | B00043 |
| A16360 |  | Sobre Muros | 4d | 2026-09-10 | 2026-09-16 | A16350 |  |  |  |  | 368.7d |  | Dummy [0.02 h] | 0.02 |  | N | N |  |  |  | B00043 |
| A16380 |  | Poyos Cocina y Labores | 8d | 2026-09-23 | 2026-10-05 | A16370 FS-4d |  |  |  |  | 343.7d | 0d | Dummy [0.02 h] | 0.02 |  | N | N |  |  |  | B00043 |
| A16390 |  | Viga Baranda | 10d | 2026-09-29 | 2026-10-14 | A16380 FS-4d |  |  |  |  | 343.7d | 0d | Dummy [0.02 h] | 0.02 |  | N | N |  |  |  | B00043 |
| A19160 |  | Dinteles Ventana | 4d | 2026-09-30 | 2026-10-06 | A19110 |  |  |  |  | 223.93d | 0d | Dummy [0.02 h] | 0.02 |  | N | N |  |  |  | B00043 |
| A16400 |  | Dintel descolgado | 10d | 2026-10-01 | 2026-10-16 | A16390 FS-8d |  |  |  |  | 343.7d | 0d | Dummy [0.02 h] | 0.02 |  | N | N |  |  |  | B00043 |
| A16410 |  | Impermeabilizacion Zonas Humedas | 8d | 2026-10-05 | 2026-10-16 | A16400 FS-8d |  |  |  |  | 343.7d | 0d | Dummy [0.02 h] | 0.02 |  | N | N |  |  |  | B00043 |
| A19170 |  | Dinteles Puerta Ventana | 4d | 2026-10-06 | 2026-10-13 | A19160 |  |  |  |  | 223.93d | 0d | Dummy [0.02 h] | 0.02 |  | N | N |  |  |  | B00043 |
| A16420 |  | Afinado de Pisos | 8d | 2026-10-09 | 2026-10-22 | A16410 FS-4d |  |  |  |  | 343.7d |  | Dummy [0.02 h] | 0.02 |  | N | N |  |  |  | B00043 |
| A19180 |  | Dintel Balcon | 4d | 2026-10-13 | 2026-10-19 | A19170 |  |  |  |  | 223.93d | 0d | Dummy [0.02 h] | 0.02 |  | N | N |  |  |  | B00043 |
|  | P05 | **Piso 05** |  | 2026-06-17 | 2026-12-16 |  |  |  |  |  |  |  |  |  |  |  |  |  |  |  |  |
| A16470 |  | Descolg. Prolong. Inst. Sanitarias | 12d | 2026-06-17 A | 2026-07-31 | A16460 SS+6d | 61% | 4.64d | 2026-07-31 | 2026-08-19 | 307.7d | 0d | Dummy [0.02 h] | 0.02 | 0.01 | N | N | Obr-Gri | 1 | 4 | B00043 |
| A16450 |  | Descolg. Prolong. Inst. hidrosanitarias | 12d | 2026-06-17 A | 2026-08-06 | A16440 SS+6d | 31% | 8.32d | 2026-07-24 | 2026-08-12 | 307.7d | 0d | Dummy [0.02 h] | 0.02 | 0.01 | N | N | Obr-Gri | 1 | 4 | B00043 |
| A16460 |  | Descolg. Prolong. Inst. Comunicaciones | 12d | 2026-07-02 A | 2026-08-04 | A16450 SS+6d | 50% | 6d | 2026-07-23 | 2026-08-10 | 307.7d | 0d | Dummy [0.02 h] | 0.02 | 0.01 | N | N | Obr-Gri | 1 | 4 | B00043 |
| A16440 |  | Descolg. Prolong. Inst. Electricas | 10d | 2026-07-06 A | 2026-08-03 | A16290 | 50% | 5d | 2026-07-14 | 2026-07-28 | 191.7d | 0d | Dummy [0.02 h] | 0.02 | 0.01 | N | N | Obr-Gri | 1 | 4 | B00043 |
| A16480 |  | Descolg. Prolong. HVAC y gas | 12d | 2026-07-27 | 2026-08-13 | A16470 SS+6d |  |  |  |  | 307.7d | 0d | Dummy [0.02 h] | 0.02 |  | N | N | Obr-Gri | 1 | 4 | B00043 |
| A16490 |  | Descolg. Prolong. Inst. RCI | 20d | 2026-08-04 | 2026-09-03 | A16480 SS+6d |  |  |  |  | 307.7d | 0d | Dummy [0.02 h] | 0.02 |  | N | N |  |  |  | B00043 |
| A16500 |  | Mamposteria Interna | 20d | 2026-09-03 | 2026-10-01 | A16490 |  |  |  |  | 307.7d | 0d | Dummy [0.02 h] | 0.02 |  | N | N |  |  |  | B00043 |
| A16520 |  | Pañete Interno y Resanes | 20d | 2026-09-29 | 2026-10-28 | A16500 FS-2d |  |  |  |  | 307.7d | 0d | Dummy [0.02 h] | 0.02 |  | N | N |  |  |  | B00043 |
| A16510 |  | Sobre Muros | 4d | 2026-10-01 | 2026-10-07 | A16500 |  |  |  |  | 353.7d |  | Dummy [0.02 h] | 0.02 |  | N | N |  |  |  | B00043 |
| A19220 |  | Dinteles Ventana | 4d | 2026-10-19 | 2026-10-23 | A19180 |  |  |  |  | 223.93d | 0d | Dummy [0.02 h] | 0.02 |  | N | N |  |  |  | B00043 |
| A16530 |  | Poyos Cocina y Labores | 8d | 2026-10-22 | 2026-11-04 | A16520 FS-4d |  |  |  |  | 307.7d | 0d | Dummy [0.02 h] | 0.02 |  | N | N |  |  |  | B00043 |
| A19210 |  | Dinteles Puerta Ventana | 4d | 2026-10-23 | 2026-10-29 | A19220 |  |  |  |  | 223.93d | 0d | Dummy [0.02 h] | 0.02 |  | N | N |  |  |  | B00043 |
| A16540 |  | Viga Baranda | 16d | 2026-10-28 | 2026-11-23 | A16530 FS-4d |  |  |  |  | 307.7d | 0d | Dummy [0.02 h] | 0.02 |  | N | N |  |  |  | B00043 |
| A19200 |  | Dintel Balcon | 4d | 2026-10-29 | 2026-11-05 | A19210 |  |  |  |  | 223.93d | 0d | Dummy [0.02 h] | 0.02 |  | N | N |  |  |  | B00043 |
| A16550 |  | Dintel descolgado | 16d | 2026-11-10 | 2026-12-03 | A16540 FS-8d |  |  |  |  | 307.7d | 0d | Dummy [0.02 h] | 0.02 |  | N | N |  |  |  | B00043 |
| A16560 |  | Impermeabilizacion Zonas Humedas | 8d | 2026-11-23 | 2026-12-03 | A16550 FS-8d |  |  |  |  | 307.7d | 0d | Dummy [0.02 h] | 0.02 |  | N | N |  |  |  | B00043 |
| A16570 |  | Afinado de Pisos | 12d | 2026-11-27 | 2026-12-16 | A16560 FS-4d |  |  |  |  | 307.7d |  | Dummy [0.02 h] | 0.02 |  | N | N |  |  |  | B00043 |

| ID | WBS | Activity | Duration | Start | Finish | Predecessors | Total float | Free float | Resources | Cost | Tipo 80-20 | Hito Inicio - Fin | CBB_Etapas | CBB_Procesos | CBB_Obras | CBB_Piso |
| --- | --- | --- | --- | --- | --- | --- | --- | --- | --- | --- | --- | --- | --- | --- | --- | --- |
|  | P06 | **Piso 06** |  | 2026-08-03 | 2027-02-12 |  |  |  |  |  |  |  |  |  |  |  |
| A16580 |  | Descolg. Prolong. Inst. Electricas | 10d | 2026-08-03 | 2026-08-19 | A16440 | 191.7d | 0d | Dummy [0.02 h] | 0.02 | N | N | 1 | Obr-Gri | B00043 | 4 |
| A16590 |  | Descolg. Prolong. Inst. hidrosanitarias | 12d | 2026-08-12 | 2026-08-31 | A16580 SS+6d | 278.7d | 0d | Dummy [0.02 h] | 0.02 | N | N | 1 | Obr-Gri | B00043 | 4 |
| A16600 |  | Descolg. Prolong. Inst. Comunicaciones | 12d | 2026-08-21 | 2026-09-08 | A16590 SS+6d | 278.7d | 0d | Dummy [0.02 h] | 0.02 | N | N | 1 | Obr-Gri | B00043 | 4 |
| A16610 |  | Descolg. Prolong. Inst. Sanitarias | 12d | 2026-08-31 | 2026-09-16 | A16600 SS+6d | 278.7d | 0d | Dummy [0.02 h] | 0.02 | N | N | 1 | Obr-Gri | B00043 | 4 |
| A16620 |  | Descolg. Prolong. HVAC y gas | 12d | 2026-09-08 | 2026-09-24 | A16610 SS+6d | 278.7d | 0d | Dummy [0.02 h] | 0.02 | N | N | 1 | Obr-Gri | B00043 | 4 |
| A16630 |  | Descolg. Prolong. Inst. RCI | 20d | 2026-09-16 | 2026-10-15 | A16620 SS+6d | 278.7d | 0d | Dummy [0.02 h] | 0.02 | N | N |  |  | B00043 |  |
| A16640 |  | Mamposteria Interna | 20d | 2026-10-15 | 2026-11-13 | A16630 | 278.7d | 0d | Dummy [0.02 h] | 0.02 | N | N |  |  | B00043 |  |
| A19270 |  | Dinteles Ventana | 4d | 2026-11-05 | 2026-11-11 | A19200 | 223.93d | 0d | Dummy [0.02 h] | 0.02 | N | N |  |  | B00043 |  |
| A19260 |  | Dinteles Puerta Ventana | 4d | 2026-11-11 | 2026-11-18 | A19270 | 223.93d | 0d | Dummy [0.02 h] | 0.02 | N | N |  |  | B00043 |  |
| A16660 |  | Pañete Interno y Resanes | 20d | 2026-11-11 | 2026-12-11 | A16640 FS-2d | 278.7d | 0d | Dummy [0.02 h] | 0.02 | N | N |  |  | B00043 |  |
| A16650 |  | Sobre Muros | 4d | 2026-11-13 | 2026-11-20 | A16640 | 324.7d |  | Dummy [0.02 h] | 0.02 | N | N |  |  | B00043 |  |
| A19250 |  | Dintel Balcon | 4d | 2026-11-18 | 2026-11-24 | A19260 | 223.93d | 0d | Dummy [0.02 h] | 0.02 | N | N |  |  | B00043 |  |
| A16670 |  | Poyos Cocina y Labores | 8d | 2026-12-04 | 2026-12-17 | A16660 FS-4d | 278.7d | 0d | Dummy [0.02 h] | 0.02 | N | N |  |  | B00043 |  |
| A16680 |  | Viga Baranda | 16d | 2026-12-11 | 2027-01-21 | A16670 FS-4d | 278.7d | 0d | Dummy [0.02 h] | 0.02 | N | N |  |  | B00043 |  |
| A16690 |  | Dintel descolgado | 16d | 2026-12-23 | 2027-02-02 | A16680 FS-8d | 278.7d | 0d | Dummy [0.02 h] | 0.02 | N | N |  |  | B00043 |  |
| A16700 |  | Impermeabilizacion Zonas Humedas | 8d | 2027-01-21 | 2027-02-02 | A16690 FS-8d | 278.7d | 0d | Dummy [0.02 h] | 0.02 | N | N |  |  | B00043 |  |
| A16710 |  | Afinado de Pisos | 12d | 2027-01-27 | 2027-02-12 | A16700 FS-4d | 278.7d |  | Dummy [0.02 h] | 0.02 | N | N |  |  | B00043 |  |
|  | P07 | **Piso 07** |  | 2026-08-19 | 2027-02-26 |  |  |  |  |  |  |  |  |  |  |  |
| A16720 |  | Descolg. Prolong. Inst. Electricas | 10d | 2026-08-19 | 2026-09-02 | A16580 | 191.7d | 0d | Dummy [0.02 h] | 0.02 | N | N | 1 | Obr-Gri | B00043 | 4 |
| A16730 |  | Descolg. Prolong. Inst. hidrosanitarias | 12d | 2026-08-27 | 2026-09-14 | A16720 SS+6d | 268.7d | 0d | Dummy [0.02 h] | 0.02 | N | N | 1 | Obr-Gri | B00043 | 4 |
| A16740 |  | Descolg. Prolong. Inst. Comunicaciones | 12d | 2026-09-04 | 2026-09-22 | A16730 SS+6d | 268.7d | 0d | Dummy [0.02 h] | 0.02 | N | N | 1 | Obr-Gri | B00043 | 4 |
| A16750 |  | Descolg. Prolong. Inst. Sanitarias | 12d | 2026-09-14 | 2026-09-30 | A16740 SS+6d | 268.7d | 0d | Dummy [0.02 h] | 0.02 | N | N | 1 | Obr-Gri | B00043 | 4 |
| A16760 |  | Descolg. Prolong. HVAC y gas | 12d | 2026-09-22 | 2026-10-08 | A16750 SS+6d | 268.7d | 0d | Dummy [0.02 h] | 0.02 | N | N | 1 | Obr-Gri | B00043 | 4 |
| A16770 |  | Descolg. Prolong. Inst. RCI | 20d | 2026-09-30 | 2026-10-29 | A16760 SS+6d | 268.7d | 0d | Dummy [0.02 h] | 0.02 | N | N |  |  | B00043 |  |
| A16780 |  | Mamposteria Interna | 20d | 2026-10-29 | 2026-11-30 | A16770 | 268.7d | 0d | Dummy [0.02 h] | 0.02 | N | N |  |  | B00043 |  |
| A19300 |  | Dinteles Ventana | 4d | 2026-11-24 | 2026-11-30 | A19250 | 223.93d | 0d | Dummy [0.02 h] | 0.02 | N | N |  |  | B00043 |  |
| A16800 |  | Pañete Interno y Resanes | 20d | 2026-11-26 | 2027-01-13 | A16780 FS-2d | 268.7d | 0d | Dummy [0.02 h] | 0.02 | N | N |  |  | B00043 |  |
| A19290 |  | Dinteles Puerta Ventana | 4d | 2026-11-30 | 2026-12-04 | A19300 | 223.93d | 0d | Dummy [0.02 h] | 0.02 | N | N |  |  | B00043 |  |
| A16790 |  | Sobre Muros | 4d | 2026-11-30 | 2026-12-04 | A16780 | 314.7d |  | Dummy [0.02 h] | 0.02 | N | N |  |  | B00043 |  |
| A19280 |  | Dintel Balcon | 4d | 2026-12-04 | 2026-12-11 | A19290 | 223.93d | 0d | Dummy [0.02 h] | 0.02 | N | N |  |  | B00043 |  |
| A16810 |  | Poyos Cocina y Labores | 8d | 2026-12-21 | 2027-01-19 | A16800 FS-4d | 268.7d | 0d | Dummy [0.02 h] | 0.02 | N | N |  |  | B00043 |  |
| A16820 |  | Viga Baranda | 16d | 2027-01-13 | 2027-02-04 | A16810 FS-4d | 268.7d | 0d | Dummy [0.02 h] | 0.02 | N | N |  |  | B00043 |  |
| A16830 |  | Dintel descolgado | 16d | 2027-01-25 | 2027-02-16 | A16820 FS-8d | 268.7d | 0d | Dummy [0.02 h] | 0.02 | N | N |  |  | B00043 |  |
| A16840 |  | Impermeabilizacion Zonas Humedas | 8d | 2027-02-04 | 2027-02-16 | A16830 FS-8d | 268.7d | 0d | Dummy [0.02 h] | 0.02 | N | N |  |  | B00043 |  |
| A16850 |  | Afinado de Pisos | 12d | 2027-02-10 | 2027-02-26 | A16840 FS-4d | 268.7d |  | Dummy [0.02 h] | 0.02 | N | N |  |  | B00043 |  |

| ID | WBS | Activity | Duration | Start | Finish | Predecessors | Total float | Free float | Resources | Cost | Tipo 80-20 | Hito Inicio - Fin | CBB_Procesos | CBB_Etapas | CBB_Piso | CBB_Obras |
| --- | --- | --- | --- | --- | --- | --- | --- | --- | --- | --- | --- | --- | --- | --- | --- | --- |
|  | P08 | **Piso 08** |  | 2026-09-02 | 2027-03-12 |  |  |  |  |  |  |  |  |  |  |  |
| A16860 |  | Descolg. Prolong. Inst. Electricas | 10d | 2026-09-02 | 2026-09-16 | A16720 | 191.7d | 0d | Dummy [0.02 h] | 0.02 | N | N | Obr-Gri | 1 | 4 | B00043 |
| A16870 |  | Descolg. Prolong. Inst. hidrosanitarias | 12d | 2026-09-10 | 2026-09-28 | A16860 SS+6d | 258.7d | 0d | Dummy [0.02 h] | 0.02 | N | N | Obr-Gri | 1 | 4 | B00043 |
| A16880 |  | Descolg. Prolong. Inst. Comunicaciones | 12d | 2026-09-18 | 2026-10-06 | A16870 SS+6d | 258.7d | 0d | Dummy [0.02 h] | 0.02 | N | N | Obr-Gri | 1 | 4 | B00043 |
| A16890 |  | Descolg. Prolong. Inst. Sanitarias | 12d | 2026-09-28 | 2026-10-15 | A16880 SS+6d | 258.7d | 0d | Dummy [0.02 h] | 0.02 | N | N | Obr-Gri | 1 | 4 | B00043 |
| A16900 |  | Descolg. Prolong. HVAC y gas | 12d | 2026-10-06 | 2026-10-23 | A16890 SS+6d | 258.7d | 0d | Dummy [0.02 h] | 0.02 | N | N | Obr-Gri | 1 | 4 | B00043 |
| A16910 |  | Descolg. Prolong. Inst. RCI | 20d | 2026-10-15 | 2026-11-13 | A16900 SS+6d | 258.7d | 0d | Dummy [0.02 h] | 0.02 | N | N |  |  |  | B00043 |
| A16920 |  | Mamposteria Interna | 20d | 2026-11-13 | 2026-12-15 | A16910 | 258.7d | 0d | Dummy [0.02 h] | 0.02 | N | N |  |  |  | B00043 |
| A19330 |  | Dinteles Ventana | 4d | 2026-12-11 | 2026-12-17 | A19280 | 223.93d | 0d | Dummy [0.02 h] | 0.02 | N | N |  |  |  | B00043 |
| A16940 |  | Pañete Interno y Resanes | 20d | 2026-12-11 | 2027-01-27 | A16920 FS-2d | 258.7d | 0d | Dummy [0.02 h] | 0.02 | N | N |  |  |  | B00043 |
| A16930 |  | Sobre Muros | 4d | 2026-12-15 | 2026-12-21 | A16920 | 304.7d |  | Dummy [0.02 h] | 0.02 | N | N |  |  |  | B00043 |
| A19320 |  | Dinteles Puerta Ventana | 4d | 2026-12-17 | 2026-12-23 | A19330 | 223.93d | 0d | Dummy [0.02 h] | 0.02 | N | N |  |  |  | B00043 |
| A19310 |  | Dintel Balcon | 4d | 2026-12-23 | 2027-01-15 | A19320 | 223.93d | 0d | Dummy [0.02 h] | 0.02 | N | N |  |  |  | B00043 |
| A16950 |  | Poyos Cocina y Labores | 8d | 2027-01-21 | 2027-02-02 | A16940 FS-4d | 258.7d | 0d | Dummy [0.02 h] | 0.02 | N | N |  |  |  | B00043 |
| A16960 |  | Viga Baranda | 16d | 2027-01-27 | 2027-02-18 | A16950 FS-4d | 258.7d | 0d | Dummy [0.02 h] | 0.02 | N | N |  |  |  | B00043 |
| A16970 |  | Dintel descolgado | 16d | 2027-02-08 | 2027-03-02 | A16960 FS-8d | 258.7d | 0d | Dummy [0.02 h] | 0.02 | N | N |  |  |  | B00043 |
| A16980 |  | Impermeabilizacion Zonas Humedas | 8d | 2027-02-18 | 2027-03-02 | A16970 FS-8d | 258.7d | 0d | Dummy [0.02 h] | 0.02 | N | N |  |  |  | B00043 |
| A16990 |  | Afinado de Pisos | 12d | 2027-02-24 | 2027-03-12 | A16980 FS-4d | 258.7d |  | Dummy [0.02 h] | 0.02 | N | N |  |  |  | B00043 |
|  | P09 | **Piso 09** |  | 2026-09-16 | 2027-03-09 |  |  |  |  |  |  |  |  |  |  |  |
| A17000 |  | Descolg. Prolong. Inst. Electricas | 10d | 2026-09-16 | 2026-09-30 | A16860 | 191.7d | 0d | Dummy [0.02 h] | 0.02 | N | N | Obr-Gri | 1 | 4 | B00043 |
| A17010 |  | Descolg. Prolong. Inst. hidrosanitarias | 11d | 2026-09-24 | 2026-10-09 | A17000 SS+6d | 261.7d | 0d | Dummy [0.02 h] | 0.02 | N | N | Obr-Gri | 1 | 4 | B00043 |
| A17020 |  | Descolg. Prolong. Inst. Comunicaciones | 11d | 2026-10-02 | 2026-10-20 | A17010 SS+6d | 261.7d | 0d | Dummy [0.02 h] | 0.02 | N | N | Obr-Gri | 1 | 4 | B00043 |
| A17030 |  | Descolg. Prolong. Inst. Sanitarias | 11d | 2026-10-13 | 2026-10-28 | A17020 SS+6d | 261.7d | 0d | Dummy [0.02 h] | 0.02 | N | N | Obr-Gri | 1 | 4 | B00043 |
| A17040 |  | Descolg. Prolong. HVAC y gas | 11d | 2026-10-21 | 2026-11-06 | A17030 SS+6d | 261.7d | 0d | Dummy [0.02 h] | 0.02 | N | N | Obr-Gri | 1 | 4 | B00043 |
| A17050 |  | Descolg. Prolong. Inst. RCI | 18d | 2026-10-29 | 2026-11-26 | A17040 SS+6d | 261.7d | 0d | Dummy [0.02 h] | 0.02 | N | N |  |  |  | B00043 |
| A17060 |  | Mamposteria Interna | 18d | 2026-11-26 | 2026-12-23 | A17050 | 261.7d | 0d | Dummy [0.02 h] | 0.02 | N | N |  |  |  | B00043 |
| A17080 |  | Pañete Interno y Resanes | 18d | 2026-12-21 | 2027-02-02 | A17060 FS-2d | 261.7d | 0d | Dummy [0.02 h] | 0.02 | N | N |  |  |  | B00043 |
| A17070 |  | Sobre Muros | 3d | 2026-12-23 | 2027-01-14 | A17060 | 299.7d |  | Dummy [0.02 h] | 0.02 | N | N |  |  |  | B00043 |
| A19390 |  | Dinteles Ventana | 3d | 2027-01-15 | 2027-01-20 | A19310 | 223.93d | 0d | Dummy [0.02 h] | 0.02 | N | N |  |  |  | B00043 |
| A19380 |  | Dinteles Puerta Ventana | 3d | 2027-01-20 | 2027-01-25 | A19390 | 223.93d | 0d | Dummy [0.02 h] | 0.02 | N | N |  |  |  | B00043 |
| A19370 |  | Dintel Balcon | 3d | 2027-01-25 | 2027-01-28 | A19380 | 223.93d | 0d | Dummy [0.02 h] | 0.02 | N | N |  |  |  | B00043 |
| A17090 |  | Poyos Cocina y Labores | 7d | 2027-01-27 | 2027-02-05 | A17080 FS-4d | 261.7d | 0d | Dummy [0.02 h] | 0.02 | N | N |  |  |  | B00043 |
| A17100 |  | Viga Baranda | 14d | 2027-02-01 | 2027-02-19 | A17090 FS-4d | 261.7d | 0d | Dummy [0.02 h] | 0.02 | N | N |  |  |  | B00043 |
| A17110 |  | Dintel descolgado | 14d | 2027-02-09 | 2027-03-01 | A17100 FS-8d | 261.7d | 0d | Dummy [0.02 h] | 0.02 | N | N |  |  |  | B00043 |
| A17120 |  | Impermeabilizacion Zonas Humedas | 7d | 2027-02-17 | 2027-02-26 | A17110 FS-8d | 261.7d | 0d | Dummy [0.02 h] | 0.02 | N | N |  |  |  | B00043 |
| A17130 |  | Afinado de Pisos | 11d | 2027-02-22 | 2027-03-09 | A17120 FS-4d | 261.7d |  | Dummy [0.02 h] | 0.02 | N | N |  |  |  | B00043 |

| ID | WBS | Activity | Duration | Start | Finish | Predecessors | Total float | Free float | Resources | Cost | Hito Inicio - Fin | Tipo 80-20 | CBB_Piso | CBB_Procesos | CBB_Obras | CBB_Etapas |
| --- | --- | --- | --- | --- | --- | --- | --- | --- | --- | --- | --- | --- | --- | --- | --- | --- |
|  | P10 | **Piso 10** |  | 2026-09-30 | 2027-03-30 |  |  |  |  |  |  |  |  |  |  |  |
| A17140 |  | Descolg. Prolong. Inst. Electricas | 10d | 2026-09-30 | 2026-10-15 | A17000 | 191.7d | 0d | Dummy [0.02 h] | 0.02 | N | N | 4 | Obr-Gri | B00043 | 1 |
| A17150 |  | Descolg. Prolong. Inst. hidrosanitarias | 11d | 2026-10-08 | 2026-10-26 | A17140 SS+6d | 251.7d | 0d | Dummy [0.02 h] | 0.02 | N | N | 4 | Obr-Gri | B00043 | 1 |
| A17160 |  | Descolg. Prolong. Inst. Comunicaciones | 11d | 2026-10-19 | 2026-11-04 | A17150 SS+6d | 251.7d | 0d | Dummy [0.02 h] | 0.02 | N | N | 4 | Obr-Gri | B00043 | 1 |
| A17170 |  | Descolg. Prolong. Inst. Sanitarias | 11d | 2026-10-27 | 2026-11-12 | A17160 SS+6d | 251.7d | 0d | Dummy [0.02 h] | 0.02 | N | N | 4 | Obr-Gri | B00043 | 1 |
| A17180 |  | Descolg. Prolong. HVAC y gas | 11d | 2026-11-05 | 2026-11-23 | A17170 SS+6d | 251.7d | 0d | Dummy [0.02 h] | 0.02 | N | N | 4 | Obr-Gri | B00043 | 1 |
| A17190 |  | Descolg. Prolong. Inst. RCI | 18d | 2026-11-13 | 2026-12-11 | A17180 SS+6d | 251.7d | 0d | Dummy [0.02 h] | 0.02 | N | N |  |  | B00043 |  |
| A17200 |  | Mamposteria Interna | 18d | 2026-12-11 | 2027-01-25 | A17190 | 251.7d | 0d | Dummy [0.02 h] | 0.02 | N | N |  |  | B00043 |  |
| A17220 |  | Pañete Interno y Resanes | 18d | 2027-01-21 | 2027-02-16 | A17200 FS-2d | 251.7d | 0d | Dummy [0.02 h] | 0.02 | N | N |  |  | B00043 |  |
| A17210 |  | Sobre Muros | 3d | 2027-01-25 | 2027-01-28 | A17200 | 289.7d |  | Dummy [0.02 h] | 0.02 | N | N |  |  | B00043 |  |
| A19360 |  | Dinteles Ventana | 3d | 2027-01-28 | 2027-02-02 | A19370 | 232.93d | 0d | Dummy [0.02 h] | 0.02 | N | N |  |  | B00043 |  |
| A19350 |  | Dinteles Puerta Ventana | 3d | 2027-02-02 | 2027-02-05 | A19360 | 232.93d | 0d | Dummy [0.02 h] | 0.02 | N | N |  |  | B00043 |  |
| A19340 |  | Dintel Balcon | 3d | 2027-02-05 | 2027-02-10 | A19350 | 232.93d | 0d | Dummy [0.02 h] | 0.02 | N | N |  |  | B00043 |  |
| A17230 |  | Poyos Cocina y Labores | 7d | 2027-02-10 | 2027-02-19 | A17220 FS-4d | 251.7d | 0d | Dummy [0.02 h] | 0.02 | N | N |  |  | B00043 |  |
| A17240 |  | Viga Baranda | 14d | 2027-02-15 | 2027-03-05 | A17230 FS-4d | 251.7d | 0d | Dummy [0.02 h] | 0.02 | N | N |  |  | B00043 |  |
| A17250 |  | Dintel descolgado | 14d | 2027-02-23 | 2027-03-15 | A17240 FS-8d | 251.7d | 0d | Dummy [0.02 h] | 0.02 | N | N |  |  | B00043 |  |
| A17260 |  | Impermeabilizacion Zonas Humedas | 7d | 2027-03-03 | 2027-03-12 | A17250 FS-8d | 251.7d | 0d | Dummy [0.02 h] | 0.02 | N | N |  |  | B00043 |  |
| A17270 |  | Afinado de Pisos | 11d | 2027-03-08 | 2027-03-30 | A17260 FS-4d | 251.7d |  | Dummy [0.02 h] | 0.02 | N | N |  |  | B00043 |  |
|  | P11 | **Piso 11** |  | 2026-10-29 | 2027-04-12 |  |  |  |  |  |  |  |  |  |  |  |
| A17280 |  | Descolg. Prolong. Inst. Electricas | 10d | 2026-10-29 | 2026-11-13 | A17140 FS+10d | 191.7d | 0d | Dummy [0.02 h] | 0.02 | N | N | 4 | Obr-Gri | B00043 | 1 |
| A17290 |  | Descolg. Prolong. Inst. hidrosanitarias | 11d | 2026-11-09 | 2026-11-25 | A17280 SS+6d | 242.7d | 0d | Dummy [0.02 h] | 0.02 | N | N | 4 | Obr-Gri | B00043 | 1 |
| A17300 |  | Descolg. Prolong. Inst. Comunicaciones | 11d | 2026-11-13 | 2026-12-01 | A17290 SS+4d | 242.7d | 0d | Dummy [0.02 h] | 0.02 | N | N | 4 | Obr-Gri | B00043 | 1 |
| A17310 |  | Descolg. Prolong. Inst. Sanitarias | 11d | 2026-11-20 | 2026-12-07 | A17300 SS+4d | 242.7d | 0d | Dummy [0.02 h] | 0.02 | N | N | 4 | Obr-Gri | B00043 | 1 |
| A17320 |  | Descolg. Prolong. HVAC y gas | 11d | 2026-11-26 | 2026-12-14 | A17310 SS+4d | 242.7d | 0d | Dummy [0.02 h] | 0.02 | N | N | 4 | Obr-Gri | B00043 | 1 |
| A17330 |  | Descolg. Prolong. Inst. RCI | 16d | 2026-12-03 | 2027-01-14 | A17320 SS+5d | 242.7d | 0d | Dummy [0.02 h] | 0.02 | N | N |  |  | B00043 |  |
| A17340 |  | Mamposteria Interna | 18d | 2027-01-14 | 2027-02-09 | A17330 | 242.7d | 0d | Dummy [0.02 h] | 0.02 | N | N |  |  | B00043 |  |
| A17360 |  | Pañete Interno y Resanes | 18d | 2027-02-05 | 2027-03-03 | A17340 FS-2d | 242.7d | 0d | Dummy [0.02 h] | 0.02 | N | N |  |  | B00043 |  |
| A17350 |  | Sobre Muros | 3d | 2027-02-09 | 2027-02-12 | A17340 | 278.7d |  | Dummy [0.02 h] | 0.02 | N | N |  |  | B00043 |  |
| A19420 |  | Dinteles Ventana | 3d | 2027-02-10 | 2027-02-15 | A19340 | 232.93d | 0d | Dummy [0.02 h] | 0.02 | N | N |  |  | B00043 |  |
| A19410 |  | Dinteles Puerta Ventana | 3d | 2027-02-15 | 2027-02-18 | A19420 | 232.93d | 0d | Dummy [0.02 h] | 0.02 | N | N |  |  | B00043 |  |
| A19400 |  | Dintel Balcon | 3d | 2027-02-18 | 2027-02-23 | A19410 | 232.93d | 0d | Dummy [0.02 h] | 0.02 | N | N |  |  | B00043 |  |
| A17370 |  | Poyos Cocina y Labores | 6d | 2027-02-25 | 2027-03-05 | A17360 FS-4d | 242.7d | 0d | Dummy [0.02 h] | 0.02 | N | N |  |  | B00043 |  |
| A17380 |  | Viga Baranda | 14d | 2027-03-01 | 2027-03-19 | A17370 FS-4d | 242.7d | 0d | Dummy [0.02 h] | 0.02 | N | N |  |  | B00043 |  |
| A17390 |  | Dintel descolgado | 14d | 2027-03-09 | 2027-04-05 | A17380 FS-8d | 242.7d | 0d | Dummy [0.02 h] | 0.02 | N | N |  |  | B00043 |  |
| A17400 |  | Impermeabilizacion Zonas Humedas | 6d | 2027-03-17 | 2027-04-01 | A17390 FS-8d | 242.7d | 0d | Dummy [0.02 h] | 0.02 | N | N |  |  | B00043 |  |
| A17410 |  | Afinado de Pisos | 11d | 2027-03-19 | 2027-04-12 | A17400 FS-4d | 242.7d |  | Dummy [0.02 h] | 0.02 | N | N |  |  | B00043 |  |

| ID | WBS | Activity | Duration | Start | Finish | Predecessors | Total float | Free float | Resources | Cost | Hito Inicio - Fin | Tipo 80-20 | CBB_Procesos | CBB_Piso | CBB_Etapas | CBB_Obras |
| --- | --- | --- | --- | --- | --- | --- | --- | --- | --- | --- | --- | --- | --- | --- | --- | --- |
|  | P12 | **Piso 12** |  | 2026-11-13 | 2027-04-23 |  |  |  |  |  |  |  |  |  |  |  |
| A17420 |  | Descolg. Prolong. Inst. Electricas | 10d | 2026-11-13 | 2026-11-30 | A17280 | 191.7d | 0d | Dummy [0.02 h] | 0.02 | N | N | Obr-Gri | 4 | 1 | B00043 |
| A17430 |  | Descolg. Prolong. Inst. hidrosanitarias | 9d | 2026-11-24 | 2026-12-07 | A17420 SS+6d | 233.7d | 0d | Dummy [0.02 h] | 0.02 | N | N | Obr-Gri | 4 | 1 | B00043 |
| A17440 |  | Descolg. Prolong. Inst. Comunicaciones | 9d | 2026-12-02 | 2026-12-16 | A17430 SS+6d | 233.7d | 0d | Dummy [0.02 h] | 0.02 | N | N | Obr-Gri | 4 | 1 | B00043 |
| A17450 |  | Descolg. Prolong. Inst. Sanitarias | 9d | 2026-12-11 | 2027-01-12 | A17440 SS+6d | 233.7d | 0d | Dummy [0.02 h] | 0.02 | N | N | Obr-Gri | 4 | 1 | B00043 |
| A17460 |  | Descolg. Prolong. HVAC y gas | 9d | 2026-12-21 | 2027-01-20 | A17450 SS+6d | 233.7d | 0d | Dummy [0.02 h] | 0.02 | N | N | Obr-Gri | 4 | 1 | B00043 |
| A17470 |  | Descolg. Prolong. Inst. RCI | 16d | 2027-01-15 | 2027-02-08 | A17460 SS+6d | 233.7d | 0d | Dummy [0.02 h] | 0.02 | N | N |  |  |  | B00043 |
| A17480 |  | Mamposteria Interna | 16d | 2027-02-08 | 2027-03-02 | A17470 | 233.7d | 0d | Dummy [0.02 h] | 0.02 | N | N |  |  |  | B00043 |
| A19460 |  | Dinteles Ventana | 3d | 2027-02-23 | 2027-02-26 | A19400 | 232.93d | 0d | Dummy [0.02 h] | 0.02 | N | N |  |  |  | B00043 |
| A19450 |  | Dinteles Puerta Ventana | 3d | 2027-02-26 | 2027-03-03 | A19460 | 232.93d | 0d | Dummy [0.02 h] | 0.02 | N | N |  |  |  | B00043 |
| A17500 |  | Pañete Interno y Resanes | 16d | 2027-02-26 | 2027-03-29 | A17480 FS-2d | 233.7d | 0d | Dummy [0.02 h] | 0.02 | N | N |  |  |  | B00043 |
| A17490 |  | Sobre Muros | 3d | 2027-03-02 | 2027-03-05 | A17480 | 263.7d |  | Dummy [0.02 h] | 0.02 | N | N |  |  |  | B00043 |
| A19440 |  | Dintel Balcon | 3d | 2027-03-03 | 2027-03-08 | A19450 | 232.93d | 0d | Dummy [0.02 h] | 0.02 | N | N |  |  |  | B00043 |
| A17510 |  | Poyos Cocina y Labores | 6d | 2027-03-16 | 2027-03-31 | A17500 FS-4d | 233.7d | 0d | Dummy [0.02 h] | 0.02 | N | N |  |  |  | B00043 |
| A17520 |  | Viga Baranda | 13d | 2027-03-18 | 2027-04-13 | A17510 FS-4d | 233.7d | 0d | Dummy [0.02 h] | 0.02 | N | N |  |  |  | B00043 |
| A17530 |  | Dintel descolgado | 13d | 2027-04-01 | 2027-04-20 | A17520 FS-8d | 233.7d | 0d | Dummy [0.02 h] | 0.02 | N | N |  |  |  | B00043 |
| A17540 |  | Impermeabilizacion Zonas Humedas | 6d | 2027-04-08 | 2027-04-16 | A17530 FS-8d | 233.7d | 0d | Dummy [0.02 h] | 0.02 | N | N |  |  |  | B00043 |
| A17550 |  | Afinado de Pisos | 9d | 2027-04-12 | 2027-04-23 | A17540 FS-4d | 233.7d |  | Dummy [0.02 h] | 0.02 | N | N |  |  |  | B00043 |
|  | P13 | **Piso 13** |  | 2026-11-30 | 2027-05-05 |  |  |  |  |  |  |  |  |  |  |  |
| A17560 |  | Descolg. Prolong. Inst. Electricas | 10d | 2026-11-30 | 2026-12-15 | A17420 | 191.7d | 0d | Dummy [0.02 h] | 0.02 | N | N | Obr-Gri | 4 | 1 | B00043 |
| A17570 |  | Descolg. Prolong. Inst. hidrosanitarias | 9d | 2026-12-09 | 2026-12-22 | A17560 SS+6d | 225.7d | 0d | Dummy [0.02 h] | 0.02 | N | N | Obr-Gri | 4 | 1 | B00043 |
| A17580 |  | Descolg. Prolong. Inst. Comunicaciones | 9d | 2026-12-17 | 2027-01-18 | A17570 SS+6d | 225.7d | 0d | Dummy [0.02 h] | 0.02 | N | N | Obr-Gri | 4 | 1 | B00043 |
| A17590 |  | Descolg. Prolong. Inst. Sanitarias | 9d | 2027-01-13 | 2027-01-26 | A17580 SS+6d | 225.7d | 0d | Dummy [0.02 h] | 0.02 | N | N | Obr-Gri | 4 | 1 | B00043 |
| A17600 |  | Descolg. Prolong. HVAC y gas | 9d | 2027-01-21 | 2027-02-03 | A17590 SS+6d | 225.7d | 0d | Dummy [0.02 h] | 0.02 | N | N | Obr-Gri | 4 | 1 | B00043 |
| A17610 |  | Descolg. Prolong. Inst. RCI | 15d | 2027-01-29 | 2027-02-19 | A17600 SS+6d | 225.7d | 0d | Dummy [0.02 h] | 0.02 | N | N |  |  |  | B00043 |
| A17620 |  | Mamposteria Interna | 18d | 2027-02-19 | 2027-03-17 | A17610 | 225.7d | 0d | Dummy [0.02 h] | 0.02 | N | N |  |  |  | B00043 |
| A19520 |  | Dinteles Ventana | 3d | 2027-03-08 | 2027-03-11 | A19440 | 232.93d | 0d | Dummy [0.02 h] | 0.02 | N | N |  |  |  | B00043 |
| A19510 |  | Dinteles Puerta Ventana | 3d | 2027-03-11 | 2027-03-16 | A19520 | 232.93d | 0d | Dummy [0.02 h] | 0.02 | N | N |  |  |  | B00043 |
| A17640 |  | Pañete Interno y Resanes | 15d | 2027-03-15 | 2027-04-12 | A17620 FS-2d | 225.7d | 0d | Dummy [0.02 h] | 0.02 | N | N |  |  |  | B00043 |
| A19500 |  | Dintel Balcon | 3d | 2027-03-16 | 2027-03-19 | A19510 | 232.93d | 0d | Dummy [0.02 h] | 0.02 | N | N |  |  |  | B00043 |
| A17630 |  | Sobre Muros | 3d | 2027-03-17 | 2027-03-29 | A17620 | 252.7d |  | Dummy [0.02 h] | 0.02 | N | N |  |  |  | B00043 |
| A17650 |  | Poyos Cocina y Labores | 6d | 2027-04-06 | 2027-04-14 | A17640 FS-4d | 225.7d | 0d | Dummy [0.02 h] | 0.02 | N | N |  |  |  | B00043 |
| A17660 |  | Viga Baranda | 12d | 2027-04-08 | 2027-04-26 | A17650 FS-4d | 225.7d | 0d | Dummy [0.02 h] | 0.02 | N | N |  |  |  | B00043 |
| A17670 |  | Dintel descolgado | 12d | 2027-04-14 | 2027-04-30 | A17660 FS-8d | 225.7d | 0d | Dummy [0.02 h] | 0.02 | N | N |  |  |  | B00043 |
| A17680 |  | Impermeabilizacion Zonas Humedas | 6d | 2027-04-20 | 2027-04-28 | A17670 FS-8d | 225.7d | 0d | Dummy [0.02 h] | 0.02 | N | N |  |  |  | B00043 |
| A17690 |  | Afinado de Pisos | 9d | 2027-04-22 | 2027-05-05 | A17680 FS-4d | 225.7d |  | Dummy [0.02 h] | 0.02 | N | N |  |  |  | B00043 |

| ID | WBS | Activity | Duration | Start | Finish | Predecessors | Total float | Free float | Resources | Cost | Hito Inicio - Fin | Tipo 80-20 | CBB_Etapas | CBB_Procesos | CBB_Piso | CBB_Obras |
| --- | --- | --- | --- | --- | --- | --- | --- | --- | --- | --- | --- | --- | --- | --- | --- | --- |
|  | P14 | **Piso 14** |  | 2026-12-15 | 2027-05-20 |  |  |  |  |  |  |  |  |  |  |  |
| A17700 |  | Descolg. Prolong. Inst. Electricas | 10d | 2026-12-15 | 2027-01-15 | A17560 | 191.7d | 0d | Dummy [0.02 h] | 0.02 | N | N | 1 | Obr-Gri | 4 | B00043 |
| A17710 |  | Descolg. Prolong. Inst. hidrosanitarias | 9d | 2026-12-23 | 2027-01-22 | A17700 SS+6d | 215.7d | 0d | Dummy [0.02 h] | 0.02 | N | N | 1 | Obr-Gri | 4 | B00043 |
| A17720 |  | Descolg. Prolong. Inst. Comunicaciones | 9d | 2027-01-19 | 2027-02-01 | A17710 SS+6d | 215.7d | 0d | Dummy [0.02 h] | 0.02 | N | N | 1 | Obr-Gri | 4 | B00043 |
| A17730 |  | Descolg. Prolong. Inst. Sanitarias | 9d | 2027-01-27 | 2027-02-09 | A17720 SS+6d | 215.7d | 0d | Dummy [0.02 h] | 0.02 | N | N | 1 | Obr-Gri | 4 | B00043 |
| A17740 |  | Descolg. Prolong. HVAC y gas | 9d | 2027-02-04 | 2027-02-17 | A17730 SS+6d | 215.7d | 0d | Dummy [0.02 h] | 0.02 | N | N | 1 | Obr-Gri | 4 | B00043 |
| A17750 |  | Descolg. Prolong. Inst. RCI | 15d | 2027-02-12 | 2027-03-05 | A17740 SS+6d | 215.7d | 0d | Dummy [0.02 h] | 0.02 | N | N |  |  |  | B00043 |
| A17760 |  | Mamposteria Interna | 18d | 2027-03-05 | 2027-04-07 | A17750 | 215.7d | 0d | Dummy [0.02 h] | 0.02 | N | N |  |  |  | B00043 |
| A19490 |  | Dinteles Ventana | 3d | 2027-03-19 | 2027-03-31 | A19500 | 232.93d | 0d | Dummy [0.02 h] | 0.02 | N | N |  |  |  | B00043 |
| A19480 |  | Dinteles Puerta Ventana | 3d | 2027-03-31 | 2027-04-05 | A19490 | 232.93d | 0d | Dummy [0.02 h] | 0.02 | N | N |  |  |  | B00043 |
| A19470 |  | Dintel Balcon | 3d | 2027-04-05 | 2027-04-08 | A19480 | 232.93d | 0d | Dummy [0.02 h] | 0.02 | N | N |  |  |  | B00043 |
| A17780 |  | Pañete Interno y Resanes | 15d | 2027-04-05 | 2027-04-26 | A17760 FS-2d | 215.7d | 0d | Dummy [0.02 h] | 0.02 | N | N |  |  |  | B00043 |
| A17770 |  | Sobre Muros | 3d | 2027-04-07 | 2027-04-12 | A17760 | 242.7d |  | Dummy [0.02 h] | 0.02 | N | N |  |  |  | B00043 |
| A17790 |  | Poyos Cocina y Labores | 6d | 2027-04-20 | 2027-04-28 | A17780 FS-4d | 215.7d | 0d | Dummy [0.02 h] | 0.02 | N | N |  |  |  | B00043 |
| A17800 |  | Viga Baranda | 12d | 2027-04-22 | 2027-05-11 | A17790 FS-4d | 215.7d | 0d | Dummy [0.02 h] | 0.02 | N | N |  |  |  | B00043 |
| A17810 |  | Dintel descolgado | 12d | 2027-04-28 | 2027-05-17 | A17800 FS-8d | 215.7d | 0d | Dummy [0.02 h] | 0.02 | N | N |  |  |  | B00043 |
| A17820 |  | Impermeabilizacion Zonas Humedas | 6d | 2027-05-04 | 2027-05-13 | A17810 FS-8d | 215.7d | 0d | Dummy [0.02 h] | 0.02 | N | N |  |  |  | B00043 |
| A17830 |  | Afinado de Pisos | 9d | 2027-05-06 | 2027-05-20 | A17820 FS-4d | 215.7d |  | Dummy [0.02 h] | 0.02 | N | N |  |  |  | B00043 |
|  | P15 | **Piso 15** |  | 2027-01-29 | 2027-05-26 |  |  |  |  |  |  |  |  |  |  |  |
| A17840 |  | Descolg. Prolong. Inst. Electricas | 10d | 2027-01-29 | 2027-02-12 | A17700 FS+10d | 191.7d | 0d | Dummy [0.02 h] | 0.02 | N | N | 1 | Obr-Gri | 4 | B00043 |
| A17850 |  | Descolg. Prolong. Inst. hidrosanitarias | 8d | 2027-02-08 | 2027-02-18 | A17840 SS+6d | 211.7d | 0d | Dummy [0.02 h] | 0.02 | N | N | 1 | Obr-Gri | 4 | B00043 |
| A17860 |  | Descolg. Prolong. Inst. Comunicaciones | 8d | 2027-02-16 | 2027-02-26 | A17850 SS+6d | 211.7d | 0d | Dummy [0.02 h] | 0.02 | N | N | 1 | Obr-Gri | 4 | B00043 |
| A17870 |  | Descolg. Prolong. Inst. Sanitarias | 8d | 2027-02-24 | 2027-03-08 | A17860 SS+6d | 211.7d | 0d | Dummy [0.02 h] | 0.02 | N | N | 1 | Obr-Gri | 4 | B00043 |
| A17880 |  | Descolg. Prolong. HVAC y gas | 8d | 2027-03-04 | 2027-03-16 | A17870 SS+6d | 211.7d | 0d | Dummy [0.02 h] | 0.02 | N | N | 1 | Obr-Gri | 4 | B00043 |
| A17890 |  | Descolg. Prolong. Inst. RCI | 13d | 2027-03-12 | 2027-04-07 | A17880 SS+6d | 211.7d | 0d | Dummy [0.02 h] | 0.02 | N | N |  |  |  | B00043 |
| A17900 |  | Mamposteria Interna | 13d | 2027-04-07 | 2027-04-26 | A17890 | 211.7d | 0d | Dummy [0.02 h] | 0.02 | N | N |  |  |  | B00043 |
| A19550 |  | Dinteles Ventana | 2d | 2027-04-08 | 2027-04-12 | A19470 | 232.93d | 0d | Dummy [0.02 h] | 0.02 | N | N |  |  |  | B00043 |
| A19540 |  | Dinteles Puerta Ventana | 2d | 2027-04-12 | 2027-04-14 | A19550 | 232.93d | 0d | Dummy [0.02 h] | 0.02 | N | N |  |  |  | B00043 |
| A19530 |  | Dintel Balcon | 2d | 2027-04-14 | 2027-04-16 | A19540 | 232.93d | 0d | Dummy [0.02 h] | 0.02 | N | N |  |  |  | B00043 |
| A17920 |  | Pañete Interno y Resanes | 13d | 2027-04-22 | 2027-05-12 | A17900 FS-2d | 211.7d | 0d | Dummy [0.02 h] | 0.02 | N | N |  |  |  | B00043 |
| A17910 |  | Sobre Muros | 2d | 2027-04-26 | 2027-04-28 | A17900 | 230.7d |  | Dummy [0.02 h] | 0.02 | N | N |  |  |  | B00043 |
| A17930 |  | Poyos Cocina y Labores | 5d | 2027-05-05 | 2027-05-13 | A17920 FS-4d | 211.7d | 0d | Dummy [0.02 h] | 0.02 | N | N |  |  |  | B00043 |
| A17940 |  | Viga Baranda | 10d | 2027-05-06 | 2027-05-21 | A17930 FS-4d | 211.7d | 0d | Dummy [0.02 h] | 0.02 | N | N |  |  |  | B00043 |
| A17950 |  | Dintel descolgado | 10d | 2027-05-11 | 2027-05-25 | A17940 FS-8d | 211.7d | 0d | Dummy [0.02 h] | 0.02 | N | N |  |  |  | B00043 |
| A17960 |  | Impermeabilizacion Zonas Humedas | 5d | 2027-05-13 | 2027-05-20 | A17950 FS-8d | 211.7d | 0d | Dummy [0.02 h] | 0.02 | N | N |  |  |  | B00043 |
| A17970 |  | Afinado de Pisos | 8d | 2027-05-14 | 2027-05-26 | A17960 FS-4d | 211.7d |  | Dummy [0.02 h] | 0.02 | N | N |  |  |  | B00043 |

| ID | WBS | Activity | Duration | Start | Finish | Predecessors | Total float | Free float | Resources | Cost | Hito Inicio - Fin | Tipo 80-20 | CBB_Obras | CBB_Procesos | CBB_Piso | CBB_Etapas |
| --- | --- | --- | --- | --- | --- | --- | --- | --- | --- | --- | --- | --- | --- | --- | --- | --- |
|  | P16 | **Piso 16** |  | 2027-02-26 | 2027-06-25 |  |  |  |  |  |  |  |  |  |  |  |
| A17980 |  | Descolg. Prolong. Inst. Electricas | 10d | 2027-02-26 | 2027-03-12 | A17840 FS+10d | 191.7d | 0d | Dummy [0.02 h] | 0.02 | N | N | B00043 | Obr-Gri | 4 | 1 |
| A17990 |  | Descolg. Prolong. Inst. hidrosanitarias | 8d | 2027-03-08 | 2027-03-18 | A17980 SS+6d | 191.7d | 0d | Dummy [0.02 h] | 0.02 | N | N | B00043 | Obr-Gri | 4 | 1 |
| A18000 |  | Descolg. Prolong. Inst. Comunicaciones | 8d | 2027-03-16 | 2027-04-02 | A17990 SS+6d | 191.7d | 0d | Dummy [0.02 h] | 0.02 | N | N | B00043 | Obr-Gri | 4 | 1 |
| A18010 |  | Descolg. Prolong. Inst. Sanitarias | 8d | 2027-03-31 | 2027-04-12 | A18000 SS+6d | 191.7d | 0d | Dummy [0.02 h] | 0.02 | N | N | B00043 | Obr-Gri | 4 | 1 |
| A18020 |  | Descolg. Prolong. HVAC y gas | 8d | 2027-04-08 | 2027-04-20 | A18010 SS+6d | 191.7d | 0d | Dummy [0.02 h] | 0.02 | N | N | B00043 | Obr-Gri | 4 | 1 |
| A19580 |  | Dinteles Ventana | 2d | 2027-04-16 | 2027-04-20 | A19530 | 232.93d | 0d | Dummy [0.02 h] | 0.02 | N | N | B00043 |  |  |  |
| A18030 |  | Descolg. Prolong. Inst. RCI | 13d | 2027-04-16 | 2027-05-05 | A18020 SS+6d | 191.7d | 0d | Dummy [0.02 h] | 0.02 | N | N | B00043 |  |  |  |
| A19570 |  | Dinteles Puerta Ventana | 2d | 2027-04-20 | 2027-04-22 | A19580 | 232.93d | 0d | Dummy [0.02 h] | 0.02 | N | N | B00043 |  |  |  |
| A19560 |  | Dintel Balcon | 2d | 2027-04-22 | 2027-04-26 | A19570 | 232.93d | 0d | Dummy [0.02 h] | 0.02 | N | N | B00043 |  |  |  |
| A18040 |  | Mamposteria Interna | 13d | 2027-05-05 | 2027-05-25 | A18030 | 191.7d | 0d | Dummy [0.02 h] | 0.02 | N | N | B00043 |  |  |  |
| A18060 |  | Pañete Interno y Resanes | 13d | 2027-05-21 | 2027-06-11 | A18040 FS-2d | 191.7d | 0d | Dummy [0.02 h] | 0.02 | N | N | B00043 |  |  |  |
| A18050 |  | Sobre Muros | 2d | 2027-05-25 | 2027-05-27 | A18040 | 210.7d |  | Dummy [0.02 h] | 0.02 | N | N | B00043 |  |  |  |
| A18070 |  | Poyos Cocina y Labores | 5d | 2027-06-04 | 2027-06-14 | A18060 FS-4d | 191.7d | 0d | Dummy [0.02 h] | 0.02 | N | N | B00043 |  |  |  |
| A18080 |  | Viga Baranda | 10d | 2027-06-08 | 2027-06-22 | A18070 FS-4d | 191.7d | 0d | Dummy [0.02 h] | 0.02 | N | N | B00043 |  |  |  |
| A18090 |  | Dintel descolgado | 10d | 2027-06-10 | 2027-06-24 | A18080 FS-8d | 191.7d | 0d | Dummy [0.02 h] | 0.02 | N | N | B00043 |  |  |  |
| A18100 |  | Impermeabilizacion Zonas Humedas | 5d | 2027-06-14 | 2027-06-21 | A18090 FS-8d | 191.7d | 0d | Dummy [0.02 h] | 0.02 | N | N | B00043 |  |  |  |
| A18110 |  | Afinado de Pisos | 8d | 2027-06-15 | 2027-06-25 | A18100 FS-4d | 191.7d | 0d | Dummy [0.02 h] | 0.02 | N | N | B00043 |  |  |  |
|  | Est_Pin01 | **Estuco y Pintura-01** |  | 2026-08-04 | 2027-07-12 |  |  |  |  |  |  |  |  |  |  |  |
|  | P03 | **Piso 03** |  | 2026-08-04 | 2026-09-03 |  |  |  |  |  |  |  |  |  |  |  |
| A3360 |  | Estuco | 18d | 2026-08-04 | 2026-09-01 | A1190 SS | 31.93d | 0d | Dummy [0.02 h] | 0.02 | N | N | B00043 | Est- | 4 | 1 |
| A3370 |  | Primera mano de pintura | 18d | 2026-08-06 | 2026-09-03 | A3360 SS+2d | 31.93d | 0d | Dummy [0.02 h] | 0.02 | N | N | B00043 | Est- | 4 | 1 |
|  | P04 | **Piso 04** |  | 2026-09-01 | 2026-09-29 |  |  |  |  |  |  |  |  |  |  |  |
| A3390 |  | Estuco | 18d | 2026-09-01 | 2026-09-25 | A3360 | 181.33d | 0d | Dummy [0.02 h] | 0.02 | N | N | B00043 | Est- | 5 | 1 |
| A3400 |  | Primera mano de pintura | 18d | 2026-09-03 | 2026-09-29 | A3390 SS+2d | 359.33d |  | Dummy [0.02 h] | 0.02 | N | N | B00043 | Est- | 5 | 1 |

| ID | WBS | Activity | Duration | Start | Finish | Predecessors | Total float | Free float | Resources | Cost | Tipo 80-20 | Hito Inicio - Fin | CBB_Procesos | CBB_Obras | CBB_Etapas | CBB_Piso |
| --- | --- | --- | --- | --- | --- | --- | --- | --- | --- | --- | --- | --- | --- | --- | --- | --- |
|  | P05 | **Piso 05** |  | 2026-09-25 | 2026-10-26 |  |  |  |  |  |  |  |  |  |  |  |
| A3420 |  | Estuco | 18d | 2026-09-25 | 2026-10-22 | A3390 | 181.33d | 0d | Dummy [0.02 h] | 0.02 | N | N | Est- | B00043 | 1 | 6 |
| A3430 |  | Primera mano de pintura | 18d | 2026-09-29 | 2026-10-26 | A3420 SS+2d | 341.33d |  | Dummy [0.02 h] | 0.02 | N | N | Est- | B00043 | 1 | 6 |
|  | P06 | **Piso 06** |  | 2026-10-22 | 2026-11-23 |  |  |  |  |  |  |  |  |  |  |  |
| A3450 |  | Estuco | 18d | 2026-10-22 | 2026-11-19 | A3420 | 181.33d | 0d | Dummy [0.02 h] | 0.02 | N | N | Est- | B00043 | 1 | 7 |
| A3460 |  | Primera mano de pintura | 18d | 2026-10-26 | 2026-11-23 | A3450 SS+2d | 323.33d |  | Dummy [0.02 h] | 0.02 | N | N | Est- | B00043 | 1 | 7 |
|  | P07 | **Piso 07** |  | 2026-11-19 | 2026-12-18 |  |  |  |  |  |  |  |  |  |  |  |
| A3480 |  | Estuco | 18d | 2026-11-19 | 2026-12-16 | A3450 | 181.33d | 0d | Dummy [0.02 h] | 0.02 | N | N | Est- | B00043 | 1 | 8 |
| A3490 |  | Primera mano de pintura | 18d | 2026-11-23 | 2026-12-18 | A3480 SS+2d | 305.33d |  | Dummy [0.02 h] | 0.02 | N | N | Est- | B00043 | 1 | 8 |
|  | P08 | **Piso 08** |  | 2026-12-16 | 2027-02-01 |  |  |  |  |  |  |  |  |  |  |  |
| A3510 |  | Estuco | 18d | 2026-12-16 | 2027-01-28 | A3480 | 181.33d | 0d | Dummy [0.02 h] | 0.02 | N | N | Est- | B00043 | 1 | 9 |
| A3520 |  | Primera mano de pintura | 18d | 2026-12-18 | 2027-02-01 | A3510 SS+2d | 287.33d |  | Dummy [0.02 h] | 0.02 | N | N | Est- | B00043 | 1 | 9 |
|  | P09 | **Piso 09** |  | 2027-01-28 | 2027-02-23 |  |  |  |  |  |  |  |  |  |  |  |
| A3540 |  | Estuco | 16d | 2027-01-28 | 2027-02-19 | A3510 | 181.33d | 0d | Dummy [0.02 h] | 0.02 | N | N | Est- | B00043 | 1 | 10 |
| A3550 |  | Primera mano de pintura | 16d | 2027-02-01 | 2027-02-23 | A3540 SS+2d | 271.33d |  | Dummy [0.02 h] | 0.02 | N | N | Est- | B00043 | 1 | 10 |
|  | P10 | **Piso 10** |  | 2027-02-19 | 2027-03-17 |  |  |  |  |  |  |  |  |  |  |  |
| A3570 |  | Estuco | 16d | 2027-02-19 | 2027-03-15 | A3540 | 181.33d | 0d | Dummy [0.02 h] | 0.02 | N | N | Est- | B00043 | 1 | 11 |
| A3580 |  | Primera mano de pintura | 16d | 2027-02-23 | 2027-03-17 | A3570 SS+2d | 255.33d |  | Dummy [0.02 h] | 0.02 | N | N | Est- | B00043 | 1 | 11 |
|  | P11 | **Piso 11** |  | 2027-03-15 | 2027-04-13 |  |  |  |  |  |  |  |  |  |  |  |
| A3600 |  | Estuco | 14d | 2027-03-15 | 2027-04-09 | A3570 | 181.33d | 0d | Dummy [0.02 h] | 0.02 | N | N | Est- | B00043 | 1 | 12 |
| A3610 |  | Primera mano de pintura | 14d | 2027-03-17 | 2027-04-13 | A3600 SS+2d | 241.33d |  | Dummy [0.02 h] | 0.02 | N | N | Est- | B00043 | 1 | 12 |
|  | P12 | **Piso 12** |  | 2027-04-09 | 2027-05-03 |  |  |  |  |  |  |  |  |  |  |  |
| A3630 |  | Estuco | 14d | 2027-04-09 | 2027-04-29 | A3600 | 181.33d | 0d | Dummy [0.02 h] | 0.02 | N | N | Est- | B00043 | 1 | 13 |
| A3640 |  | Primera mano de pintura | 14d | 2027-04-13 | 2027-05-03 | A3630 SS+2d | 227.33d |  | Dummy [0.02 h] | 0.02 | N | N | Est- | B00043 | 1 | 13 |

| ID | WBS | Activity | Duration | Start | Finish | Predecessors | Complete | Remaining | Planned start | Planned finish | Total float | Free float | Resources | Cost | Actual cost | Tipo 80-20 | Hito Inicio - Fin | CBB_Obras | CBB_Procesos | CBB_Piso | CBB_Etapas |
| --- | --- | --- | --- | --- | --- | --- | --- | --- | --- | --- | --- | --- | --- | --- | --- | --- | --- | --- | --- | --- | --- |
|  | P13 | **Piso 13** |  | 2027-04-29 | 2027-05-21 |  |  |  |  |  |  |  |  |  |  |  |  |  |  |  |  |
| A3660 |  | Estuco | 14d | 2027-04-29 | 2027-05-20 | A3630 |  |  |  |  | 181.33d | 0d | Dummy [0.02 h] | 0.02 |  | N | N | B00043 | Est- | 14 | 1 |
| A3670 |  | Primera mano de pintura | 13d | 2027-05-03 | 2027-05-21 | A3660 SS+2d |  |  |  |  | 214.33d |  | Dummy [0.02 h] | 0.02 |  | N | N | B00043 | Est- | 14 | 1 |
|  | P14 | **Piso 14** |  | 2027-05-13 | 2027-06-04 |  |  |  |  |  |  |  |  |  |  |  |  |  |  |  |  |
| A3690 |  | Estuco | 13d | 2027-05-13 | 2027-06-02 | A3660 FS-5d |  |  |  |  | 181.33d | 0d | Dummy [0.02 h] | 0.02 |  | N | N | B00043 | Est- | 15 | 1 |
| A3700 |  | Primera mano de pintura | 13d | 2027-05-17 | 2027-06-04 | A3690 SS+2d |  |  |  |  | 205.33d |  | Dummy [0.02 h] | 0.02 |  | N | N | B00043 | Est- | 15 | 1 |
|  | P15 | **Piso 15** |  | 2027-06-02 | 2027-06-23 |  |  |  |  |  |  |  |  |  |  |  |  |  |  |  |  |
| A3720 |  | Estuco | 12d | 2027-06-02 | 2027-06-21 | A3690 |  |  |  |  | 181.33d | 0d | Dummy [0.02 h] | 0.02 |  | N | N | B00043 | Est- | 16 | 1 |
| A3730 |  | Primera mano de pintura | 12d | 2027-06-04 | 2027-06-23 | A3720 SS+2d |  |  |  |  | 193.33d |  | Dummy [0.02 h] | 0.02 |  | N | N | B00043 | Est- | 16 | 1 |
|  | P16 | **Piso 16** |  | 2027-06-21 | 2027-07-12 |  |  |  |  |  |  |  |  |  |  |  |  |  |  |  |  |
| A15130 |  | Estuco | 12d | 2027-06-21 | 2027-07-08 | A3720 |  |  |  |  | 181.33d | 0d |  |  |  | N | N | B00043 |  |  |  |
| A15140 |  | Primera mano de pintura | 12d | 2027-06-23 | 2027-07-12 | A15130 SS+2d |  |  |  |  | 181.33d | 0d |  |  |  | N | N | B00043 |  |  |  |
|  | Cie_Ras | **Cielo Raso** |  | 2026-07-14 | 2027-06-23 |  |  |  |  |  |  |  |  |  |  |  |  |  |  |  |  |
|  | Est_Cielo Raso | **Estructura Cielo Raso** |  | 2026-07-14 | 2027-03-04 |  |  |  |  |  |  |  |  |  |  |  |  |  |  |  |  |
|  | P03 | **Piso 03** |  | 2026-07-14 | 2026-10-19 |  |  |  |  |  |  |  |  |  |  |  |  |  |  |  |  |
| A18120 |  | Estructura Cocina y labores | 4d | 2026-07-14 A | 2026-09-17 | A4190 | 20% | 3.2d | 2026-07-14 | 2026-07-21 | 31.93d | 0d | Dummy [0.02 h] | 0.02 | 0 | N | N | B00043 |  |  |  |
| A4190 |  | Estructura Baños | 8d | 2026-07-14 A | 2026-09-14 | A1230 SS | 20% | 6.4d | 2026-07-14 | 2026-07-27 | 31.93d | 0d | Dummy [0.02 h] | 0.02 | 0 | N | N | B00043 | Cie-Ras | 4 | 1 |
| A18130 |  | Estructura Hall de acceso | 4d | 2026-07-15 A | 2026-09-22 | A18120 | 20% | 3.2d | 2026-07-15 | 2026-07-22 | 31.93d | 0d | Dummy [0.02 h] | 0.02 | 0 | N | N | B00043 |  |  |  |
| A18140 |  | Estructura Alcobas | 8d | 2026-07-15 A | 2026-09-30 | A18130 | 20% | 6.4d | 2026-07-15 | 2026-07-28 | 31.93d | 0d | Dummy [0.02 h] | 0.02 | 0 | N | N | B00043 |  |  |  |
| A18150 |  | Estructura Salon Comedor | 4d | 2026-07-15 A | 2026-10-06 | A18140 | 20% | 3.2d | 2026-07-15 | 2026-07-22 | 31.93d | 0d | Dummy [0.02 h] | 0.02 | 0 | N | N | B00043 |  |  |  |
| A18160 |  | Estructura Balcon | 4d | 2026-10-06 | 2026-10-13 | A18150 |  |  |  |  | 346.93d | 0d | Dummy [0.02 h] | 0.02 |  | N | N | B00043 |  |  |  |
| A18170 |  | Estructura Sobre Muros concreto | 8d | 2026-10-06 | 2026-10-19 | A18160 FS-4d |  |  |  |  | 346.93d |  | Dummy [0.02 h] | 0.02 |  | N | N | B00043 |  |  |  |
|  | P04 | **Piso 04** |  | 2026-09-14 | 2026-11-05 |  |  |  |  |  |  |  |  |  |  |  |  |  |  |  |  |
| A18180 |  | Estructura Baños | 8d | 2026-09-14 | 2026-09-24 | A4190 |  |  |  |  | 264.93d | 0d | Dummy [0.02 h] | 0.02 |  | N | N | B00043 | Cie-Ras | 4 | 1 |
| A18190 |  | Estructura Cocina y labores | 4d | 2026-09-24 | 2026-09-30 | A18180 |  |  |  |  | 334.93d | 0d | Dummy [0.02 h] | 0.02 |  | N | N | B00043 |  |  |  |
| A18200 |  | Estructura Hall de acceso | 4d | 2026-09-30 | 2026-10-06 | A18190 |  |  |  |  | 334.93d | 0d | Dummy [0.02 h] | 0.02 |  | N | N | B00043 |  |  |  |
| A18210 |  | Estructura Alcobas | 8d | 2026-10-06 | 2026-10-19 | A18200 |  |  |  |  | 334.93d | 0d | Dummy [0.02 h] | 0.02 |  | N | N | B00043 |  |  |  |
| A18220 |  | Estructura Salon Comedor | 4d | 2026-10-19 | 2026-10-23 | A18210 |  |  |  |  | 334.93d | 0d | Dummy [0.02 h] | 0.02 |  | N | N | B00043 |  |  |  |
| A18230 |  | Estructura Balcon | 4d | 2026-10-23 | 2026-10-29 | A18220 |  |  |  |  | 334.93d | 0d | Dummy [0.02 h] | 0.02 |  | N | N | B00043 |  |  |  |
| A18240 |  | Estructura Sobre Muros concreto | 8d | 2026-10-23 | 2026-11-05 | A18230 FS-4d |  |  |  |  | 334.93d |  | Dummy [0.02 h] | 0.02 |  | N | N | B00043 |  |  |  |

| ID | WBS | Activity | Duration | Start | Finish | Predecessors | Total float | Free float | Resources | Cost | Tipo 80-20 | Hito Inicio - Fin | CBB_Piso | CBB_Procesos | CBB_Etapas | CBB_Obras |
| --- | --- | --- | --- | --- | --- | --- | --- | --- | --- | --- | --- | --- | --- | --- | --- | --- |
|  | P05 | **Piso 05** |  | 2026-09-24 | 2026-11-18 |  |  |  |  |  |  |  |  |  |  |  |
| A18250 |  | Estructura Baños | 8d | 2026-09-24 | 2026-10-06 | A18180 | 264.93d | 0d | Dummy [0.02 h] | 0.02 | N | N | 4 | Cie-Ras | 1 | B00043 |
| A18260 |  | Estructura Cocina y labores | 4d | 2026-10-06 | 2026-10-13 | A18250 | 326.93d | 0d | Dummy [0.02 h] | 0.02 | N | N |  |  |  | B00043 |
| A18270 |  | Estructura Hall de acceso | 4d | 2026-10-13 | 2026-10-19 | A18260 | 326.93d | 0d | Dummy [0.02 h] | 0.02 | N | N |  |  |  | B00043 |
| A18280 |  | Estructura Alcobas | 8d | 2026-10-19 | 2026-10-29 | A18270 | 326.93d | 0d | Dummy [0.02 h] | 0.02 | N | N |  |  |  | B00043 |
| A18290 |  | Estructura Salon Comedor | 4d | 2026-10-29 | 2026-11-05 | A18280 | 326.93d | 0d | Dummy [0.02 h] | 0.02 | N | N |  |  |  | B00043 |
| A18300 |  | Estructura Balcon | 4d | 2026-11-05 | 2026-11-11 | A18290 | 326.93d | 0d | Dummy [0.02 h] | 0.02 | N | N |  |  |  | B00043 |
| A18310 |  | Estructura Sobre Muros concreto | 8d | 2026-11-05 | 2026-11-18 | A18300 FS-4d | 326.93d |  | Dummy [0.02 h] | 0.02 | N | N |  |  |  | B00043 |
|  | P06 | **Piso 06** |  | 2026-10-06 | 2026-11-30 |  |  |  |  |  |  |  |  |  |  |  |
| A18320 |  | Estructura Baños | 8d | 2026-10-06 | 2026-10-19 | A18250 | 264.93d | 0d | Dummy [0.02 h] | 0.02 | N | N | 4 | Cie-Ras | 1 | B00043 |
| A18330 |  | Estructura Cocina y labores | 4d | 2026-10-19 | 2026-10-23 | A18320 | 318.93d | 0d | Dummy [0.02 h] | 0.02 | N | N |  |  |  | B00043 |
| A18340 |  | Estructura Hall de acceso | 4d | 2026-10-23 | 2026-10-29 | A18330 | 318.93d | 0d | Dummy [0.02 h] | 0.02 | N | N |  |  |  | B00043 |
| A18350 |  | Estructura Alcobas | 8d | 2026-10-29 | 2026-11-11 | A18340 | 318.93d | 0d | Dummy [0.02 h] | 0.02 | N | N |  |  |  | B00043 |
| A18360 |  | Estructura Salon Comedor | 4d | 2026-11-11 | 2026-11-18 | A18350 | 318.93d | 0d | Dummy [0.02 h] | 0.02 | N | N |  |  |  | B00043 |
| A18370 |  | Estructura Balcon | 4d | 2026-11-18 | 2026-11-24 | A18360 | 318.93d | 0d | Dummy [0.02 h] | 0.02 | N | N |  |  |  | B00043 |
| A18380 |  | Estructura Sobre Muros concreto | 8d | 2026-11-18 | 2026-11-30 | A18370 FS-4d | 318.93d |  | Dummy [0.02 h] | 0.02 | N | N |  |  |  | B00043 |
|  | P07 | **Piso 07** |  | 2026-10-19 | 2026-12-11 |  |  |  |  |  |  |  |  |  |  |  |
| A18390 |  | Estructura Baños | 8d | 2026-10-19 | 2026-10-29 | A18320 | 264.93d | 0d | Dummy [0.02 h] | 0.02 | N | N | 4 | Cie-Ras | 1 | B00043 |
| A18400 |  | Estructura Cocina y labores | 4d | 2026-10-29 | 2026-11-05 | A18390 | 310.93d | 0d | Dummy [0.02 h] | 0.02 | N | N |  |  |  | B00043 |
| A18410 |  | Estructura Hall de acceso | 4d | 2026-11-05 | 2026-11-11 | A18400 | 310.93d | 0d | Dummy [0.02 h] | 0.02 | N | N |  |  |  | B00043 |
| A18420 |  | Estructura Alcobas | 8d | 2026-11-11 | 2026-11-24 | A18410 | 310.93d | 0d | Dummy [0.02 h] | 0.02 | N | N |  |  |  | B00043 |
| A18430 |  | Estructura Salon Comedor | 4d | 2026-11-24 | 2026-11-30 | A18420 | 310.93d | 0d | Dummy [0.02 h] | 0.02 | N | N |  |  |  | B00043 |
| A18440 |  | Estructura Balcon | 4d | 2026-11-30 | 2026-12-04 | A18430 | 310.93d | 0d | Dummy [0.02 h] | 0.02 | N | N |  |  |  | B00043 |
| A18450 |  | Estructura Sobre Muros concreto | 8d | 2026-11-30 | 2026-12-11 | A18440 FS-4d | 310.93d |  | Dummy [0.02 h] | 0.02 | N | N |  |  |  | B00043 |

| ID | WBS | Activity | Duration | Start | Finish | Predecessors | Total float | Free float | Resources | Cost | Hito Inicio - Fin | Tipo 80-20 | CBB_Piso | CBB_Obras | CBB_Etapas | CBB_Procesos |
| --- | --- | --- | --- | --- | --- | --- | --- | --- | --- | --- | --- | --- | --- | --- | --- | --- |
|  | P08 | **Piso 08** |  | 2026-10-29 | 2026-12-23 |  |  |  |  |  |  |  |  |  |  |  |
| A18460 |  | Estructura Baños | 8d | 2026-10-29 | 2026-11-11 | A18390 | 264.93d | 0d | Dummy [0.02 h] | 0.02 | N | N | 4 | B00043 | 1 | Cie-Ras |
| A18470 |  | Estructura Cocina y labores | 4d | 2026-11-11 | 2026-11-18 | A18460 | 302.93d | 0d | Dummy [0.02 h] | 0.02 | N | N |  | B00043 |  |  |
| A18480 |  | Estructura Hall de acceso | 4d | 2026-11-18 | 2026-11-24 | A18470 | 302.93d | 0d | Dummy [0.02 h] | 0.02 | N | N |  | B00043 |  |  |
| A18490 |  | Estructura Alcobas | 8d | 2026-11-24 | 2026-12-04 | A18480 | 302.93d | 0d | Dummy [0.02 h] | 0.02 | N | N |  | B00043 |  |  |
| A18500 |  | Estructura Salon Comedor | 4d | 2026-12-04 | 2026-12-11 | A18490 | 302.93d | 0d | Dummy [0.02 h] | 0.02 | N | N |  | B00043 |  |  |
| A18510 |  | Estructura Balcon | 4d | 2026-12-11 | 2026-12-17 | A18500 | 302.93d | 0d | Dummy [0.02 h] | 0.02 | N | N |  | B00043 |  |  |
| A18520 |  | Estructura Sobre Muros concreto | 8d | 2026-12-11 | 2026-12-23 | A18510 FS-4d | 302.93d |  | Dummy [0.02 h] | 0.02 | N | N |  | B00043 |  |  |
|  | P09 | **Piso 09** |  | 2026-11-11 | 2027-01-12 |  |  |  |  |  |  |  |  |  |  |  |
| A18530 |  | Estructura Baños | 7d | 2026-11-11 | 2026-11-23 | A18460 | 264.93d | 0d | Dummy [0.02 h] | 0.02 | N | N | 4 | B00043 | 1 | Cie-Ras |
| A18540 |  | Estructura Cocina y labores | 3d | 2026-11-23 | 2026-11-26 | A18530 | 301.93d | 0d | Dummy [0.02 h] | 0.02 | N | N |  | B00043 |  |  |
| A18550 |  | Estructura Hall de acceso | 3d | 2026-11-26 | 2026-12-01 | A18540 | 301.93d | 0d | Dummy [0.02 h] | 0.02 | N | N |  | B00043 |  |  |
| A18560 |  | Estructura Alcobas | 7d | 2026-12-01 | 2026-12-11 | A18550 | 301.93d | 0d | Dummy [0.02 h] | 0.02 | N | N |  | B00043 |  |  |
| A18570 |  | Estructura Salon Comedor | 3d | 2026-12-11 | 2026-12-16 | A18560 | 301.93d | 0d | Dummy [0.02 h] | 0.02 | N | N |  | B00043 |  |  |
| A18590 |  | Estructura Sobre Muros concreto | 7d | 2026-12-15 | 2027-01-12 | A18580 FS-4d | 301.93d |  | Dummy [0.02 h] | 0.02 | N | N |  | B00043 |  |  |
| A18580 |  | Estructura Balcon | 3d | 2026-12-16 | 2026-12-21 | A18570 | 301.93d | 0d | Dummy [0.02 h] | 0.02 | N | N |  | B00043 |  |  |
|  | P10 | **Piso 10** |  | 2026-11-23 | 2027-01-21 |  |  |  |  |  |  |  |  |  |  |  |
| A18600 |  | Estructura Baños | 7d | 2026-11-23 | 2026-12-02 | A18530 | 264.93d | 0d | Dummy [0.02 h] | 0.02 | N | N | 4 | B00043 | 1 | Cie-Ras |
| A18610 |  | Estructura Cocina y labores | 3d | 2026-12-02 | 2026-12-07 | A18600 | 294.93d | 0d | Dummy [0.02 h] | 0.02 | N | N |  | B00043 |  |  |
| A18620 |  | Estructura Hall de acceso | 3d | 2026-12-07 | 2026-12-11 | A18610 | 294.93d | 0d | Dummy [0.02 h] | 0.02 | N | N |  | B00043 |  |  |
| A18630 |  | Estructura Alcobas | 7d | 2026-12-11 | 2026-12-22 | A18620 | 294.93d | 0d | Dummy [0.02 h] | 0.02 | N | N |  | B00043 |  |  |
| A18640 |  | Estructura Salon Comedor | 3d | 2026-12-22 | 2027-01-13 | A18630 | 294.93d | 0d | Dummy [0.02 h] | 0.02 | N | N |  | B00043 |  |  |
| A18660 |  | Estructura Sobre Muros concreto | 7d | 2027-01-12 | 2027-01-21 | A18650 FS-4d | 294.93d |  | Dummy [0.02 h] | 0.02 | N | N |  | B00043 |  |  |
| A18650 |  | Estructura Balcon | 3d | 2027-01-13 | 2027-01-18 | A18640 | 294.93d | 0d | Dummy [0.02 h] | 0.02 | N | N |  | B00043 |  |  |

| ID | WBS | Activity | Duration | Start | Finish | Predecessors | Total float | Free float | Resources | Cost | Hito Inicio - Fin | Tipo 80-20 | CBB_Piso | CBB_Procesos | CBB_Obras | CBB_Etapas |
| --- | --- | --- | --- | --- | --- | --- | --- | --- | --- | --- | --- | --- | --- | --- | --- | --- |
|  | P11 | **Piso 11** |  | 2026-12-02 | 2027-01-28 |  |  |  |  |  |  |  |  |  |  |  |
| A18670 |  | Estructura Baños | 6d | 2026-12-02 | 2026-12-11 | A18600 | 264.93d | 0d | Dummy [0.02 h] | 0.02 | N | N | 4 | Cie-Ras | B00043 | 1 |
| A18680 |  | Estructura Cocina y labores | 3d | 2026-12-11 | 2026-12-16 | A18670 | 289.93d | 0d | Dummy [0.02 h] | 0.02 | N | N |  |  | B00043 |  |
| A18690 |  | Estructura Hall de acceso | 3d | 2026-12-16 | 2026-12-21 | A18680 | 289.93d | 0d | Dummy [0.02 h] | 0.02 | N | N |  |  | B00043 |  |
| A18700 |  | Estructura Alcobas | 6d | 2026-12-21 | 2027-01-15 | A18690 | 289.93d | 0d | Dummy [0.02 h] | 0.02 | N | N |  |  | B00043 |  |
| A18710 |  | Estructura Salon Comedor | 3d | 2027-01-15 | 2027-01-20 | A18700 | 289.93d | 0d | Dummy [0.02 h] | 0.02 | N | N |  |  | B00043 |  |
| A18720 |  | Estructura Balcon | 3d | 2027-01-20 | 2027-01-25 | A18710 | 289.93d | 0d | Dummy [0.02 h] | 0.02 | N | N |  |  | B00043 |  |
| A18730 |  | Estructura Sobre Muros concreto | 6d | 2027-01-20 | 2027-01-28 | A18720 FS-3d | 289.93d |  | Dummy [0.02 h] | 0.02 | N | N |  |  | B00043 |  |
|  | P12 | **Piso 12** |  | 2026-12-11 | 2027-02-05 |  |  |  |  |  |  |  |  |  |  |  |
| A18740 |  | Estructura Baños | 6d | 2026-12-11 | 2026-12-21 | A18670 | 264.93d | 0d | Dummy [0.02 h] | 0.02 | N | N | 4 | Cie-Ras | B00043 | 1 |
| A18750 |  | Estructura Cocina y labores | 3d | 2026-12-21 | 2027-01-12 | A18740 | 283.93d | 0d | Dummy [0.02 h] | 0.02 | N | N |  |  | B00043 |  |
| A18760 |  | Estructura Hall de acceso | 3d | 2027-01-12 | 2027-01-15 | A18750 | 283.93d | 0d | Dummy [0.02 h] | 0.02 | N | N |  |  | B00043 |  |
| A18770 |  | Estructura Alcobas | 6d | 2027-01-15 | 2027-01-25 | A18760 | 283.93d | 0d | Dummy [0.02 h] | 0.02 | N | N |  |  | B00043 |  |
| A18780 |  | Estructura Salon Comedor | 3d | 2027-01-25 | 2027-01-28 | A18770 | 283.93d | 0d | Dummy [0.02 h] | 0.02 | N | N |  |  | B00043 |  |
| A18790 |  | Estructura Balcon | 3d | 2027-01-28 | 2027-02-02 | A18780 | 283.93d | 0d | Dummy [0.02 h] | 0.02 | N | N |  |  | B00043 |  |
| A18800 |  | Estructura Sobre Muros concreto | 6d | 2027-01-28 | 2027-02-05 | A18790 FS-3d | 283.93d |  | Dummy [0.02 h] | 0.02 | N | N |  |  | B00043 |  |
|  | P13 | **Piso 13** |  | 2026-12-21 | 2027-02-15 |  |  |  |  |  |  |  |  |  |  |  |
| A18810 |  | Estructura Baños | 6d | 2026-12-21 | 2027-01-15 | A18740 | 264.93d | 0d | Dummy [0.02 h] | 0.02 | N | N | 4 | Cie-Ras | B00043 | 1 |
| A18820 |  | Estructura Cocina y labores | 3d | 2027-01-15 | 2027-01-20 | A18810 | 277.93d | 0d | Dummy [0.02 h] | 0.02 | N | N |  |  | B00043 |  |
| A18830 |  | Estructura Hall de acceso | 3d | 2027-01-20 | 2027-01-25 | A18820 | 277.93d | 0d | Dummy [0.02 h] | 0.02 | N | N |  |  | B00043 |  |
| A18840 |  | Estructura Alcobas | 6d | 2027-01-25 | 2027-02-02 | A18830 | 277.93d | 0d | Dummy [0.02 h] | 0.02 | N | N |  |  | B00043 |  |
| A18850 |  | Estructura Salon Comedor | 3d | 2027-02-02 | 2027-02-05 | A18840 | 277.93d | 0d | Dummy [0.02 h] | 0.02 | N | N |  |  | B00043 |  |
| A18860 |  | Estructura Balcon | 3d | 2027-02-05 | 2027-02-10 | A18850 | 277.93d | 0d | Dummy [0.02 h] | 0.02 | N | N |  |  | B00043 |  |
| A18870 |  | Estructura Sobre Muros concreto | 6d | 2027-02-05 | 2027-02-15 | A18860 FS-3d | 277.93d |  | Dummy [0.02 h] | 0.02 | N | N |  |  | B00043 |  |

| ID | WBS | Activity | Duration | Start | Finish | Predecessors | Total float | Free float | Resources | Cost | Hito Inicio - Fin | Tipo 80-20 | CBB_Etapas | CBB_Piso | CBB_Obras | CBB_Procesos |
| --- | --- | --- | --- | --- | --- | --- | --- | --- | --- | --- | --- | --- | --- | --- | --- | --- |
|  | P14 | **Piso 14** |  | 2027-01-15 | 2027-02-23 |  |  |  |  |  |  |  |  |  |  |  |
| A18880 |  | Estructura Baños | 6d | 2027-01-15 | 2027-01-25 | A18810 | 264.93d | 0d | Dummy [0.02 h] | 0.02 | N | N | 1 | 4 | B00043 | Cie-Ras |
| A18890 |  | Estructura Cocina y labores | 3d | 2027-01-25 | 2027-01-28 | A18880 | 271.93d | 0d | Dummy [0.02 h] | 0.02 | N | N |  |  | B00043 |  |
| A18900 |  | Estructura Hall de acceso | 3d | 2027-01-28 | 2027-02-02 | A18890 | 271.93d | 0d | Dummy [0.02 h] | 0.02 | N | N |  |  | B00043 |  |
| A18910 |  | Estructura Alcobas | 6d | 2027-02-02 | 2027-02-10 | A18900 | 271.93d | 0d | Dummy [0.02 h] | 0.02 | N | N |  |  | B00043 |  |
| A18920 |  | Estructura Salon Comedor | 3d | 2027-02-10 | 2027-02-15 | A18910 | 271.93d | 0d | Dummy [0.02 h] | 0.02 | N | N |  |  | B00043 |  |
| A18930 |  | Estructura Balcon | 3d | 2027-02-15 | 2027-02-18 | A18920 | 271.93d | 0d | Dummy [0.02 h] | 0.02 | N | N |  |  | B00043 |  |
| A18940 |  | Estructura Sobre Muros concreto | 6d | 2027-02-15 | 2027-02-23 | A18930 FS-3d | 271.93d |  | Dummy [0.02 h] | 0.02 | N | N |  |  | B00043 |  |
|  | P15 | **Piso 15** |  | 2027-01-25 | 2027-02-25 |  |  |  |  |  |  |  |  |  |  |  |
| A18950 |  | Estructura Baños | 5d | 2027-01-25 | 2027-02-01 | A18880 | 264.93d | 0d | Dummy [0.02 h] | 0.02 | N | N | 1 | 4 | B00043 | Cie-Ras |
| A18960 |  | Estructura Cocina y labores | 2d | 2027-02-01 | 2027-02-03 | A18950 | 269.93d | 0d | Dummy [0.02 h] | 0.02 | N | N |  |  | B00043 |  |
| A18970 |  | Estructura Hall de acceso | 2d | 2027-02-03 | 2027-02-05 | A18960 | 269.93d | 0d | Dummy [0.02 h] | 0.02 | N | N |  |  | B00043 |  |
| A18980 |  | Estructura Alcobas | 5d | 2027-02-05 | 2027-02-12 | A18970 | 269.93d | 0d | Dummy [0.02 h] | 0.02 | N | N |  |  | B00043 |  |
| A18990 |  | Estructura Salon Comedor | 2d | 2027-02-12 | 2027-02-16 | A18980 | 269.93d | 0d | Dummy [0.02 h] | 0.02 | N | N |  |  | B00043 |  |
| A19000 |  | Estructura Balcon | 2d | 2027-02-16 | 2027-02-18 | A18990 | 269.93d | 0d | Dummy [0.02 h] | 0.02 | N | N |  |  | B00043 |  |
| A19010 |  | Estructura Sobre Muros concreto | 5d | 2027-02-18 | 2027-02-25 | A19000 | 269.93d |  | Dummy [0.02 h] | 0.02 | N | N |  |  | B00043 |  |
|  | P16 | **Piso 16** |  | 2027-02-01 | 2027-03-04 |  |  |  |  |  |  |  |  |  |  |  |
| A19020 |  | Estructura Baños | 5d | 2027-02-01 | 2027-02-08 | A18950 | 264.93d | 0d | Dummy [0.02 h] | 0.02 | N | N | 1 | 4 | B00043 | Cie-Ras |
| A19030 |  | Estructura Cocina y labores | 2d | 2027-02-08 | 2027-02-10 | A19020 | 264.93d | 0d | Dummy [0.02 h] | 0.02 | N | N |  |  | B00043 |  |
| A19040 |  | Estructura Hall de acceso | 2d | 2027-02-10 | 2027-02-12 | A19030 | 264.93d | 0d | Dummy [0.02 h] | 0.02 | N | N |  |  | B00043 |  |
| A19050 |  | Estructura Alcobas | 5d | 2027-02-12 | 2027-02-19 | A19040 | 264.93d | 0d | Dummy [0.02 h] | 0.02 | N | N |  |  | B00043 |  |
| A19060 |  | Estructura Salon Comedor | 2d | 2027-02-19 | 2027-02-23 | A19050 | 264.93d | 0d | Dummy [0.02 h] | 0.02 | N | N |  |  | B00043 |  |
| A19070 |  | Estructura Balcon | 2d | 2027-02-23 | 2027-02-25 | A19060 | 264.93d | 0d | Dummy [0.02 h] | 0.02 | N | N |  |  | B00043 |  |
| A19080 |  | Estructura Sobre Muros concreto | 5d | 2027-02-25 | 2027-03-04 | A19070 | 264.93d |  | Dummy [0.02 h] | 0.02 | N | N |  |  | B00043 |  |

| ID | WBS | Activity | Duration | Start | Finish | Predecessors | Total float | Free float | Resources | Cost | Hito Inicio - Fin | Tipo 80-20 | CBB_Piso | CBB_Procesos | CBB_Obras | CBB_Etapas |
| --- | --- | --- | --- | --- | --- | --- | --- | --- | --- | --- | --- | --- | --- | --- | --- | --- |
|  | Inst Soportes | **Inst Soportes** |  | 2027-01-28 | 2027-05-07 |  |  |  |  |  |  |  |  |  |  |  |
|  | P03 | **Piso 03** |  | 2027-01-28 | 2027-02-05 |  |  |  |  |  |  |  |  |  |  |  |
| A3810 |  | Ventiladores | 6d | 2027-01-28 | 2027-02-05 | A1210 SS | 223.93d | 0d | Dummy [0.02 h] | 0.02 | N | N | 4 | Pis | B00043 | 1 |
| A3820 |  | Campana | 6d | 2027-01-28 | 2027-02-05 | A3810 SS | 223.93d | 0d | Dummy [0.02 h] | 0.02 | N | N | 4 | Pis | B00043 | 1 |
|  | P04 | **Piso 04** |  | 2027-02-05 | 2027-02-15 |  |  |  |  |  |  |  |  |  |  |  |
| A3830 |  | Ventiladores | 6d | 2027-02-05 | 2027-02-15 | A3820 | 223.93d | 0d | Dummy [0.02 h] | 0.02 | N | N | 5 | Pis | B00043 | 1 |
| A3840 |  | Campana | 6d | 2027-02-05 | 2027-02-15 | A3830 SS | 223.93d | 0d | Dummy [0.02 h] | 0.02 | N | N | 5 | Pis | B00043 | 1 |
|  | P05 | **Piso 05** |  | 2027-02-15 | 2027-02-23 |  |  |  |  |  |  |  |  |  |  |  |
| A3850 |  | Campana | 6d | 2027-02-15 | 2027-02-23 | A3840 | 223.93d | 0d | Dummy [0.02 h] | 0.02 | N | N | 6 | Pis | B00043 | 1 |
| A3860 |  | Ventiladores | 6d | 2027-02-15 | 2027-02-23 | A3850 SS | 223.93d | 0d | Dummy [0.02 h] | 0.02 | N | N | 6 | Pis | B00043 | 1 |
|  | P06 | **Piso 06** |  | 2027-02-23 | 2027-03-03 |  |  |  |  |  |  |  |  |  |  |  |
| A3870 |  | Ventiladores | 6d | 2027-02-23 | 2027-03-03 | A3860 | 223.93d | 0d | Dummy [0.02 h] | 0.02 | N | N | 7 | Pis | B00043 | 1 |
| A3880 |  | Campana | 6d | 2027-02-23 | 2027-03-03 | A3870 SS | 223.93d | 0d | Dummy [0.02 h] | 0.02 | N | N | 7 | Pis | B00043 | 1 |
|  | P07 | **Piso 07** |  | 2027-03-03 | 2027-03-11 |  |  |  |  |  |  |  |  |  |  |  |
| A3890 |  | Ventiladores | 6d | 2027-03-03 | 2027-03-11 | A3880 | 223.93d | 0d | Dummy [0.02 h] | 0.02 | N | N | 8 | Pis | B00043 | 1 |
| A3900 |  | Campana | 6d | 2027-03-03 | 2027-03-11 | A3890 SS | 223.93d | 0d | Dummy [0.02 h] | 0.02 | N | N | 8 | Pis | B00043 | 1 |
|  | P08 | **Piso 08** |  | 2027-03-11 | 2027-03-19 |  |  |  |  |  |  |  |  |  |  |  |
| A3910 |  | Ventiladores | 6d | 2027-03-11 | 2027-03-19 | A3900 | 223.93d | 0d | Dummy [0.02 h] | 0.02 | N | N | 9 | Pis | B00043 | 1 |
| A3920 |  | Campana | 6d | 2027-03-11 | 2027-03-19 | A3910 SS | 223.93d | 0d | Dummy [0.02 h] | 0.02 | N | N | 9 | Pis | B00043 | 1 |
|  | P09 | **Piso 09** |  | 2027-03-19 | 2027-04-01 |  |  |  |  |  |  |  |  |  |  |  |
| A3930 |  | Ventiladores | 4d | 2027-03-19 | 2027-04-01 | A3920 | 223.93d | 0d | Dummy [0.02 h] | 0.02 | N | N | 10 | Pis | B00043 | 1 |
| A3940 |  | Campana | 4d | 2027-03-19 | 2027-04-01 | A3930 SS | 223.93d | 0d | Dummy [0.02 h] | 0.02 | N | N | 10 | Pis | B00043 | 1 |
|  | P10 | **Piso 10** |  | 2027-04-01 | 2027-04-07 |  |  |  |  |  |  |  |  |  |  |  |
| A3950 |  | Ventiladores | 4d | 2027-04-01 | 2027-04-07 | A3940 | 223.93d | 0d | Dummy [0.02 h] | 0.02 | N | N | 11 | Pis | B00043 | 1 |
| A3960 |  | Campana | 4d | 2027-04-01 | 2027-04-07 | A3950 SS | 223.93d | 0d | Dummy [0.02 h] | 0.02 | N | N | 11 | Pis | B00043 | 1 |

| ID | WBS | Activity | Duration | Start | Finish | Predecessors | Total float | Free float | Resources | Cost | Tipo 80-20 | Hito Inicio - Fin | CBB_Obras | CBB_Piso | CBB_Procesos | CBB_Etapas |
| --- | --- | --- | --- | --- | --- | --- | --- | --- | --- | --- | --- | --- | --- | --- | --- | --- |
|  | P11 | **Piso 11** |  | 2027-04-07 | 2027-04-13 |  |  |  |  |  |  |  |  |  |  |  |
| A3970 |  | Campana | 4d | 2027-04-07 | 2027-04-13 | A3960 | 223.93d | 0d | Dummy [0.02 h] | 0.02 | N | N | B00043 | 12 | Pis | 1 |
| A3980 |  | Ventiladores | 4d | 2027-04-07 | 2027-04-13 | A3970 SS | 223.93d | 0d | Dummy [0.02 h] | 0.02 | N | N | B00043 | 12 | Pis | 1 |
|  | P12 | **Piso 12** |  | 2027-04-13 | 2027-04-19 |  |  |  |  |  |  |  |  |  |  |  |
| A3990 |  | Ventiladores | 4d | 2027-04-13 | 2027-04-19 | A3980 | 223.93d | 0d | Dummy [0.02 h] | 0.02 | N | N | B00043 | 13 | Pis | 1 |
| A4000 |  | Campana | 4d | 2027-04-13 | 2027-04-19 | A3990 SS | 223.93d | 0d | Dummy [0.02 h] | 0.02 | N | N | B00043 | 13 | Pis | 1 |
|  | P13 | **Piso 13** |  | 2027-04-19 | 2027-04-23 |  |  |  |  |  |  |  |  |  |  |  |
| A4010 |  | Ventiladores | 4d | 2027-04-19 | 2027-04-23 | A4000 | 223.93d | 0d | Dummy [0.02 h] | 0.02 | N | N | B00043 | 14 | Pis | 1 |
| A4020 |  | Campana | 4d | 2027-04-19 | 2027-04-23 | A4010 SS | 223.93d | 0d | Dummy [0.02 h] | 0.02 | N | N | B00043 | 14 | Pis | 1 |
|  | P14 | **Piso 14** |  | 2027-04-23 | 2027-04-29 |  |  |  |  |  |  |  |  |  |  |  |
| A4030 |  | Ventiladores | 4d | 2027-04-23 | 2027-04-29 | A4020 | 223.93d | 0d | Dummy [0.02 h] | 0.02 | N | N | B00043 | 15 | Pis | 1 |
| A4040 |  | Campana | 4d | 2027-04-23 | 2027-04-29 | A4030 SS | 223.93d | 0d | Dummy [0.02 h] | 0.02 | N | N | B00043 | 15 | Pis | 1 |
|  | P15 | **Piso 15** |  | 2027-04-29 | 2027-05-04 |  |  |  |  |  |  |  |  |  |  |  |
| A4050 |  | Ventiladores | 3d | 2027-04-29 | 2027-05-04 | A4040 | 223.93d | 0d | Dummy [0.02 h] | 0.02 | N | N | B00043 | 16 | Pis | 1 |
| A4060 |  | Campana | 3d | 2027-04-29 | 2027-05-04 | A4050 SS | 223.93d | 0d | Dummy [0.02 h] | 0.02 | N | N | B00043 | 16 | Pis | 1 |
|  | P16 | **Piso 16** |  | 2027-05-04 | 2027-05-07 |  |  |  |  |  |  |  |  |  |  |  |
| A15150 |  | Campana | 3d | 2027-05-04 | 2027-05-07 | A4060 | 223.93d | 0d |  |  | N | N | B00043 |  |  |  |
| A15160 |  | Ventiladores | 3d | 2027-05-04 | 2027-05-07 | A15150 SS | 223.93d | 0d |  |  | N | N | B00043 |  |  |  |
|  | Laminado Pintura Cielo Raso | **Laminado Pintura Cielo Raso** |  | 2026-10-06 | 2027-06-23 |  |  |  |  |  |  |  |  |  |  |  |
|  | P03 | **Piso 03** |  | 2026-10-06 | 2026-12-09 |  |  |  |  |  |  |  |  |  |  |  |
| A4800 |  | Instalacion Lamina y Pintura | 42d | 2026-10-06 | 2026-12-09 | A1250 SS | 31.93d | 0d | Dummy [0.02 h] | 0.02 | N | N | B00043 | 4 | Enc | 1 |
|  | P04 | **Piso 04** |  | 2026-10-21 | 2026-12-23 |  |  |  |  |  |  |  |  |  |  |  |
| A4830 |  | Instalacion Lamina y Pintura | 42d | 2026-10-21 | 2026-12-23 | A4800 SS+10d | 193.93d | 0d | Dummy [0.02 h] | 0.02 | N | N | B00043 | 5 | Enc | 1 |
|  | P05 | **Piso 05** |  | 2026-11-05 | 2027-01-25 |  |  |  |  |  |  |  |  |  |  |  |
| A4860 |  | Instalacion Lamina y Pintura | 42d | 2026-11-05 | 2027-01-25 | A4830 SS+10d | 193.93d | 0d | Dummy [0.02 h] | 0.02 | N | N | B00043 | 6 | Enc | 1 |

| ID | WBS | Activity | Duration | Start | Finish | Predecessors | Total float | Free float | Resources | Cost | Tipo 80-20 | Hito Inicio - Fin | CBB_Obras | CBB_Procesos | CBB_Etapas | CBB_Piso |
| --- | --- | --- | --- | --- | --- | --- | --- | --- | --- | --- | --- | --- | --- | --- | --- | --- |
|  | P06 | **Piso 06** |  | 2026-11-20 | 2027-02-08 |  |  |  |  |  |  |  |  |  |  |  |
| A4890 |  | Instalacion Lamina y Pintura | 42d | 2026-11-20 | 2027-02-08 | A4860 SS+10d | 193.93d | 0d | Dummy [0.02 h] | 0.02 | N | N | B00043 | Enc | 1 | 7 |
|  | P07 | **Piso 07** |  | 2026-12-04 | 2027-02-22 |  |  |  |  |  |  |  |  |  |  |  |
| A4920 |  | Instalacion Lamina y Pintura | 42d | 2026-12-04 | 2027-02-22 | A4890 SS+10d | 193.93d | 0d | Dummy [0.02 h] | 0.02 | N | N | B00043 | Enc | 1 | 8 |
|  | P08 | **Piso 08** |  | 2026-12-21 | 2027-03-08 |  |  |  |  |  |  |  |  |  |  |  |
| A4950 |  | Instalacion Lamina y Pintura | 42d | 2026-12-21 | 2027-03-08 | A4920 SS+10d | 193.93d | 0d | Dummy [0.02 h] | 0.02 | N | N | B00043 | Enc | 1 | 9 |
|  | P09 | **Piso 09** |  | 2027-02-04 | 2027-03-29 |  |  |  |  |  |  |  |  |  |  |  |
| A4980 |  | Instalacion Lamina y Pintura | 32d | 2027-02-04 | 2027-03-29 | A4950 SS+20d | 193.93d | 0d | Dummy [0.02 h] | 0.02 | N | N | B00043 | Enc | 1 | 10 |
|  | P10 | **Piso 10** |  | 2027-02-18 | 2027-04-12 |  |  |  |  |  |  |  |  |  |  |  |
| A5010 |  | Instalacion Lamina y Pintura | 32d | 2027-02-18 | 2027-04-12 | A4980 SS+10d | 193.93d | 0d | Dummy [0.02 h] | 0.02 | N | N | B00043 | Enc | 1 | 11 |
|  | P11 | **Piso 11** |  | 2027-03-04 | 2027-04-26 |  |  |  |  |  |  |  |  |  |  |  |
| A5040 |  | Instalacion Lamina y Pintura | 32d | 2027-03-04 | 2027-04-26 | A5010 SS+10d | 193.93d | 0d | Dummy [0.02 h] | 0.02 | N | N | B00043 | Enc | 1 | 12 |
|  | P12 | **Piso 12** |  | 2027-03-18 | 2027-05-11 |  |  |  |  |  |  |  |  |  |  |  |
| A5070 |  | Instalacion Lamina y Pintura | 32d | 2027-03-18 | 2027-05-11 | A5040 SS+10d | 193.93d | 0d | Dummy [0.02 h] | 0.02 | N | N | B00043 | Enc | 1 | 13 |
|  | P13 | **Piso 13** |  | 2027-04-08 | 2027-05-25 |  |  |  |  |  |  |  |  |  |  |  |
| A5100 |  | Instalacion Lamina y Pintura | 32d | 2027-04-08 | 2027-05-25 | A5070 SS+10d | 193.93d | 0d | Dummy [0.02 h] | 0.02 | N | N | B00043 | Enc | 1 | 14 |
|  | P14 | **Piso 14** |  | 2027-04-22 | 2027-06-10 |  |  |  |  |  |  |  |  |  |  |  |
| A5130 |  | Instalacion Lamina y Pintura | 32d | 2027-04-22 | 2027-06-10 | A5100 SS+10d | 193.93d | 0d | Dummy [0.02 h] | 0.02 | N | N | B00043 | Enc | 1 | 15 |
|  | P15 | **Piso 15** |  | 2027-05-06 | 2027-06-09 |  |  |  |  |  |  |  |  |  |  |  |
| A5160 |  | Instalacion Lamina y Pintura | 21d | 2027-05-06 | 2027-06-09 | A5130 SS+10d | 193.93d | 0d | Dummy [0.02 h] | 0.02 | N | N | B00043 | Enc | 1 | 16 |
|  | P16 | **Piso 16** |  | 2027-05-21 | 2027-06-23 |  |  |  |  |  |  |  |  |  |  |  |
| A15210 |  | Instalacion Lamina y Pintura | 21d | 2027-05-21 | 2027-06-23 | A5160 SS+10d | 193.93d | 0d |  |  | N | N | B00043 |  |  |  |
|  | Estuco y Pintura-02 | **Estuco y Pintura-02** |  | 2026-11-09 | 2027-08-17 |  |  |  |  |  |  |  |  |  |  |  |
|  | P03 | **Piso 03** |  | 2026-11-09 | 2026-11-30 |  |  |  |  |  |  |  |  |  |  |  |
| A19630 |  | Segunda Mano de pintura | 14d | 2026-11-09 | 2026-11-30 | A1310 | 31.93d | 0d | Dummy [0.02 h] | 0.02 | N | N | B00043 |  |  |  |

| ID | WBS | Activity | Duration | Start | Finish | Predecessors | Total float | Free float | Resources | Cost | Tipo 80-20 | Hito Inicio - Fin | CBB_Obras |
| --- | --- | --- | --- | --- | --- | --- | --- | --- | --- | --- | --- | --- | --- |
|  | P04 | **Piso 04** |  | 2026-11-30 | 2026-12-21 |  |  |  |  |  |  |  |  |
| A19640 |  | Segunda Mano de pintura | 14d | 2026-11-30 | 2026-12-21 | A19630 | 31.93d | 0d | Dummy [0.02 h] | 0.02 | N | N | B00043 |
|  | P05 | **Piso 05** |  | 2026-12-21 | 2027-01-27 |  |  |  |  |  |  |  |  |
| A19650 |  | Segunda Mano de pintura | 14d | 2026-12-21 | 2027-01-27 | A19640 | 31.93d | 0d | Dummy [0.02 h] | 0.02 | N | N | B00043 |
|  | P06 | **Piso 06** |  | 2027-01-27 | 2027-02-16 |  |  |  |  |  |  |  |  |
| A19670 |  | Segunda Mano de pintura | 14d | 2027-01-27 | 2027-02-16 | A19650 | 157.93d | 0d | Dummy [0.02 h] | 0.02 | N | N | B00043 |
|  | P07 | **Piso 07** |  | 2027-02-16 | 2027-03-08 |  |  |  |  |  |  |  |  |
| A19680 |  | Segunda Mano de pintura | 14d | 2027-02-16 | 2027-03-08 | A19670 | 157.93d | 0d | Dummy [0.02 h] | 0.02 | N | N | B00043 |
|  | P08 | **Piso 08** |  | 2027-03-08 | 2027-04-02 |  |  |  |  |  |  |  |  |
| A19690 |  | Segunda Mano de pintura | 14d | 2027-03-08 | 2027-04-02 | A19680 | 157.93d | 0d | Dummy [0.02 h] | 0.02 | N | N | B00043 |
|  | P09 | **Piso 09** |  | 2027-04-02 | 2027-04-20 |  |  |  |  |  |  |  |  |
| A19700 |  | Segunda Mano de pintura | 12d | 2027-04-02 | 2027-04-20 | A19690 | 157.93d | 0d | Dummy [0.02 h] | 0.02 | N | N | B00043 |
|  | P10 | **Piso 10** |  | 2027-04-20 | 2027-05-06 |  |  |  |  |  |  |  |  |
| A19710 |  | Segunda Mano de pintura | 12d | 2027-04-20 | 2027-05-06 | A19700 | 157.93d | 0d | Dummy [0.02 h] | 0.02 | N | N | B00043 |
|  | P11 | **Piso 11** |  | 2027-05-06 | 2027-05-24 |  |  |  |  |  |  |  |  |
| A19720 |  | Segunda Mano de pintura | 11d | 2027-05-06 | 2027-05-24 | A19710 | 157.93d | 0d | Dummy [0.02 h] | 0.02 | N | N | B00043 |
|  | P12 | **Piso 12** |  | 2027-05-24 | 2027-06-10 |  |  |  |  |  |  |  |  |
| A19730 |  | Segunda Mano de pintura | 11d | 2027-05-24 | 2027-06-10 | A19720 | 157.93d | 0d | Dummy [0.02 h] | 0.02 | N | N | B00043 |
|  | P13 | **Piso 13** |  | 2027-06-10 | 2027-06-25 |  |  |  |  |  |  |  |  |
| A19750 |  | Segunda Mano de pintura | 11d | 2027-06-10 | 2027-06-25 | A19730 | 157.93d | 0d | Dummy [0.02 h] | 0.02 | N | N | B00043 |
|  | P14 | **Piso 14** |  | 2027-06-25 | 2027-07-13 |  |  |  |  |  |  |  |  |
| A19760 |  | Segunda Mano de pintura | 11d | 2027-06-25 | 2027-07-13 | A19750 | 157.93d | 0d | Dummy [0.02 h] | 0.02 | N | N | B00043 |
|  | P15 | **Piso 15** |  | 2027-07-13 | 2027-07-27 |  |  |  |  |  |  |  |  |
| A19770 |  | Segunda Mano de pintura | 9d | 2027-07-13 | 2027-07-27 | A19760 | 157.93d | 0d | Dummy [0.02 h] | 0.02 | N | N | B00043 |

| ID | WBS | Activity | Duration | Start | Finish | Predecessors | Total float | Free float | Resources | Cost | Hito Inicio - Fin | Tipo 80-20 | CBB_Obras | CBB_Procesos | CBB_Etapas | CBB_Piso |
| --- | --- | --- | --- | --- | --- | --- | --- | --- | --- | --- | --- | --- | --- | --- | --- | --- |
|  | P16 | **Piso 16** |  | 2027-08-03 | 2027-08-17 |  |  |  |  |  |  |  |  |  |  |  |
| A19780 |  | Segunda Mano de pintura | 9d | 2027-08-03 | 2027-08-17 | A19770 FS+5d | 157.93d | 0d | Dummy [0.02 h] | 0.02 | N | N | B00043 |  |  |  |
|  | Ceramica y Enchapes | **Ceramica y Enchapes** |  | 2026-10-13 | 2027-08-03 |  |  |  |  |  |  |  |  |  |  |  |
|  | P03 | **Piso 03** |  | 2026-10-13 | 2026-12-04 |  |  |  |  |  |  |  |  |  |  |  |
| A5690 |  | Muros y piso de Baño | 12d | 2026-10-13 | 2026-10-29 | A1290 SS-60d | 31.93d | 0d | Dummy [0.02 h] | 0.02 | N | N | B00043 | Car-Mad | 1 | 4 |
| A5700 |  | Piso de Alcobas | 8d | 2026-10-29 | 2026-11-11 | A5690 | 31.93d | 0d | Dummy [0.02 h] | 0.02 | N | N | B00043 | Car-Mad | 1 | 4 |
| A5710 |  | Piso Sala | 4d | 2026-11-11 | 2026-11-18 | A5700 | 31.93d | 0d | Dummy [0.02 h] | 0.02 | N | N | B00043 | Car-Mad | 1 | 4 |
| A5720 |  | Piso cocina y labores | 4d | 2026-11-18 | 2026-11-24 | A5710 | 264.93d | 0d | Dummy [0.02 h] | 0.02 | N | N | B00043 | Car-Mad | 1 | 4 |
| A5730 |  | Piso Balcon | 4d | 2026-11-24 | 2026-11-30 | A5720 | 264.93d | 0d | Dummy [0.02 h] | 0.02 | N | N | B00043 | Car-Mad | 1 | 4 |
| A5740 |  | Salpicadero Lavadero | 4d | 2026-11-30 | 2026-12-04 | A5730 | 264.93d | 28d | Dummy [0.02 h] | 0.02 | N | N | B00043 | Car-Mad | 1 | 4 |
|  | P04 | **Piso 04** |  | 2026-11-30 | 2027-02-08 |  |  |  |  |  |  |  |  |  |  |  |
| A5750 |  | Muros y piso de Baño | 12d | 2026-11-30 | 2026-12-17 | A5690 FS+20d | 166.93d | 0d | Dummy [0.02 h] | 0.02 | N | N | B00043 | Car-Mad | 1 | 5 |
| A5760 |  | Piso de Alcobas | 8d | 2026-12-17 | 2027-01-15 | A5700, A5750 | 201.93d | 0d | Dummy [0.02 h] | 0.02 | N | N | B00043 | Car-Mad | 1 | 5 |
| A5770 |  | Piso Sala | 4d | 2027-01-15 | 2027-01-21 | A5710, A5760 | 236.93d | 0d | Dummy [0.02 h] | 0.02 | N | N | B00043 | Car-Mad | 1 | 5 |
| A5780 |  | Piso cocina y labores | 4d | 2027-01-21 | 2027-01-27 | A5770, A5720 | 236.93d | 0d | Dummy [0.02 h] | 0.02 | N | N | B00043 | Car-Mad | 1 | 5 |
| A5790 |  | Piso Balcon | 4d | 2027-01-27 | 2027-02-02 | A5730, A5780 | 236.93d | 0d | Dummy [0.02 h] | 0.02 | N | N | B00043 | Car-Mad | 1 | 5 |
| A5800 |  | Salpicadero Lavadero | 4d | 2027-02-02 | 2027-02-08 | A5740, A5790 | 236.93d | 8d | Dummy [0.02 h] | 0.02 | N | N | B00043 | Car-Mad | 1 | 5 |
|  | P05 | **Piso 05** |  | 2026-12-17 | 2027-02-24 |  |  |  |  |  |  |  |  |  |  |  |
| A5810 |  | Muros y piso de Baño | 12d | 2026-12-17 | 2027-01-21 | A5750 | 166.93d | 0d | Dummy [0.02 h] | 0.02 | N | N | B00043 | Car-Mad | 1 | 6 |
| A5820 |  | Piso de Alcobas | 8d | 2027-01-21 | 2027-02-02 | A5810, A5760 | 197.93d | 0d | Dummy [0.02 h] | 0.02 | N | N | B00043 | Car-Mad | 1 | 6 |
| A5830 |  | Piso Sala | 4d | 2027-02-02 | 2027-02-08 | A5820, A5770 | 228.93d | 0d | Dummy [0.02 h] | 0.02 | N | N | B00043 | Car-Mad | 1 | 6 |
| A5840 |  | Piso cocina y labores | 4d | 2027-02-08 | 2027-02-12 | A5830, A5780 | 228.93d | 0d | Dummy [0.02 h] | 0.02 | N | N | B00043 | Car-Mad | 1 | 6 |
| A5850 |  | Piso Balcon | 4d | 2027-02-12 | 2027-02-18 | A5840, A5790 | 228.93d | 0d | Dummy [0.02 h] | 0.02 | N | N | B00043 | Car-Mad | 1 | 6 |
| A5860 |  | Salpicadero Lavadero | 4d | 2027-02-18 | 2027-02-24 | A5850, A5800 | 228.93d | 8d | Dummy [0.02 h] | 0.02 | N | N | B00043 | Car-Mad | 1 | 6 |

| ID | WBS | Activity | Duration | Start | Finish | Predecessors | Total float | Free float | Resources | Cost | Hito Inicio - Fin | Tipo 80-20 | CBB_Etapas | CBB_Piso | CBB_Procesos | CBB_Obras |
| --- | --- | --- | --- | --- | --- | --- | --- | --- | --- | --- | --- | --- | --- | --- | --- | --- |
|  | P06 | **Piso 06** |  | 2027-01-21 | 2027-03-12 |  |  |  |  |  |  |  |  |  |  |  |
| A5870 |  | Muros y piso de Baño | 12d | 2027-01-21 | 2027-02-08 | A5810 | 166.93d | 0d | Dummy [0.02 h] | 0.02 | N | N | 1 | 7 | Car-Mad | B00043 |
| A5880 |  | Piso de Alcobas | 8d | 2027-02-08 | 2027-02-18 | A5870, A5820 | 193.93d | 0d | Dummy [0.02 h] | 0.02 | N | N | 1 | 7 | Car-Mad | B00043 |
| A5890 |  | Piso Sala | 4d | 2027-02-18 | 2027-02-24 | A5880, A5830 | 220.93d | 0d | Dummy [0.02 h] | 0.02 | N | N | 1 | 7 | Car-Mad | B00043 |
| A5900 |  | Piso cocina y labores | 4d | 2027-02-24 | 2027-03-02 | A5840, A5890 | 220.93d | 0d | Dummy [0.02 h] | 0.02 | N | N | 1 | 7 | Car-Mad | B00043 |
| A5910 |  | Piso Balcon | 4d | 2027-03-02 | 2027-03-08 | A5900, A5850 | 220.93d | 0d | Dummy [0.02 h] | 0.02 | N | N | 1 | 7 | Car-Mad | B00043 |
| A5920 |  | Salpicadero Lavadero | 4d | 2027-03-08 | 2027-03-12 | A5860, A5910 | 220.93d | 8d | Dummy [0.02 h] | 0.02 | N | N | 1 | 7 | Car-Mad | B00043 |
|  | P07 | **Piso 07** |  | 2027-02-08 | 2027-04-06 |  |  |  |  |  |  |  |  |  |  |  |
| A5930 |  | Muros y piso de Baño | 12d | 2027-02-08 | 2027-02-24 | A5870 | 166.93d | 0d | Dummy [0.02 h] | 0.02 | N | N | 1 | 8 | Car-Mad | B00043 |
| A5940 |  | Piso de Alcobas | 8d | 2027-02-24 | 2027-03-08 | A5880, A5930 | 189.93d | 0d | Dummy [0.02 h] | 0.02 | N | N | 1 | 8 | Car-Mad | B00043 |
| A5950 |  | Piso Sala | 4d | 2027-03-08 | 2027-03-12 | A5890, A5940 | 212.93d | 0d | Dummy [0.02 h] | 0.02 | N | N | 1 | 8 | Car-Mad | B00043 |
| A5960 |  | Piso cocina y labores | 4d | 2027-03-12 | 2027-03-18 | A5900, A5950 | 212.93d | 0d | Dummy [0.02 h] | 0.02 | N | N | 1 | 8 | Car-Mad | B00043 |
| A5970 |  | Piso Balcon | 4d | 2027-03-18 | 2027-03-31 | A5910, A5960 | 212.93d | 0d | Dummy [0.02 h] | 0.02 | N | N | 1 | 8 | Car-Mad | B00043 |
| A5980 |  | Salpicadero Lavadero | 4d | 2027-03-31 | 2027-04-06 | A5920, A5970 | 212.93d | 8d | Dummy [0.02 h] | 0.02 | N | N | 1 | 8 | Car-Mad | B00043 |
|  | P08 | **Piso 08** |  | 2027-02-24 | 2027-04-22 |  |  |  |  |  |  |  |  |  |  |  |
| A5990 |  | Muros y piso de Baño | 12d | 2027-02-24 | 2027-03-12 | A5930 | 166.93d | 0d | Dummy [0.02 h] | 0.02 | N | N | 1 | 9 | Car-Mad | B00043 |
| A6000 |  | Piso de Alcobas | 8d | 2027-03-12 | 2027-03-31 | A5990, A5940 | 185.93d | 0d | Dummy [0.02 h] | 0.02 | N | N | 1 | 9 | Car-Mad | B00043 |
| A6010 |  | Piso Sala | 4d | 2027-03-31 | 2027-04-06 | A6000, A5950 | 204.93d | 0d | Dummy [0.02 h] | 0.02 | N | N | 1 | 9 | Car-Mad | B00043 |
| A6020 |  | Piso cocina y labores | 4d | 2027-04-06 | 2027-04-12 | A6010, A5960 | 204.93d | 0d | Dummy [0.02 h] | 0.02 | N | N | 1 | 9 | Car-Mad | B00043 |
| A6030 |  | Piso Balcon | 4d | 2027-04-12 | 2027-04-16 | A6020, A5970 | 204.93d | 0d | Dummy [0.02 h] | 0.02 | N | N | 1 | 9 | Car-Mad | B00043 |
| A6040 |  | Salpicadero Lavadero | 4d | 2027-04-16 | 2027-04-22 | A5980, A6030 | 204.93d | 2d | Dummy [0.02 h] | 0.02 | N | N | 1 | 9 | Car-Mad | B00043 |
|  | P09 | **Piso 09** |  | 2027-03-12 | 2027-04-29 |  |  |  |  |  |  |  |  |  |  |  |
| A6050 |  | Muros y piso de Baño | 10d | 2027-03-12 | 2027-04-02 | A5990 | 166.93d | 0d | Dummy [0.02 h] | 0.02 | N | N | 1 | 10 | Car-Mad | B00043 |
| A6060 |  | Piso de Alcobas | 7d | 2027-04-02 | 2027-04-13 | A6000, A6050 | 183.93d | 0d | Dummy [0.02 h] | 0.02 | N | N | 1 | 10 | Car-Mad | B00043 |
| A6070 |  | Piso Sala | 3d | 2027-04-13 | 2027-04-16 | A6010, A6060 | 202.93d | 0d | Dummy [0.02 h] | 0.02 | N | N | 1 | 10 | Car-Mad | B00043 |
| A6080 |  | Piso cocina y labores | 3d | 2027-04-16 | 2027-04-21 | A6020, A6070 | 202.93d | 0d | Dummy [0.02 h] | 0.02 | N | N | 1 | 10 | Car-Mad | B00043 |
| A6090 |  | Piso Balcon | 3d | 2027-04-21 | 2027-04-26 | A6030, A6080 | 202.93d | 0d | Dummy [0.02 h] | 0.02 | N | N | 1 | 10 | Car-Mad | B00043 |
| A6100 |  | Salpicadero Lavadero | 3d | 2027-04-26 | 2027-04-29 | A6040, A6090 | 202.93d | 7d | Dummy [0.02 h] | 0.02 | N | N | 1 | 10 | Car-Mad | B00043 |

| ID | WBS | Activity | Duration | Start | Finish | Predecessors | Total float | Free float | Resources | Cost | Hito Inicio - Fin | Tipo 80-20 | CBB_Etapas | CBB_Obras | CBB_Piso | CBB_Procesos |
| --- | --- | --- | --- | --- | --- | --- | --- | --- | --- | --- | --- | --- | --- | --- | --- | --- |
|  | P10 | **Piso 10** |  | 2027-04-02 | 2027-05-14 |  |  |  |  |  |  |  |  |  |  |  |
| A6110 |  | Muros y piso de Baño | 10d | 2027-04-02 | 2027-04-16 | A6050 | 166.93d | 0d | Dummy [0.02 h] | 0.02 | N | N | 1 | B00043 | 11 | Car-Mad |
| A6120 |  | Piso de Alcobas | 7d | 2027-04-16 | 2027-04-27 | A6110, A6060 | 180.93d | 0d | Dummy [0.02 h] | 0.02 | N | N | 1 | B00043 | 11 | Car-Mad |
| A6130 |  | Piso Sala | 3d | 2027-04-27 | 2027-04-30 | A6070, A6120 | 195.93d | 0d | Dummy [0.02 h] | 0.02 | N | N | 1 | B00043 | 11 | Car-Mad |
| A6140 |  | Piso cocina y labores | 3d | 2027-04-30 | 2027-05-05 | A6080, A6130 | 195.93d | 0d | Dummy [0.02 h] | 0.02 | N | N | 1 | B00043 | 11 | Car-Mad |
| A6150 |  | Piso Balcon | 3d | 2027-05-05 | 2027-05-11 | A6140, A6090 | 195.93d | 0d | Dummy [0.02 h] | 0.02 | N | N | 1 | B00043 | 11 | Car-Mad |
| A6160 |  | Salpicadero Lavadero | 3d | 2027-05-11 | 2027-05-14 | A6150, A6100 | 195.93d | 5d | Dummy [0.02 h] | 0.02 | N | N | 1 | B00043 | 11 | Car-Mad |
|  | P11 | **Piso 11** |  | 2027-04-16 | 2027-05-26 |  |  |  |  |  |  |  |  |  |  |  |
| A6170 |  | Muros y piso de Baño | 9d | 2027-04-16 | 2027-04-29 | A6110 | 166.93d | 0d | Dummy [0.02 h] | 0.02 | N | N | 1 | B00043 | 12 | Car-Mad |
| A6180 |  | Piso de Alcobas | 6d | 2027-04-29 | 2027-05-07 | A6170, A6120 | 178.93d | 0d | Dummy [0.02 h] | 0.02 | N | N | 1 | B00043 | 12 | Car-Mad |
| A6190 |  | Piso Sala | 3d | 2027-05-07 | 2027-05-13 | A6180, A6130 | 190.93d | 0d | Dummy [0.02 h] | 0.02 | N | N | 1 | B00043 | 12 | Car-Mad |
| A6200 |  | Piso cocina y labores | 3d | 2027-05-13 | 2027-05-18 | A6190, A6140 | 190.93d | 0d | Dummy [0.02 h] | 0.02 | N | N | 1 | B00043 | 12 | Car-Mad |
| A6210 |  | Piso Balcon | 3d | 2027-05-18 | 2027-05-21 | A6200, A6150 | 190.93d | 0d | Dummy [0.02 h] | 0.02 | N | N | 1 | B00043 | 12 | Car-Mad |
| A6220 |  | Salpicadero Lavadero | 3d | 2027-05-21 | 2027-05-26 | A6210, A6160 | 190.93d | 6d | Dummy [0.02 h] | 0.02 | N | N | 1 | B00043 | 12 | Car-Mad |
|  | P12 | **Piso 12** |  | 2027-04-29 | 2027-06-10 |  |  |  |  |  |  |  |  |  |  |  |
| A6230 |  | Muros y piso de Baño | 9d | 2027-04-29 | 2027-05-13 | A6170 | 166.93d | 0d | Dummy [0.02 h] | 0.02 | N | N | 1 | B00043 | 13 | Car-Mad |
| A6240 |  | Piso de Alcobas | 6d | 2027-05-13 | 2027-05-21 | A6230, A6180 | 175.93d | 0d | Dummy [0.02 h] | 0.02 | N | N | 1 | B00043 | 13 | Car-Mad |
| A6250 |  | Piso Sala | 3d | 2027-05-21 | 2027-05-26 | A6240, A6190 | 184.93d | 0d | Dummy [0.02 h] | 0.02 | N | N | 1 | B00043 | 13 | Car-Mad |
| A6260 |  | Piso cocina y labores | 3d | 2027-05-26 | 2027-06-01 | A6250, A6200 | 184.93d | 0d | Dummy [0.02 h] | 0.02 | N | N | 1 | B00043 | 13 | Car-Mad |
| A6270 |  | Piso Balcon | 3d | 2027-06-01 | 2027-06-04 | A6260, A6210 | 184.93d | 0d | Dummy [0.02 h] | 0.02 | N | N | 1 | B00043 | 13 | Car-Mad |
| A6280 |  | Salpicadero Lavadero | 3d | 2027-06-04 | 2027-06-10 | A6270, A6220 | 184.93d | 6d | Dummy [0.02 h] | 0.02 | N | N | 1 | B00043 | 13 | Car-Mad |
|  | P13 | **Piso 13** |  | 2027-05-13 | 2027-06-23 |  |  |  |  |  |  |  |  |  |  |  |
| A6290 |  | Muros y piso de Baño | 9d | 2027-05-13 | 2027-05-26 | A6230 | 166.93d | 0d | Dummy [0.02 h] | 0.02 | N | N | 1 | B00043 | 14 | Car-Mad |
| A6300 |  | Piso de Alcobas | 6d | 2027-05-26 | 2027-06-04 | A6240, A6290 | 172.93d | 0d | Dummy [0.02 h] | 0.02 | N | N | 1 | B00043 | 14 | Car-Mad |
| A6310 |  | Piso Sala | 3d | 2027-06-04 | 2027-06-10 | A6250, A6300 | 178.93d | 0d | Dummy [0.02 h] | 0.02 | N | N | 1 | B00043 | 14 | Car-Mad |
| A6320 |  | Piso cocina y labores | 3d | 2027-06-10 | 2027-06-15 | A6260, A6310 | 178.93d | 0d | Dummy [0.02 h] | 0.02 | N | N | 1 | B00043 | 14 | Car-Mad |
| A6330 |  | Piso Balcon | 3d | 2027-06-15 | 2027-06-18 | A6270, A6320 | 178.93d | 0d | Dummy [0.02 h] | 0.02 | N | N | 1 | B00043 | 14 | Car-Mad |
| A6340 |  | Salpicadero Lavadero | 3d | 2027-06-18 | 2027-06-23 | A6280, A6330 | 178.93d | 5d | Dummy [0.02 h] | 0.02 | N | N | 1 | B00043 | 14 | Car-Mad |

| ID | WBS | Activity | Duration | Start | Finish | Predecessors | Total float | Free float | Resources | Cost | Hito Inicio - Fin | Tipo 80-20 | CBB_Piso | CBB_Etapas | CBB_Obras | CBB_Procesos |
| --- | --- | --- | --- | --- | --- | --- | --- | --- | --- | --- | --- | --- | --- | --- | --- | --- |
|  | P14 | **Piso 14** |  | 2027-05-26 | 2027-07-06 |  |  |  |  |  |  |  |  |  |  |  |
| A6350 |  | Muros y piso de Baño | 8d | 2027-05-26 | 2027-06-09 | A6290 | 166.93d | 0d | Dummy [0.02 h] | 0.02 | N | N | 15 | 1 | B00043 | Car-Mad |
| A6360 |  | Piso de Alcobas | 6d | 2027-06-09 | 2027-06-17 | A6350, A6300 | 170.93d | 0d | Dummy [0.02 h] | 0.02 | N | N | 15 | 1 | B00043 | Car-Mad |
| A6370 |  | Piso Sala | 3d | 2027-06-17 | 2027-06-22 | A6360, A6310 | 173.93d | 0d | Dummy [0.02 h] | 0.02 | N | N | 15 | 1 | B00043 | Car-Mad |
| A6380 |  | Piso cocina y labores | 3d | 2027-06-22 | 2027-06-25 | A6370, A6320 | 173.93d | 0d | Dummy [0.02 h] | 0.02 | N | N | 15 | 1 | B00043 | Car-Mad |
| A6390 |  | Piso Balcon | 3d | 2027-06-25 | 2027-06-30 | A6380, A6330 | 173.93d | 0d | Dummy [0.02 h] | 0.02 | N | N | 15 | 1 | B00043 | Car-Mad |
| A6400 |  | Salpicadero Lavadero | 3d | 2027-06-30 | 2027-07-06 | A6340, A6390 | 173.93d | 5d | Dummy [0.02 h] | 0.02 | N | N | 15 | 1 | B00043 | Car-Mad |
|  | P15 | **Piso 15** |  | 2027-06-09 | 2027-07-16 |  |  |  |  |  |  |  |  |  |  |  |
| A6410 |  | Muros y piso de Baño | 8d | 2027-06-09 | 2027-06-21 | A6350 | 166.93d | 0d | Dummy [0.02 h] | 0.02 | N | N | 16 | 1 | B00043 | Car-Mad |
| A6420 |  | Piso de Alcobas | 6d | 2027-06-21 | 2027-06-29 | A6410, A6360 | 168.93d | 0d | Dummy [0.02 h] | 0.02 | N | N | 16 | 1 | B00043 | Car-Mad |
| A6430 |  | Piso Sala | 3d | 2027-06-29 | 2027-07-02 | A6420, A6370 | 168.93d | 0d | Dummy [0.02 h] | 0.02 | N | N | 16 | 1 | B00043 | Car-Mad |
| A6440 |  | Piso cocina y labores | 3d | 2027-07-02 | 2027-07-08 | A6430, A6380 | 168.93d | 0d | Dummy [0.02 h] | 0.02 | N | N | 16 | 1 | B00043 | Car-Mad |
| A6450 |  | Piso Balcon | 3d | 2027-07-08 | 2027-07-13 | A6390, A6440 | 168.93d | 0d | Dummy [0.02 h] | 0.02 | N | N | 16 | 1 | B00043 | Car-Mad |
| A6460 |  | Salpicadero Lavadero | 3d | 2027-07-13 | 2027-07-16 | A6450, A6400 | 168.93d | 2d | Dummy [0.02 h] | 0.02 | N | N | 16 | 1 | B00043 | Car-Mad |
|  | P16 | **Piso 16** |  | 2027-06-21 | 2027-08-03 |  |  |  |  |  |  |  |  |  |  |  |
| A15240 |  | Muros y piso de Baño | 8d | 2027-06-21 | 2027-07-01 | A6410 | 166.93d | 0d |  |  | N | N |  |  | B00043 |  |
| A15250 |  | Piso de Alcobas | 6d | 2027-07-01 | 2027-07-12 | A15240, A6420 | 166.93d | 0d |  |  | N | N |  |  | B00043 |  |
| A15260 |  | Piso Sala | 3d | 2027-07-12 | 2027-07-15 | A6430, A15250 | 166.93d | 0d |  |  | N | N |  |  | B00043 |  |
| A15270 |  | Piso cocina y labores | 3d | 2027-07-15 | 2027-07-21 | A6440, A15260 | 166.93d | 0d |  |  | N | N |  |  | B00043 |  |
| A15280 |  | Piso Balcon y Terraza | 6d | 2027-07-21 | 2027-07-29 | A6460, A15270 | 166.93d | 0d |  |  | N | N |  |  | B00043 |  |
| A15290 |  | Salpicadero Lavadero | 3d | 2027-07-29 | 2027-08-03 | A15280, A6450 | 166.93d | 0d |  |  | N | N |  |  | B00043 |  |
|  | Inst. Ventaneria | **Inst. Ventaneria** |  | 2026-11-18 | 2027-08-03 |  |  |  |  |  |  |  |  |  |  |  |
|  | P03 | **Piso 03** |  | 2026-11-18 | 2026-12-17 |  |  |  |  |  |  |  |  |  |  |  |
| A6560 |  | Inst. Puertas Ventanas | 8d | 2026-11-18 | 2026-11-30 | A19790 SS | 31.93d | 0d | Dummy [0.02 h] | 0.02 | N | N | 4 | 1 | B00043 | Est- |
| A6580 |  | Inst. Ventanas | 12d | 2026-11-30 | 2026-12-17 | A6560 | 31.93d | 0d | Dummy [0.02 h] | 0.02 | N | N | 4 | 1 | B00043 | Est- |

| ID | WBS | Activity | Duration | Start | Finish | Predecessors | Total float | Free float | Resources | Cost | Hito Inicio - Fin | Tipo 80-20 | CBB_Piso | CBB_Etapas | CBB_Procesos | CBB_Obras |
| --- | --- | --- | --- | --- | --- | --- | --- | --- | --- | --- | --- | --- | --- | --- | --- | --- |
|  | P04 | **Piso 04** |  | 2026-11-30 | 2027-01-21 |  |  |  |  |  |  |  |  |  |  |  |
| A6590 |  | Inst. Puertas Ventanas | 8d | 2026-11-30 | 2026-12-11 | A6560 | 35.93d | 0d | Dummy [0.02 h] | 0.02 | N | N | 5 | 1 | Est- | B00043 |
| A6610 |  | Inst. Ventanas | 12d | 2026-12-17 | 2027-01-21 | A6590, A6580 | 31.93d | 0d | Dummy [0.02 h] | 0.02 | N | N | 5 | 1 | Est- | B00043 |
|  | P05 | **Piso 05** |  | 2026-12-11 | 2027-02-08 |  |  |  |  |  |  |  |  |  |  |  |
| A6620 |  | Inst. Puertas Ventanas | 8d | 2026-12-11 | 2026-12-23 | A6590 | 39.93d | 0d | Dummy [0.02 h] | 0.02 | N | N | 6 | 1 | Est- | B00043 |
| A6640 |  | Inst. Ventanas | 12d | 2027-01-21 | 2027-02-08 | A6620, A6610 | 31.93d | 0d | Dummy [0.02 h] | 0.02 | N | N | 6 | 1 | Est- | B00043 |
|  | P06 | **Piso 06** |  | 2026-12-23 | 2027-02-24 |  |  |  |  |  |  |  |  |  |  |  |
| A6650 |  | Inst. Puertas Ventanas | 8d | 2026-12-23 | 2027-01-21 | A6620 | 43.93d | 0d | Dummy [0.02 h] | 0.02 | N | N | 7 | 1 | Est- | B00043 |
| A6670 |  | Inst. Ventanas | 12d | 2027-02-08 | 2027-02-24 | A6640, A6650 | 31.93d | 0d | Dummy [0.02 h] | 0.02 | N | N | 7 | 1 | Est- | B00043 |
|  | P07 | **Piso 07** |  | 2027-01-21 | 2027-03-12 |  |  |  |  |  |  |  |  |  |  |  |
| A6680 |  | Inst. Puertas Ventanas | 8d | 2027-01-21 | 2027-02-02 | A6650 | 47.93d | 0d | Dummy [0.02 h] | 0.02 | N | N | 8 | 1 | Est- | B00043 |
| A6700 |  | Inst. Ventanas | 12d | 2027-02-24 | 2027-03-12 | A6680, A6670 | 31.93d | 0d | Dummy [0.02 h] | 0.02 | N | N | 8 | 1 | Est- | B00043 |
|  | P08 | **Piso 08** |  | 2027-02-02 | 2027-04-06 |  |  |  |  |  |  |  |  |  |  |  |
| A6710 |  | Inst. Puertas Ventanas | 8d | 2027-02-02 | 2027-02-12 | A6680 | 51.93d | 0d | Dummy [0.02 h] | 0.02 | N | N | 9 | 1 | Est- | B00043 |
| A6730 |  | Inst. Ventanas | 12d | 2027-03-12 | 2027-04-06 | A6710, A6700 | 31.93d | 0d | Dummy [0.02 h] | 0.02 | N | N | 9 | 1 | Est- | B00043 |
|  | P09 | **Piso 09** |  | 2027-02-12 | 2027-04-20 |  |  |  |  |  |  |  |  |  |  |  |
| A6740 |  | Inst. Puertas Ventanas | 6d | 2027-02-12 | 2027-02-22 | A6710 | 57.93d | 0d | Dummy [0.02 h] | 0.02 | N | N | 10 | 1 | Est- | B00043 |
| A6760 |  | Inst. Ventanas | 10d | 2027-04-06 | 2027-04-20 | A6730, A6740 | 31.93d | 0d | Dummy [0.02 h] | 0.02 | N | N | 10 | 1 | Est- | B00043 |
|  | P10 | **Piso 10** |  | 2027-02-22 | 2027-05-04 |  |  |  |  |  |  |  |  |  |  |  |
| A6770 |  | Inst. Puertas Ventanas | 6d | 2027-02-22 | 2027-03-02 | A6740 | 61.93d | 0d | Dummy [0.02 h] | 0.02 | N | N | 11 | 1 | Est- | B00043 |
| A6790 |  | Inst. Ventanas | 10d | 2027-04-20 | 2027-05-04 | A6770, A6760 | 31.93d | 0d | Dummy [0.02 h] | 0.02 | N | N | 11 | 1 | Est- | B00043 |
|  | P11 | **Piso 11** |  | 2027-03-02 | 2027-05-19 |  |  |  |  |  |  |  |  |  |  |  |
| A6800 |  | Inst. Puertas Ventanas | 6d | 2027-03-02 | 2027-03-10 | A6770 | 65.93d | 0d | Dummy [0.02 h] | 0.02 | N | N | 12 | 1 | Est- | B00043 |
| A6820 |  | Inst. Ventanas | 10d | 2027-05-04 | 2027-05-19 | A6800, A6790 | 31.93d | 0d | Dummy [0.02 h] | 0.02 | N | N | 12 | 1 | Est- | B00043 |

| ID | WBS | Activity | Duration | Start | Finish | Predecessors | Total float | Free float | Resources | Cost | Tipo 80-20 | Hito Inicio - Fin | CBB_Obras | CBB_Etapas | CBB_Piso | CBB_Procesos |
| --- | --- | --- | --- | --- | --- | --- | --- | --- | --- | --- | --- | --- | --- | --- | --- | --- |
|  | P12 | **Piso 12** |  | 2027-03-10 | 2027-06-03 |  |  |  |  |  |  |  |  |  |  |  |
| A6830 |  | Inst. Puertas Ventanas | 6d | 2027-03-10 | 2027-03-18 | A6800 | 72.93d | 0d | Dummy [0.02 h] | 0.02 | N | N | B00043 | 1 | 13 | Est- |
| A6850 |  | Inst. Ventanas | 10d | 2027-05-19 | 2027-06-03 | A6830, A6820 | 34.93d | 0d | Dummy [0.02 h] | 0.02 | N | N | B00043 | 1 | 13 | Est- |
|  | P13 | **Piso 13** |  | 2027-03-18 | 2027-06-18 |  |  |  |  |  |  |  |  |  |  |  |
| A6860 |  | Inst. Puertas Ventanas | 6d | 2027-03-18 | 2027-04-02 | A6830 | 76.93d | 0d | Dummy [0.02 h] | 0.02 | N | N | B00043 | 1 | 14 | Est- |
| A6880 |  | Inst. Ventanas | 10d | 2027-06-03 | 2027-06-18 | A6860, A6850 | 34.93d | 0d | Dummy [0.02 h] | 0.02 | N | N | B00043 | 1 | 14 | Est- |
|  | P14 | **Piso 14** |  | 2027-04-02 | 2027-07-02 |  |  |  |  |  |  |  |  |  |  |  |
| A6890 |  | Inst. Puertas Ventanas | 6d | 2027-04-02 | 2027-04-12 | A6860 | 80.93d | 0d | Dummy [0.02 h] | 0.02 | N | N | B00043 | 1 | 15 | Est- |
| A6910 |  | Inst. Ventanas | 10d | 2027-06-18 | 2027-07-02 | A6880, A6890 | 34.93d | 0d | Dummy [0.02 h] | 0.02 | N | N | B00043 | 1 | 15 | Est- |
|  | P15 | **Piso 15** |  | 2027-04-12 | 2027-07-19 |  |  |  |  |  |  |  |  |  |  |  |
| A6920 |  | Inst. Puertas Ventanas | 6d | 2027-04-12 | 2027-04-20 | A6890 | 84.93d | 0d | Dummy [0.02 h] | 0.02 | N | N | B00043 | 1 | 16 | Est- |
| A6940 |  | Inst. Ventanas | 10d | 2027-07-02 | 2027-07-19 | A6920, A6910 | 34.93d | 0d | Dummy [0.02 h] | 0.02 | N | N | B00043 | 1 | 16 | Est- |
|  | P16 | **Piso 16** |  | 2027-04-20 | 2027-08-03 |  |  |  |  |  |  |  |  |  |  |  |
| A15060 |  | Inst. Puertas Ventanas | 6d | 2027-04-20 | 2027-04-28 | A6920 | 88.93d | 54d |  |  | N | N | B00043 |  |  |  |
| A15300 |  | Inst. Ventanas | 10d | 2027-07-19 | 2027-08-03 | A6940, A15060 | 34.93d | 0d |  |  | N | N | B00043 |  |  |  |
|  | Cableado | **Cableado** |  | 2026-12-10 | 2027-09-07 |  |  |  |  |  |  |  |  |  |  |  |
|  | P03 | **Piso 03** |  | 2026-12-10 | 2027-03-01 |  |  |  |  |  |  |  |  |  |  |  |
| A7070 |  | Inst. elec-comun | 44d | 2026-12-10 | 2027-03-01 | A1330 SS | 267.93d | 125d | Dummy [0.02 h] | 0.02 | N | N | B00043 | 1 | 4 | Mes-y-Gas |
|  | P04 | **Piso 04** |  | 2027-01-14 | 2027-03-17 |  |  |  |  |  |  |  |  |  |  |  |
| A7110 |  | Inst. elec-comun | 44d | 2027-01-14 | 2027-03-17 | A6610 FS-5d | 255.93d | 113d | Dummy [0.02 h] | 0.02 | N | N | B00043 | 1 | 5 | Mes-y-Gas |
|  | P05 | **Piso 05** |  | 2027-02-01 | 2027-04-09 |  |  |  |  |  |  |  |  |  |  |  |
| A7150 |  | Inst. elec-comun | 44d | 2027-02-01 | 2027-04-09 | A6640 FS-5d | 243.93d | 101d | Dummy [0.02 h] | 0.02 | N | N | B00043 | 1 | 6 | Mes-y-Gas |
|  | P06 | **Piso 06** |  | 2027-02-17 | 2027-04-27 |  |  |  |  |  |  |  |  |  |  |  |
| A7190 |  | Inst. elec-comun | 44d | 2027-02-17 | 2027-04-27 | A6670 FS-5d | 231.93d | 89d | Dummy [0.02 h] | 0.02 | N | N | B00043 | 1 | 7 | Mes-y-Gas |

| ID | WBS | Activity | Duration | Start | Finish | Predecessors | Total float | Free float | Resources | Cost | Hito Inicio - Fin | Tipo 80-20 | CBB_Etapas | CBB_Obras | CBB_Piso | CBB_Procesos |
| --- | --- | --- | --- | --- | --- | --- | --- | --- | --- | --- | --- | --- | --- | --- | --- | --- |
|  | P07 | **Piso 07** |  | 2027-03-05 | 2027-05-14 |  |  |  |  |  |  |  |  |  |  |  |
| A7230 |  | Inst. elec-comun | 44d | 2027-03-05 | 2027-05-14 | A6700 FS-5d | 219.93d | 77d | Dummy [0.02 h] | 0.02 | N | N | 1 | B00043 | 8 | Mes-y-Gas |
|  | P08 | **Piso 08** |  | 2027-03-30 | 2027-06-02 |  |  |  |  |  |  |  |  |  |  |  |
| A7270 |  | Inst. elec-comun | 44d | 2027-03-30 | 2027-06-02 | A6730 FS-5d | 207.93d | 65d | Dummy [0.02 h] | 0.02 | N | N | 1 | B00043 | 9 | Mes-y-Gas |
|  | P09 | **Piso 09** |  | 2027-04-13 | 2027-06-11 |  |  |  |  |  |  |  |  |  |  |  |
| A7310 |  | Inst. elec-comun | 40d | 2027-04-13 | 2027-06-11 | A6760 FS-5d | 201.93d | 59d | Dummy [0.02 h] | 0.02 | N | N | 1 | B00043 | 10 | Mes-y-Gas |
|  | P10 | **Piso 10** |  | 2027-04-27 | 2027-06-25 |  |  |  |  |  |  |  |  |  |  |  |
| A7350 |  | Inst. elec-comun | 40d | 2027-04-27 | 2027-06-25 | A6790 FS-5d | 191.93d | 49d | Dummy [0.02 h] | 0.02 | N | N | 1 | B00043 | 11 | Mes-y-Gas |
|  | P11 | **Piso 11** |  | 2027-05-12 | 2027-07-06 |  |  |  |  |  |  |  |  |  |  |  |
| A7390 |  | Inst. elec-comun | 36d | 2027-05-12 | 2027-07-06 | A6820 FS-5d | 185.93d | 43d | Dummy [0.02 h] | 0.02 | N | N | 1 | B00043 | 12 | Mes-y-Gas |
|  | P12 | **Piso 12** |  | 2027-05-26 | 2027-07-21 |  |  |  |  |  |  |  |  |  |  |  |
| A7430 |  | Inst. elec-comun | 36d | 2027-05-26 | 2027-07-21 | A6850 FS-5d | 175.93d | 33d | Dummy [0.02 h] | 0.02 | N | N | 1 | B00043 | 13 | Mes-y-Gas |
|  | P13 | **Piso 13** |  | 2027-06-11 | 2027-07-30 |  |  |  |  |  |  |  |  |  |  |  |
| A7470 |  | Inst. elec-comun | 33d | 2027-06-11 | 2027-07-30 | A6880 FS-5d | 168.93d | 26d | Dummy [0.02 h] | 0.02 | N | N | 1 | B00043 | 14 | Mes-y-Gas |
|  | P14 | **Piso 14** |  | 2027-06-25 | 2027-08-13 |  |  |  |  |  |  |  |  |  |  |  |
| A7510 |  | Inst. elec-comun | 33d | 2027-06-25 | 2027-08-13 | A6910 FS-5d | 158.93d | 16d | Dummy [0.02 h] | 0.02 | N | N | 1 | B00043 | 15 | Mes-y-Gas |
|  | P15 | **Piso 15** |  | 2027-07-12 | 2027-08-24 |  |  |  |  |  |  |  |  |  |  |  |
| A7550 |  | Inst. elec-comun | 29d | 2027-07-12 | 2027-08-24 | A6940 FS-5d | 152.93d | 10d | Dummy [0.02 h] | 0.02 | N | N | 1 | B00043 | 16 | Mes-y-Gas |
|  | P16 | **Piso 16** |  | 2027-07-27 | 2027-09-07 |  |  |  |  |  |  |  |  |  |  |  |
| A15310 |  | Inst. elec-comun | 29d | 2027-07-27 | 2027-09-07 | A15300 FS-5d | 142.93d | 0d | Dummy [0.02 h] | 0.02 | N | N |  | B00043 |  |  |
|  | Carpinteria Madera | **Carpinteria Madera** |  | 2027-01-26 | 2027-10-26 |  |  |  |  |  |  |  |  |  |  |  |
|  | P03 | **Piso 03** |  | 2027-01-26 | 2027-04-09 |  |  |  |  |  |  |  |  |  |  |  |
| A19850 |  | Muebles de cocina | 4d | 2027-01-26 | 2027-02-01 | A19970 SS+20d | 168.93d | 0d | Dummy [0.02 h] | 0.02 | N | N |  | B00043 |  |  |
| A19860 |  | Mueble lavadero | 4d | 2027-02-01 | 2027-02-05 | A19850 | 168.93d | 0d | Dummy [0.02 h] | 0.02 | N | N |  | B00043 |  |  |
| A19870 |  | Muebles de baño | 16d | 2027-02-05 | 2027-03-01 | A19860 | 168.93d | 0d | Dummy [0.02 h] | 0.02 | N | N |  | B00043 |  |  |
| A19880 |  | Closets | 4d | 2027-03-01 | 2027-03-05 | A19870 | 168.93d | 0d | Dummy [0.02 h] | 0.02 | N | N |  | B00043 |  |  |
| A19890 |  | Muebles de lino | 8d | 2027-03-05 | 2027-03-17 | A19880 | 168.93d | 0d | Dummy [0.02 h] | 0.02 | N | N |  | B00043 |  |  |
| A19900 |  | Puertas | 12d | 2027-03-17 | 2027-04-09 | A19890 | 168.93d | 0d | Dummy [0.02 h] | 0.02 | N | N |  | B00043 |  |  |

| ID | WBS | Activity | Duration | Start | Finish | Predecessors | Total float | Free float | Resources | Cost | Tipo 80-20 | Hito Inicio - Fin | CBB_Obras |
| --- | --- | --- | --- | --- | --- | --- | --- | --- | --- | --- | --- | --- | --- |
|  | P04 | **Piso 04** |  | 2027-03-04 | 2027-05-19 |  |  |  |  |  |  |  |  |
| A19910 |  | Muebles de cocina | 4d | 2027-03-04 | 2027-03-10 | A6610 FS+30d | 125.93d | 0d | Dummy [0.02 h] | 0.02 | N | N | B00043 |
| A19920 |  | Mueble lavadero | 4d | 2027-03-10 | 2027-03-16 | A19910 | 125.93d | 0d | Dummy [0.02 h] | 0.02 | N | N | B00043 |
| A19930 |  | Muebles de baño | 16d | 2027-03-16 | 2027-04-14 | A19920 | 125.93d | 0d | Dummy [0.02 h] | 0.02 | N | N | B00043 |
| A19940 |  | Closets | 4d | 2027-04-14 | 2027-04-20 | A19930 | 125.93d | 0d | Dummy [0.02 h] | 0.02 | N | N | B00043 |
| A19950 |  | Muebles de lino | 8d | 2027-04-20 | 2027-04-30 | A19940 | 125.93d | 0d | Dummy [0.02 h] | 0.02 | N | N | B00043 |
| A19960 |  | Puertas | 12d | 2027-04-30 | 2027-05-19 | A19950 | 125.93d | 0d | Dummy [0.02 h] | 0.02 | N | N | B00043 |
|  | P05 | **Piso 05** |  | 2027-03-29 | 2027-06-08 |  |  |  |  |  |  |  |  |
| A19990 |  | Muebles de cocina | 4d | 2027-03-29 | 2027-04-02 | A6640 FS+30d | 108.93d | 0d | Dummy [0.02 h] | 0.02 | N | N | B00043 |
| A20000 |  | Mueble lavadero | 4d | 2027-04-02 | 2027-04-08 | A19990 | 108.93d | 0d | Dummy [0.02 h] | 0.02 | N | N | B00043 |
| A20010 |  | Muebles de baño | 16d | 2027-04-08 | 2027-04-30 | A20000 | 108.93d | 0d | Dummy [0.02 h] | 0.02 | N | N | B00043 |
| A20020 |  | Closets | 4d | 2027-04-30 | 2027-05-06 | A20010 | 108.93d | 0d | Dummy [0.02 h] | 0.02 | N | N | B00043 |
| A20030 |  | Muebles de lino | 8d | 2027-05-06 | 2027-05-19 | A20020 | 108.93d | 0d | Dummy [0.02 h] | 0.02 | N | N | B00043 |
| A20040 |  | Puertas | 12d | 2027-05-19 | 2027-06-08 | A20030 | 108.93d | 0d | Dummy [0.02 h] | 0.02 | N | N | B00043 |
|  | P06 | **Piso 06** |  | 2027-04-14 | 2027-06-24 |  |  |  |  |  |  |  |  |
| A20050 |  | Muebles de cocina | 4d | 2027-04-14 | 2027-04-20 | A6670 FS+30d | 93.93d | 0d | Dummy [0.02 h] | 0.02 | N | N | B00043 |
| A20060 |  | Mueble lavadero | 4d | 2027-04-20 | 2027-04-26 | A20050 | 93.93d | 0d | Dummy [0.02 h] | 0.02 | N | N | B00043 |
| A20070 |  | Muebles de baño | 16d | 2027-04-26 | 2027-05-19 | A20060 | 93.93d | 0d | Dummy [0.02 h] | 0.02 | N | N | B00043 |
| A20080 |  | Closets | 4d | 2027-05-19 | 2027-05-25 | A20070 | 93.93d | 0d | Dummy [0.02 h] | 0.02 | N | N | B00043 |
| A20090 |  | Muebles de lino | 8d | 2027-05-25 | 2027-06-08 | A20080 | 93.93d | 0d | Dummy [0.02 h] | 0.02 | N | N | B00043 |
| A20100 |  | Puertas | 12d | 2027-06-08 | 2027-06-24 | A20090 | 93.93d | 0d | Dummy [0.02 h] | 0.02 | N | N | B00043 |
|  | P07 | **Piso 07** |  | 2027-04-30 | 2027-07-13 |  |  |  |  |  |  |  |  |
| A20110 |  | Muebles de cocina | 4d | 2027-04-30 | 2027-05-06 | A6700 FS+30d | 77.93d | 0d | Dummy [0.02 h] | 0.02 | N | N | B00043 |
| A20120 |  | Mueble lavadero | 4d | 2027-05-06 | 2027-05-13 | A20110 | 77.93d | 0d | Dummy [0.02 h] | 0.02 | N | N | B00043 |
| A20130 |  | Muebles de baño | 16d | 2027-05-13 | 2027-06-08 | A20120 | 77.93d | 0d | Dummy [0.02 h] | 0.02 | N | N | B00043 |
| A20140 |  | Closets | 4d | 2027-06-08 | 2027-06-14 | A20130 | 77.93d | 0d | Dummy [0.02 h] | 0.02 | N | N | B00043 |
| A20150 |  | Muebles de lino | 8d | 2027-06-14 | 2027-06-24 | A20140 | 77.93d | 0d | Dummy [0.02 h] | 0.02 | N | N | B00043 |
| A20160 |  | Puertas | 12d | 2027-06-24 | 2027-07-13 | A20150 | 77.93d | 0d | Dummy [0.02 h] | 0.02 | N | N | B00043 |

| ID | WBS | Activity | Duration | Start | Finish | Predecessors | Total float | Free float | Resources | Cost | Hito Inicio - Fin | Tipo 80-20 | CBB_Obras |
| --- | --- | --- | --- | --- | --- | --- | --- | --- | --- | --- | --- | --- | --- |
|  | P08 | **Piso 08** |  | 2027-05-19 | 2027-07-30 |  |  |  |  |  |  |  |  |
| A20170 |  | Muebles de cocina | 4d | 2027-05-19 | 2027-05-25 | A6730 FS+30d | 67.93d | 0d | Dummy [0.02 h] | 0.02 | N | N | B00043 |
| A20180 |  | Mueble lavadero | 4d | 2027-05-25 | 2027-06-01 | A20170 | 67.93d | 0d | Dummy [0.02 h] | 0.02 | N | N | B00043 |
| A20190 |  | Muebles de baño | 16d | 2027-06-01 | 2027-06-24 | A20180 | 67.93d | 0d | Dummy [0.02 h] | 0.02 | N | N | B00043 |
| A20200 |  | Closets | 4d | 2027-06-24 | 2027-06-30 | A20190 | 67.93d | 0d | Dummy [0.02 h] | 0.02 | N | N | B00043 |
| A20210 |  | Muebles de lino | 8d | 2027-06-30 | 2027-07-13 | A20200 | 67.93d | 0d | Dummy [0.02 h] | 0.02 | N | N | B00043 |
| A20220 |  | Puertas | 12d | 2027-07-13 | 2027-07-30 | A20210 | 67.93d | 0d | Dummy [0.02 h] | 0.02 | N | N | B00043 |
|  | P09 | **Piso 09** |  | 2027-06-03 | 2027-08-03 |  |  |  |  |  |  |  |  |
| A20230 |  | Muebles de cocina | 3d | 2027-06-03 | 2027-06-09 | A6760 FS+30d | 64.93d | 0d | Dummy [0.02 h] | 0.02 | N | N | B00043 |
| A20240 |  | Mueble lavadero | 3d | 2027-06-09 | 2027-06-14 | A20230 | 64.93d | 0d | Dummy [0.02 h] | 0.02 | N | N | B00043 |
| A20250 |  | Muebles de baño | 14d | 2027-06-14 | 2027-07-02 | A20240 | 64.93d | 0d | Dummy [0.02 h] | 0.02 | N | N | B00043 |
| A20260 |  | Closets | 3d | 2027-07-02 | 2027-07-08 | A20250 | 64.93d | 0d | Dummy [0.02 h] | 0.02 | N | N | B00043 |
| A20270 |  | Muebles de lino | 7d | 2027-07-08 | 2027-07-19 | A20260 | 64.93d | 0d | Dummy [0.02 h] | 0.02 | N | N | B00043 |
| A20280 |  | Puertas | 10d | 2027-07-19 | 2027-08-03 | A20270 | 64.93d | 0d | Dummy [0.02 h] | 0.02 | N | N | B00043 |
|  | P10 | **Piso 10** |  | 2027-06-18 | 2027-08-18 |  |  |  |  |  |  |  |  |
| A20290 |  | Muebles de cocina | 3d | 2027-06-18 | 2027-06-23 | A6790 FS+30d | 59.93d | 0d | Dummy [0.02 h] | 0.02 | N | N | B00043 |
| A20300 |  | Mueble lavadero | 3d | 2027-06-23 | 2027-06-28 | A20290 | 59.93d | 0d | Dummy [0.02 h] | 0.02 | N | N | B00043 |
| A20310 |  | Muebles de baño | 14d | 2027-06-28 | 2027-07-19 | A20300 | 59.93d | 0d | Dummy [0.02 h] | 0.02 | N | N | B00043 |
| A20320 |  | Closets | 3d | 2027-07-19 | 2027-07-23 | A20310 | 59.93d | 0d | Dummy [0.02 h] | 0.02 | N | N | B00043 |
| A20330 |  | Muebles de lino | 7d | 2027-07-23 | 2027-08-03 | A20320 | 59.93d | 0d | Dummy [0.02 h] | 0.02 | N | N | B00043 |
| A20340 |  | Puertas | 10d | 2027-08-03 | 2027-08-18 | A20330 | 59.93d | 0d | Dummy [0.02 h] | 0.02 | N | N | B00043 |
|  | P11 | **Piso 11** |  | 2027-07-02 | 2027-08-27 |  |  |  |  |  |  |  |  |
| A20350 |  | Muebles de cocina | 3d | 2027-07-02 | 2027-07-08 | A6820 FS+30d | 31.93d | 0d | Dummy [0.02 h] | 0.02 | N | N | B00043 |
| A20360 |  | Mueble lavadero | 3d | 2027-07-08 | 2027-07-13 | A20350 | 31.93d | 0d | Dummy [0.02 h] | 0.02 | N | N | B00043 |
| A20370 |  | Muebles de baño | 13d | 2027-07-13 | 2027-08-02 | A20360 | 31.93d | 0d | Dummy [0.02 h] | 0.02 | N | N | B00043 |
| A20380 |  | Closets | 3d | 2027-08-02 | 2027-08-05 | A20370 | 31.93d | 0d | Dummy [0.02 h] | 0.02 | N | N | B00043 |
| A20390 |  | Muebles de lino | 6d | 2027-08-05 | 2027-08-13 | A20380 | 31.93d | 0d | Dummy [0.02 h] | 0.02 | N | N | B00043 |
| A20400 |  | Puertas | 9d | 2027-08-13 | 2027-08-27 | A20390 | 31.93d | 0d | Dummy [0.02 h] | 0.02 | N | N | B00043 |

| ID | WBS | Activity | Duration | Start | Finish | Predecessors | Total float | Free float | Resources | Cost | Tipo 80-20 | Hito Inicio - Fin | CBB_Obras |
| --- | --- | --- | --- | --- | --- | --- | --- | --- | --- | --- | --- | --- | --- |
|  | P12 | **Piso 12** |  | 2027-07-19 | 2027-09-10 |  |  |  |  |  |  |  |  |
| A20410 |  | Muebles de cocina | 3d | 2027-07-19 | 2027-07-23 | A6850 FS+30d | 66.93d | 0d | Dummy [0.02 h] | 0.02 | N | N | B00043 |
| A20420 |  | Mueble lavadero | 3d | 2027-07-23 | 2027-07-28 | A20410 | 66.93d | 0d | Dummy [0.02 h] | 0.02 | N | N | B00043 |
| A20430 |  | Muebles de baño | 13d | 2027-07-28 | 2027-08-17 | A20420 | 66.93d | 0d | Dummy [0.02 h] | 0.02 | N | N | B00043 |
| A20440 |  | Closets | 3d | 2027-08-17 | 2027-08-20 | A20430 | 66.93d | 0d | Dummy [0.02 h] | 0.02 | N | N | B00043 |
| A20450 |  | Muebles de lino | 6d | 2027-08-20 | 2027-08-30 | A20440 | 66.93d | 0d | Dummy [0.02 h] | 0.02 | N | N | B00043 |
| A20460 |  | Puertas | 9d | 2027-08-30 | 2027-09-10 | A20450 | 66.93d | 0d | Dummy [0.02 h] | 0.02 | N | N | B00043 |
|  | P13 | **Piso 13** |  | 2027-08-03 | 2027-09-22 |  |  |  |  |  |  |  |  |
| A20470 |  | Muebles de cocina | 3d | 2027-08-03 | 2027-08-06 | A6880 FS+30d | 55.93d | 0d | Dummy [0.02 h] | 0.02 | N | N | B00043 |
| A20480 |  | Mueble lavadero | 3d | 2027-08-06 | 2027-08-11 | A20470 | 55.93d | 0d | Dummy [0.02 h] | 0.02 | N | N | B00043 |
| A20490 |  | Muebles de baño | 12d | 2027-08-11 | 2027-08-30 | A20480 | 55.93d | 0d | Dummy [0.02 h] | 0.02 | N | N | B00043 |
| A20500 |  | Closets | 3d | 2027-08-30 | 2027-09-02 | A20490 | 55.93d | 0d | Dummy [0.02 h] | 0.02 | N | N | B00043 |
| A20510 |  | Muebles de lino | 6d | 2027-09-02 | 2027-09-10 | A20500 | 55.93d | 0d | Dummy [0.02 h] | 0.02 | N | N | B00043 |
| A20520 |  | Puertas | 8d | 2027-09-10 | 2027-09-22 | A20510 | 55.93d | 0d | Dummy [0.02 h] | 0.02 | N | N | B00043 |
|  | P14 | **Piso 14** |  | 2027-08-18 | 2027-10-06 |  |  |  |  |  |  |  |  |
| A20530 |  | Muebles de cocina | 3d | 2027-08-18 | 2027-08-23 | A6910 FS+30d | 50.93d | 0d | Dummy [0.02 h] | 0.02 | N | N | B00043 |
| A20540 |  | Mueble lavadero | 3d | 2027-08-23 | 2027-08-26 | A20530 | 50.93d | 0d | Dummy [0.02 h] | 0.02 | N | N | B00043 |
| A20550 |  | Muebles de baño | 12d | 2027-08-26 | 2027-09-13 | A20540 | 50.93d | 0d | Dummy [0.02 h] | 0.02 | N | N | B00043 |
| A20560 |  | Closets | 3d | 2027-09-13 | 2027-09-16 | A20550 | 50.93d | 0d | Dummy [0.02 h] | 0.02 | N | N | B00043 |
| A20570 |  | Muebles de lino | 6d | 2027-09-16 | 2027-09-24 | A20560 | 50.93d | 0d | Dummy [0.02 h] | 0.02 | N | N | B00043 |
| A20580 |  | Puertas | 8d | 2027-09-24 | 2027-10-06 | A20570 | 50.93d | 0d | Dummy [0.02 h] | 0.02 | N | N | B00043 |
|  | P15 | **Piso 15** |  | 2027-09-01 | 2027-10-11 |  |  |  |  |  |  |  |  |
| A20590 |  | Muebles de cocina | 2d | 2027-09-01 | 2027-09-03 | A6940 FS+30d | 39.93d | 0d | Dummy [0.02 h] | 0.02 | N | N | B00043 |
| A20600 |  | Mueble lavadero | 2d | 2027-09-03 | 2027-09-07 | A20590 | 39.93d | 0d | Dummy [0.02 h] | 0.02 | N | N | B00043 |
| A20610 |  | Muebles de baño | 10d | 2027-09-07 | 2027-09-21 | A20600 | 39.93d | 0d | Dummy [0.02 h] | 0.02 | N | N | B00043 |
| A20620 |  | Closets | 2d | 2027-09-21 | 2027-09-23 | A20610 | 39.93d | 0d | Dummy [0.02 h] | 0.02 | N | N | B00043 |
| A20630 |  | Muebles de lino | 5d | 2027-09-23 | 2027-09-30 | A20620 | 39.93d | 0d | Dummy [0.02 h] | 0.02 | N | N | B00043 |
| A20640 |  | Puertas | 7d | 2027-09-30 | 2027-10-11 | A20630 | 39.93d | 0d | Dummy [0.02 h] | 0.02 | N | N | B00043 |

| ID | WBS | Activity | Duration | Start | Finish | Predecessors | Total float | Free float | Resources | Cost | Hito Inicio - Fin | Tipo 80-20 | CBB_Obras |
| --- | --- | --- | --- | --- | --- | --- | --- | --- | --- | --- | --- | --- | --- |
|  | P16 | **Piso 16** |  | 2027-09-15 | 2027-10-26 |  |  |  |  |  |  |  |  |
| A20650 |  | Muebles de cocina | 2d | 2027-09-15 | 2027-09-17 | A15300 FS+30d | 34.93d | 0d | Dummy [0.02 h] | 0.02 | N | N | B00043 |
| A20660 |  | Mueble lavadero | 2d | 2027-09-17 | 2027-09-21 | A20650 | 34.93d | 0d | Dummy [0.02 h] | 0.02 | N | N | B00043 |
| A20670 |  | Muebles de baño | 10d | 2027-09-21 | 2027-10-05 | A20660 | 34.93d | 0d | Dummy [0.02 h] | 0.02 | N | N | B00043 |
| A20680 |  | Closets | 2d | 2027-10-05 | 2027-10-07 | A20670 | 34.93d | 0d | Dummy [0.02 h] | 0.02 | N | N | B00043 |
| A20690 |  | Muebles de lino | 5d | 2027-10-07 | 2027-10-14 | A20680 | 34.93d | 0d | Dummy [0.02 h] | 0.02 | N | N | B00043 |
| A20700 |  | Puertas | 7d | 2027-10-14 | 2027-10-26 | A20690 | 34.93d | 0d | Dummy [0.02 h] | 0.02 | N | N | B00043 |
|  | Mesones | **Mesones** |  | 2027-04-01 | 2027-11-03 |  |  |  |  |  |  |  |  |
|  | P03 | **Piso 03** |  | 2027-04-01 | 2027-04-27 |  |  |  |  |  |  |  |  |
| A20710 |  | Mesones de baño | 4d | 2027-04-01 | 2027-04-07 | A20730 | 168.93d | 0d | Dummy [0.02 h] | 0.02 | N | N | B00043 |
| A20720 |  | Mesones de cocina | 16d | 2027-04-05 | 2027-04-27 | A20710 FS-2d | 231.93d | 128d | Dummy [0.02 h] | 0.02 | N | N | B00043 |
|  | P04 | **Piso 04** |  | 2027-05-12 | 2027-06-09 |  |  |  |  |  |  |  |  |
| A20750 |  | Mesones de baño | 4d | 2027-05-12 | 2027-05-18 | A19960 FS-5d | 125.93d | 0d | Dummy [0.02 h] | 0.02 | N | N | B00043 |
| A20760 |  | Mesones de cocina | 16d | 2027-05-14 | 2027-06-09 | A20750 FS-2d | 203.93d | 100d | Dummy [0.02 h] | 0.02 | N | N | B00043 |
|  | P05 | **Piso 05** |  | 2027-05-28 | 2027-06-25 |  |  |  |  |  |  |  |  |
| A20770 |  | Mesones de baño | 4d | 2027-05-28 | 2027-06-04 | A20040 FS-5d | 108.93d | 0d | Dummy [0.02 h] | 0.02 | N | N | B00043 |
| A20780 |  | Mesones de cocina | 16d | 2027-06-02 | 2027-06-25 | A20770 FS-2d | 191.93d | 88d | Dummy [0.02 h] | 0.02 | N | N | B00043 |
|  | P06 | **Piso 06** |  | 2027-06-17 | 2027-07-14 |  |  |  |  |  |  |  |  |
| A20790 |  | Mesones de baño | 4d | 2027-06-17 | 2027-06-23 | A20100 FS-5d | 93.93d | 0d | Dummy [0.02 h] | 0.02 | N | N | B00043 |
| A20800 |  | Mesones de cocina | 16d | 2027-06-21 | 2027-07-14 | A20790 FS-2d | 179.93d | 76d | Dummy [0.02 h] | 0.02 | N | N | B00043 |
|  | P07 | **Piso 07** |  | 2027-07-06 | 2027-08-02 |  |  |  |  |  |  |  |  |
| A20810 |  | Mesones de baño | 4d | 2027-07-06 | 2027-07-12 | A20160 FS-5d | 77.93d | 0d | Dummy [0.02 h] | 0.02 | N | N | B00043 |
| A20820 |  | Mesones de cocina | 16d | 2027-07-08 | 2027-08-02 | A20810 FS-2d | 167.93d | 64d | Dummy [0.02 h] | 0.02 | N | N | B00043 |
|  | P08 | **Piso 08** |  | 2027-07-23 | 2027-08-19 |  |  |  |  |  |  |  |  |
| A20840 |  | Mesones de baño | 4d | 2027-07-23 | 2027-07-29 | A20220 FS-5d | 67.93d | 0d | Dummy [0.02 h] | 0.02 | N | N | B00043 |
| A20850 |  | Mesones de cocina | 16d | 2027-07-27 | 2027-08-19 | A20840 FS-2d | 155.93d | 52d | Dummy [0.02 h] | 0.02 | N | N | B00043 |

| ID | WBS | Activity | Duration | Start | Finish | Predecessors | Total float | Free float | Resources | Cost | Hito Inicio - Fin | Tipo 80-20 | CBB_Obras |
| --- | --- | --- | --- | --- | --- | --- | --- | --- | --- | --- | --- | --- | --- |
|  | P09 | **Piso 09** |  | 2027-07-27 | 2027-08-18 |  |  |  |  |  |  |  |  |
| A20860 |  | Mesones de baño | 3d | 2027-07-27 | 2027-07-30 | A20280 FS-5d | 64.93d | 0d | Dummy [0.02 h] | 0.02 | N | N | B00043 |
| A20870 |  | Mesones de cocina | 14d | 2027-07-28 | 2027-08-18 | A20860 FS-2d | 156.93d | 53d | Dummy [0.02 h] | 0.02 | N | N | B00043 |
|  | P10 | **Piso 10** |  | 2027-08-10 | 2027-09-01 |  |  |  |  |  |  |  |  |
| A20880 |  | Mesones de baño | 3d | 2027-08-10 | 2027-08-13 | A20340 FS-5d | 59.93d | 0d | Dummy [0.02 h] | 0.02 | N | N | B00043 |
| A20890 |  | Mesones de cocina | 14d | 2027-08-11 | 2027-09-01 | A20880 FS-2d | 146.93d | 43d | Dummy [0.02 h] | 0.02 | N | N | B00043 |
|  | P11 | **Piso 11** |  | 2027-08-20 | 2027-09-09 |  |  |  |  |  |  |  |  |
| A20900 |  | Mesones de baño | 3d | 2027-08-20 | 2027-08-25 | A20400 FS-5d | 31.93d | 0d | Dummy [0.02 h] | 0.02 | N | N | B00043 |
| A20910 |  | Mesones de cocina | 13d | 2027-08-23 | 2027-09-09 | A20900 FS-2d | 140.93d | 37d | Dummy [0.02 h] | 0.02 | N | N | B00043 |
|  | P12 | **Piso 12** |  | 2027-09-03 | 2027-09-23 |  |  |  |  |  |  |  |  |
| A20920 |  | Mesones de baño | 3d | 2027-09-03 | 2027-09-08 | A20460 FS-5d | 66.93d | 0d | Dummy [0.02 h] | 0.02 | N | N | B00043 |
| A20930 |  | Mesones de cocina | 13d | 2027-09-06 | 2027-09-23 | A20920 FS-2d | 130.93d | 27d | Dummy [0.02 h] | 0.02 | N | N | B00043 |
|  | P13 | **Piso 13** |  | 2027-09-15 | 2027-10-04 |  |  |  |  |  |  |  |  |
| A20940 |  | Mesones de baño | 3d | 2027-09-15 | 2027-09-20 | A20520 FS-5d | 55.93d | 0d | Dummy [0.02 h] | 0.02 | N | N | B00043 |
| A20950 |  | Mesones de cocina | 12d | 2027-09-16 | 2027-10-04 | A20940 FS-2d | 123.93d | 20d | Dummy [0.02 h] | 0.02 | N | N | B00043 |
|  | P14 | **Piso 14** |  | 2027-09-29 | 2027-10-19 |  |  |  |  |  |  |  |  |
| A20960 |  | Mesones de baño | 3d | 2027-09-29 | 2027-10-04 | A20580 FS-5d | 50.93d | 0d | Dummy [0.02 h] | 0.02 | N | N | B00043 |
| A20970 |  | Mesones de cocina | 12d | 2027-09-30 | 2027-10-19 | A20960 FS-2d | 113.93d | 10d | Dummy [0.02 h] | 0.02 | N | N | B00043 |
|  | P15 | **Piso 15** |  | 2027-10-04 | 2027-10-19 |  |  |  |  |  |  |  |  |
| A20980 |  | Mesones de baño | 2d | 2027-10-04 | 2027-10-06 | A20640 FS-5d | 39.93d | 0d | Dummy [0.02 h] | 0.02 | N | N | B00043 |
| A20990 |  | Mesones de cocina | 10d | 2027-10-04 | 2027-10-19 | A20980 FS-2d | 113.93d | 10d | Dummy [0.02 h] | 0.02 | N | N | B00043 |
|  | P16 | **Piso 16** |  | 2027-10-19 | 2027-11-03 |  |  |  |  |  |  |  |  |
| A21000 |  | Mesones de baño | 2d | 2027-10-19 | 2027-10-21 | A20700 FS-5d | 34.93d | 0d | Dummy [0.02 h] | 0.02 | N | N | B00043 |
| A21010 |  | Mesones de cocina | 10d | 2027-10-19 | 2027-11-03 | A21000 FS-2d | 103.93d | 0d | Dummy [0.02 h] | 0.02 | N | N | B00043 |

| ID | WBS | Activity | Duration | Start | Finish | Predecessors | Total float | Free float | Tipo 80-20 | Hito Inicio - Fin | CBB_Obras |
| --- | --- | --- | --- | --- | --- | --- | --- | --- | --- | --- | --- |
|  | Inst. Baranda Divisiones Banos y Espejos | **Inst. Baranda Divisiones Banos y Espejos** |  | 2027-04-21 | 2027-12-02 |  |  |  |  |  |  |
|  | P03 | **Piso 03** |  | 2027-04-21 | 2027-07-01 |  |  |  |  |  |  |
| A21020 |  | Division de duchas | 20d | 2027-04-21 | 2027-05-20 | A1370 SS+10d | 168.93d | 0d | N | N | B00043 |
| A21030 |  | Espejos de baño | 12d | 2027-04-27 | 2027-05-14 | A21020 SS+4d | 219.93d | 133d | N | N | B00043 |
| A21040 |  | Barandas balcon | 28d | 2027-05-20 | 2027-07-01 | A21020 | 187.93d | 101d | N | N | B00043 |
|  | P04 | **Piso 04** |  | 2027-05-18 | 2027-07-29 |  |  |  |  |  |  |
| A21080 |  | Division de duchas | 20d | 2027-05-18 | 2027-06-17 | A20750 | 125.93d | 0d | N | N | B00043 |
| A21090 |  | Espejos de baño | 12d | 2027-05-24 | 2027-06-11 | A21080 SS+4d | 201.93d | 115d | N | N | B00043 |
| A21100 |  | Barandas balcon | 28d | 2027-06-17 | 2027-07-29 | A21080 | 169.93d | 83d | N | N | B00043 |
|  | P05 | **Piso 05** |  | 2027-06-04 | 2027-08-17 |  |  |  |  |  |  |
| A21050 |  | Division de duchas | 20d | 2027-06-04 | 2027-07-06 | A20770 | 108.93d | 0d | N | N | B00043 |
| A21060 |  | Espejos de baño | 12d | 2027-06-11 | 2027-06-29 | A21050 SS+4d | 189.93d | 103d | N | N | B00043 |
| A21070 |  | Barandas balcon | 28d | 2027-07-06 | 2027-08-17 | A21050 | 157.93d | 71d | N | N | B00043 |
|  | P06 | **Piso 06** |  | 2027-06-23 | 2027-09-02 |  |  |  |  |  |  |
| A21110 |  | Division de duchas | 20d | 2027-06-23 | 2027-07-23 | A20790 | 93.93d | 0d | N | N | B00043 |
| A21120 |  | Espejos de baño | 12d | 2027-06-29 | 2027-07-16 | A21110 SS+4d | 177.93d | 91d | N | N | B00043 |
| A21130 |  | Barandas balcon | 28d | 2027-07-23 | 2027-09-02 | A21110 | 145.93d | 59d | N | N | B00043 |
|  | P07 | **Piso 07** |  | 2027-07-12 | 2027-09-20 |  |  |  |  |  |  |
| A21140 |  | Division de duchas | 20d | 2027-07-12 | 2027-08-10 | A20810 | 77.93d | 0d | N | N | B00043 |
| A21150 |  | Espejos de baño | 12d | 2027-07-16 | 2027-08-04 | A21140 SS+4d | 165.93d | 79d | N | N | B00043 |
| A21160 |  | Barandas balcon | 28d | 2027-08-10 | 2027-09-20 | A21140 | 133.93d | 47d | N | N | B00043 |
|  | P08 | **Piso 08** |  | 2027-07-29 | 2027-10-06 |  |  |  |  |  |  |
| A21170 |  | Division de duchas | 20d | 2027-07-29 | 2027-08-27 | A20840 | 67.93d | 0d | N | N | B00043 |
| A21180 |  | Espejos de baño | 12d | 2027-08-04 | 2027-08-23 | A21170 SS+4d | 153.93d | 67d | N | N | B00043 |
| A21190 |  | Barandas balcon | 28d | 2027-08-27 | 2027-10-06 | A21170 | 121.93d | 35d | N | N | B00043 |

| ID | WBS | Activity | Duration | Start | Finish | Predecessors | Total float | Free float | Hito Inicio - Fin | Tipo 80-20 | CBB_Obras |
| --- | --- | --- | --- | --- | --- | --- | --- | --- | --- | --- | --- |
|  | P09 | **Piso 09** |  | 2027-07-30 | 2027-09-29 |  |  |  |  |  |  |
| A21200 |  | Division de duchas | 17d | 2027-07-30 | 2027-08-25 | A20860 | 64.93d | 0d | N | N | B00043 |
| A21210 |  | Espejos de baño | 9d | 2027-08-05 | 2027-08-19 | A21200 SS+4d | 155.93d | 69d | N | N | B00043 |
| A21220 |  | Barandas balcon | 25d | 2027-08-25 | 2027-09-29 | A21200 | 126.93d | 40d | N | N | B00043 |
|  | P10 | **Piso 10** |  | 2027-08-13 | 2027-10-13 |  |  |  |  |  |  |
| A21230 |  | Division de duchas | 17d | 2027-08-13 | 2027-09-08 | A20880 | 59.93d | 0d | N | N | B00043 |
| A21240 |  | Espejos de baño | 9d | 2027-08-20 | 2027-09-02 | A21230 SS+4d | 145.93d | 59d | N | N | B00043 |
| A21250 |  | Barandas balcon | 25d | 2027-09-08 | 2027-10-13 | A21230 | 116.93d | 30d | N | N | B00043 |
|  | P11 | **Piso 11** |  | 2027-08-25 | 2027-10-19 |  |  |  |  |  |  |
| A21260 |  | Division de duchas | 15d | 2027-08-25 | 2027-09-15 | A20900 | 31.93d | 0d | N | N | B00043 |
| A21270 |  | Espejos de baño | 9d | 2027-08-31 | 2027-09-13 | A21260 SS+4d | 138.93d | 52d | N | N | B00043 |
| A21280 |  | Barandas balcon | 23d | 2027-09-15 | 2027-10-19 | A21260 | 113.93d | 27d | N | N | B00043 |
|  | P12 | **Piso 12** |  | 2027-09-08 | 2027-11-03 |  |  |  |  |  |  |
| A21290 |  | Division de duchas | 15d | 2027-09-08 | 2027-09-29 | A20920 | 66.93d | 0d | N | N | B00043 |
| A21300 |  | Espejos de baño | 9d | 2027-09-14 | 2027-09-27 | A21290 SS+4d | 128.93d | 42d | N | N | B00043 |
| A21310 |  | Barandas balcon | 23d | 2027-09-29 | 2027-11-03 | A21290 | 103.93d | 17d | N | N | B00043 |
|  | P13 | **Piso 13** |  | 2027-09-20 | 2027-11-11 |  |  |  |  |  |  |
| A21320 |  | Division de duchas | 15d | 2027-09-20 | 2027-10-11 | A20940 | 55.93d | 0d | N | N | B00043 |
| A21330 |  | Espejos de baño | 9d | 2027-09-24 | 2027-10-07 | A21320 SS+4d | 120.93d | 34d | N | N | B00043 |
| A21340 |  | Barandas balcon | 21d | 2027-10-11 | 2027-11-11 | A21320 | 97.93d | 11d | N | N | B00043 |
|  | P14 | **Piso 14** |  | 2027-10-04 | 2027-11-26 |  |  |  |  |  |  |
| A21350 |  | Division de duchas | 15d | 2027-10-04 | 2027-10-26 | A20960 | 50.93d | 0d | N | N | B00043 |
| A21360 |  | Espejos de baño | 9d | 2027-10-08 | 2027-10-22 | A21350 SS+4d | 110.93d | 24d | N | N | B00043 |
| A21370 |  | Barandas balcon | 21d | 2027-10-26 | 2027-11-26 | A21350 | 87.93d | 1d | N | N | B00043 |

| ID | WBS | Activity | Duration | Start | Finish | Predecessors | Total float | Free float | Resources | Cost | Tipo 80-20 | Hito Inicio - Fin | CBB_Obras |
| --- | --- | --- | --- | --- | --- | --- | --- | --- | --- | --- | --- | --- | --- |
|  | P15 | **Piso 15** |  | 2027-10-06 | 2027-11-22 |  |  |  |  |  |  |  |  |
| A21380 |  | Division de duchas | 12d | 2027-10-06 | 2027-10-25 | A20980 | 39.93d | 0d |  |  | N | N | B00043 |
| A21390 |  | Espejos de baño | 6d | 2027-10-12 | 2027-10-21 | A21380 SS+4d | 111.93d | 25d |  |  | N | N | B00043 |
| A21400 |  | Barandas balcon | 18d | 2027-10-25 | 2027-11-22 | A21380 | 91.93d | 5d |  |  | N | N | B00043 |
|  | P16 | **Piso 16** |  | 2027-10-28 | 2027-12-02 |  |  |  |  |  |  |  |  |
| A21410 |  | Division de duchas | 12d | 2027-10-28 | 2027-11-17 | A21000 FS+5d | 34.93d | 0d |  |  | N | N | B00043 |
| A21420 |  | Espejos de baño | 6d | 2027-11-04 | 2027-11-12 | A21410 SS+4d | 96.93d | 10d |  |  | N | N | B00043 |
| A21430 |  | Barandas balcon 1 | 8d | 2027-11-17 | 2027-11-29 | A21410 | 83.93d | 0d |  |  | N | N | B00043 |
| A21440 |  | Barandas balcon 2 | 8d | 2027-11-22 | 2027-12-02 | A21430 SS+3d | 83.93d |  | Dummy [0.02 h] | 0.02 | N | N | B00043 |
|  | Dotacion | **Dotacion** |  | 2027-04-21 | 2028-01-27 |  |  |  |  |  |  |  |  |
|  | P03 | **Piso 03** |  | 2027-04-21 | 2027-07-12 |  |  |  |  |  |  |  |  |
| A21450 |  | Aparatos sanitarios y griferias | 40d | 2027-04-21 | 2027-06-21 | A1350 FS-20d | 168.93d | 0d | Dummy [0.02 h] | 0.02 | N | N | B00043 |
| A21460 |  | Aparatos electricos y comunicaciones | 22d | 2027-05-20 | 2027-06-23 | A21450 FS-20d | 168.93d | 0d | Dummy [0.02 h] | 0.02 | N | N | B00043 |
| A21470 |  | Gasodomesticos | 22d | 2027-06-09 | 2027-07-12 | A21460 FS-10d | 181.93d |  | Dummy [0.02 h] | 0.02 | N | N | B00043 |
|  | P04 | **Piso 04** |  | 2027-05-18 | 2027-08-06 |  |  |  |  |  |  |  |  |
| A21480 |  | Aparatos sanitarios y griferias | 40d | 2027-05-18 | 2027-07-16 | A21080 FS-20d | 125.93d | 0d | Dummy [0.02 h] | 0.02 | N | N | B00043 |
| A21490 |  | Aparatos electricos y comunicaciones | 22d | 2027-06-17 | 2027-07-21 | A21480 FS-20d | 125.93d | 0d | Dummy [0.02 h] | 0.02 | N | N | B00043 |
| A21500 |  | Gasodomesticos | 22d | 2027-07-06 | 2027-08-06 | A21490 FS-10d | 163.93d |  | Dummy [0.02 h] | 0.02 | N | N | B00043 |
|  | P05 | **Piso 05** |  | 2027-06-04 | 2027-08-25 |  |  |  |  |  |  |  |  |
| A21510 |  | Aparatos sanitarios y griferias | 40d | 2027-06-04 | 2027-08-04 | A21050 FS-20d | 108.93d | 0d | Dummy [0.02 h] | 0.02 | N | N | B00043 |
| A21520 |  | Aparatos electricos y comunicaciones | 22d | 2027-07-06 | 2027-08-06 | A21510 FS-20d | 108.93d | 0d | Dummy [0.02 h] | 0.02 | N | N | B00043 |
| A21530 |  | Gasodomesticos | 22d | 2027-07-23 | 2027-08-25 | A21520 FS-10d | 151.93d |  | Dummy [0.02 h] | 0.02 | N | N | B00043 |
|  | P06 | **Piso 06** |  | 2027-06-23 | 2027-09-10 |  |  |  |  |  |  |  |  |
| A21540 |  | Aparatos sanitarios y griferias | 40d | 2027-06-23 | 2027-08-23 | A21110 FS-20d | 93.93d | 0d | Dummy [0.02 h] | 0.02 | N | N | B00043 |
| A21550 |  | Aparatos electricos y comunicaciones | 22d | 2027-07-23 | 2027-08-25 | A21540 FS-20d | 93.93d | 0d | Dummy [0.02 h] | 0.02 | N | N | B00043 |
| A21560 |  | Gasodomesticos | 22d | 2027-08-10 | 2027-09-10 | A21550 FS-10d | 139.93d |  | Dummy [0.02 h] | 0.02 | N | N | B00043 |

| ID | WBS | Activity | Duration | Start | Finish | Predecessors | Total float | Free float | Resources | Cost | Hito Inicio - Fin | Tipo 80-20 | CBB_Obras |
| --- | --- | --- | --- | --- | --- | --- | --- | --- | --- | --- | --- | --- | --- |
|  | P07 | **Piso 07** |  | 2027-07-12 | 2027-09-28 |  |  |  |  |  |  |  |  |
| A21570 |  | Aparatos sanitarios y griferias | 40d | 2027-07-12 | 2027-09-08 | A21140 FS-20d | 77.93d | 0d | Dummy [0.02 h] | 0.02 | N | N | B00043 |
| A21580 |  | Aparatos electricos y comunicaciones | 22d | 2027-08-10 | 2027-09-10 | A21570 FS-20d | 77.93d | 0d | Dummy [0.02 h] | 0.02 | N | N | B00043 |
| A21590 |  | Gasodomesticos | 22d | 2027-08-27 | 2027-09-28 | A21580 FS-10d | 127.93d |  | Dummy [0.02 h] | 0.02 | N | N | B00043 |
|  | P08 | **Piso 08** |  | 2027-07-29 | 2027-10-14 |  |  |  |  |  |  |  |  |
| A21600 |  | Aparatos sanitarios y griferias | 40d | 2027-07-29 | 2027-09-24 | A21170 FS-20d | 67.93d | 0d | Dummy [0.02 h] | 0.02 | N | N | B00043 |
| A21610 |  | Aparatos electricos y comunicaciones | 22d | 2027-08-27 | 2027-09-28 | A21600 FS-20d | 67.93d | 0d | Dummy [0.02 h] | 0.02 | N | N | B00043 |
| A21620 |  | Gasodomesticos | 22d | 2027-09-14 | 2027-10-14 | A21610 FS-10d | 115.93d |  | Dummy [0.02 h] | 0.02 | N | N | B00043 |
|  | P09 | **Piso 09** |  | 2027-07-27 | 2027-09-30 |  |  |  |  |  |  |  |  |
| A21630 |  | Aparatos sanitarios y griferias | 34d | 2027-07-27 | 2027-09-14 | A21200 FS-20d | 64.93d | 0d | Dummy [0.02 h] | 0.02 | N | N | B00043 |
| A21640 |  | Aparatos electricos y comunicaciones | 17d | 2027-08-24 | 2027-09-16 | A21630 FS-15d | 64.93d | 0d | Dummy [0.02 h] | 0.02 | N | N | B00043 |
| A21650 |  | Gasodomesticos | 17d | 2027-09-07 | 2027-09-30 | A21640 FS-7d | 125.93d |  | Dummy [0.02 h] | 0.02 | N | N | B00043 |
|  | P10 | **Piso 10** |  | 2027-08-10 | 2027-10-14 |  |  |  |  |  |  |  |  |
| A21660 |  | Aparatos sanitarios y griferias | 34d | 2027-08-10 | 2027-09-28 | A21230 FS-20d | 59.93d | 0d | Dummy [0.02 h] | 0.02 | N | N | B00043 |
| A21670 |  | Aparatos electricos y comunicaciones | 17d | 2027-09-07 | 2027-09-30 | A21660 FS-15d | 59.93d | 0d | Dummy [0.02 h] | 0.02 | N | N | B00043 |
| A21680 |  | Gasodomesticos | 17d | 2027-09-21 | 2027-10-14 | A21670 FS-7d | 115.93d |  | Dummy [0.02 h] | 0.02 | N | N | B00043 |
|  | P11 | **Piso 11** |  | 2027-08-18 | 2027-10-22 |  |  |  |  |  |  |  |  |
| A21690 |  | Aparatos sanitarios y griferias | 34d | 2027-08-18 | 2027-10-05 | A21260 FS-20d | 31.93d | 0d | Dummy [0.02 h] | 0.02 | N | N | B00043 |
| A21700 |  | Aparatos electricos y comunicaciones | 17d | 2027-09-14 | 2027-10-07 | A21690 FS-15d | 31.93d | 0d | Dummy [0.02 h] | 0.02 | N | N | B00043 |
| A21710 |  | Gasodomesticos | 17d | 2027-09-28 | 2027-10-22 | A21700 FS-7d | 110.93d |  | Dummy [0.02 h] | 0.02 | N | N | B00043 |
|  | P12 | **Piso 12** |  | 2027-09-01 | 2027-11-08 |  |  |  |  |  |  |  |  |
| A21720 |  | Aparatos sanitarios y griferias | 34d | 2027-09-01 | 2027-10-20 | A21290 FS-20d | 66.93d | 0d | Dummy [0.02 h] | 0.02 | N | N | B00043 |
| A21730 |  | Aparatos electricos y comunicaciones | 17d | 2027-09-28 | 2027-10-22 | A21720 FS-15d | 66.93d | 0d | Dummy [0.02 h] | 0.02 | N | N | B00043 |
| A21740 |  | Gasodomesticos | 17d | 2027-10-12 | 2027-11-08 | A21730 FS-7d | 100.93d |  | Dummy [0.02 h] | 0.02 | N | N | B00043 |

| ID | WBS | Activity | Duration | Start | Finish | Predecessors | Total float | Free float | Resources | Cost | Hito Inicio - Fin | Tipo 80-20 | CBB_Obras |
| --- | --- | --- | --- | --- | --- | --- | --- | --- | --- | --- | --- | --- | --- |
|  | P13 | **Piso 13** |  | 2027-09-13 | 2027-11-18 |  |  |  |  |  |  |  |  |
| A21750 |  | Aparatos sanitarios y griferias | 30d | 2027-09-13 | 2027-10-26 | A21320 FS-20d | 55.93d | 0d | Dummy [0.02 h] | 0.02 | N | N | B00043 |
| A21760 |  | Aparatos electricos y comunicaciones | 15d | 2027-10-11 | 2027-11-03 | A21750 FS-10d | 55.93d | 0d | Dummy [0.02 h] | 0.02 | N | N | B00043 |
| A21770 |  | Gasodomesticos | 15d | 2027-10-26 | 2027-11-18 | A21760 FS-5d | 93.93d |  | Dummy [0.02 h] | 0.02 | N | N | B00043 |
|  | P14 | **Piso 14** |  | 2027-09-27 | 2027-12-02 |  |  |  |  |  |  |  |  |
| A21780 |  | Aparatos sanitarios y griferias | 30d | 2027-09-27 | 2027-11-10 | A21350 FS-20d | 50.93d | 0d | Dummy [0.02 h] | 0.02 | N | N | B00043 |
| A21790 |  | Aparatos electricos y comunicaciones | 15d | 2027-10-26 | 2027-11-18 | A21780 FS-10d | 50.93d | 0d | Dummy [0.02 h] | 0.02 | N | N | B00043 |
| A21800 |  | Gasodomesticos | 15d | 2027-11-10 | 2027-12-02 | A21790 FS-5d | 83.93d |  | Dummy [0.02 h] | 0.02 | N | N | B00043 |
|  | P15 | **Piso 15** |  | 2027-09-24 | 2027-12-13 |  |  |  |  |  |  |  |  |
| A21810 |  | Aparatos sanitarios y griferias | 24d | 2027-09-24 | 2027-10-29 | A21380 FS-20d | 39.93d | 0d | Dummy [0.02 h] | 0.02 | N | N | B00043 |
| A21820 |  | Aparatos electricos y comunicaciones | 14d | 2027-10-29 | 2027-11-22 | A21810 | 39.93d | 0d | Dummy [0.02 h] | 0.02 | N | N | B00043 |
| A21830 |  | Gasodomesticos | 14d | 2027-11-22 | 2027-12-13 | A21820 | 77.93d |  | Dummy [0.02 h] | 0.02 | N | N | B00043 |
|  | P16 | **Piso 16** |  | 2027-10-15 | 2028-01-27 |  |  |  |  |  |  |  |  |
| A21840 |  | Aparatos sanitarios y griferias | 24d | 2027-10-15 | 2027-11-23 | A21410 FS-20d | 34.93d | 0d | Dummy [0.02 h] | 0.02 | N | N | B00043 |
| A21850 |  | Aparatos electricos y comunicaciones | 14d | 2027-11-08 | 2027-11-29 | A21840 FS-10d | 34.93d | 0d | Dummy [0.02 h] | 0.02 | N | N | B00043 |
| A21860 |  | Gasodomesticos | 14d | 2027-11-22 | 2027-12-13 | A21850 FS-5d | 56.93d | 0d | Dummy [0.02 h] | 0.02 | N | N | B00043 |
| A21870 |  | Jaccuzzi | 16d | 2027-12-13 | 2028-01-20 | A21860 | 56.93d | 0d |  |  | N | N | B00043 |
| A21880 |  | BBQ | 5d | 2028-01-20 | 2028-01-27 | A21870 | 56.93d | 0d |  |  | N | N | B00043 |
|  | Estuco y Pintura-03 | **Estuco y Pintura-03** |  | 2027-05-07 | 2028-02-10 |  |  |  |  |  |  |  |  |
|  | P03 | **Piso 03** |  | 2027-05-07 | 2027-06-15 |  |  |  |  |  |  |  |  |
| A21890 |  | Tercera Mano de pintura | 24d | 2027-05-07 | 2027-06-15 | A22030 SS-20d | 168.93d | 0d | Dummy [0.02 h] | 0.02 | N | N | B00043 |
|  | P04 | **Piso 04** |  | 2027-07-06 | 2027-08-10 |  |  |  |  |  |  |  |  |
| A21900 |  | Tercera Mano de pintura | 24d | 2027-07-06 | 2027-08-10 | A21490 FS-10d | 125.93d | 0d | Dummy [0.02 h] | 0.02 | N | N | B00043 |
|  | P05 | **Piso 05** |  | 2027-07-23 | 2027-08-27 |  |  |  |  |  |  |  |  |
| A21910 |  | Tercera Mano de pintura | 24d | 2027-07-23 | 2027-08-27 | A21520 FS-10d | 108.93d | 0d | Dummy [0.02 h] | 0.02 | N | N | B00043 |

| ID | WBS | Activity | Duration | Start | Finish | Predecessors | Total float | Free float | Resources | Cost | Hito Inicio - Fin | Tipo 80-20 | CBB_Obras |
| --- | --- | --- | --- | --- | --- | --- | --- | --- | --- | --- | --- | --- | --- |
|  | P06 | **Piso 06** |  | 2027-08-10 | 2027-09-14 |  |  |  |  |  |  |  |  |
| A21920 |  | Tercera Mano de pintura | 24d | 2027-08-10 | 2027-09-14 | A21550 FS-10d | 93.93d | 0d | Dummy [0.02 h] | 0.02 | N | N | B00043 |
|  | P07 | **Piso 07** |  | 2027-08-27 | 2027-09-30 |  |  |  |  |  |  |  |  |
| A21930 |  | Tercera Mano de pintura | 24d | 2027-08-27 | 2027-09-30 | A21580 FS-10d | 77.93d | 0d | Dummy [0.02 h] | 0.02 | N | N | B00043 |
|  | P08 | **Piso 08** |  | 2027-09-14 | 2027-10-19 |  |  |  |  |  |  |  |  |
| A21940 |  | Tercera Mano de pintura | 24d | 2027-09-14 | 2027-10-19 | A21610 FS-10d | 67.93d | 0d | Dummy [0.02 h] | 0.02 | N | N | B00043 |
|  | P09 | **Piso 09** |  | 2027-09-30 | 2027-11-02 |  |  |  |  |  |  |  |  |
| A21950 |  | Tercera Mano de pintura | 21d | 2027-09-30 | 2027-11-02 | A21640 FS+10d | 64.93d | 0d | Dummy [0.02 h] | 0.02 | N | N | B00043 |
|  | P10 | **Piso 10** |  | 2027-10-14 | 2027-11-17 |  |  |  |  |  |  |  |  |
| A21960 |  | Tercera Mano de pintura | 21d | 2027-10-14 | 2027-11-17 | A21670 FS+10d | 59.93d | 0d | Dummy [0.02 h] | 0.02 | N | N | B00043 |
|  | P11 | **Piso 11** |  | 2027-10-22 | 2027-11-22 |  |  |  |  |  |  |  |  |
| A21970 |  | Tercera Mano de pintura | 19d | 2027-10-22 | 2027-11-22 | A21700 FS+10d | 31.93d | 0d | Dummy [0.02 h] | 0.02 | N | N | B00043 |
|  | P12 | **Piso 12** |  | 2027-11-08 | 2027-12-06 |  |  |  |  |  |  |  |  |
| A21980 |  | Tercera Mano de pintura | 19d | 2027-11-08 | 2027-12-06 | A21730 FS+10d | 66.93d | 0d | Dummy [0.02 h] | 0.02 | N | N | B00043 |
|  | P13 | **Piso 13** |  | 2027-11-25 | 2027-12-22 |  |  |  |  |  |  |  |  |
| A21990 |  | Tercera Mano de pintura | 18d | 2027-11-25 | 2027-12-22 | A21760 FS+15d | 55.93d | 0d | Dummy [0.02 h] | 0.02 | N | N | B00043 |
|  | P14 | **Piso 14** |  | 2027-12-02 | 2028-01-14 |  |  |  |  |  |  |  |  |
| A22000 |  | Tercera Mano de pintura | 18d | 2027-12-02 | 2028-01-14 | A21790 FS+10d | 50.93d | 0d | Dummy [0.02 h] | 0.02 | N | N | B00043 |
|  | P15 | **Piso 15** |  | 2028-01-13 | 2028-02-03 |  |  |  |  |  |  |  |  |
| A22010 |  | Tercera Mano de pintura | 15d | 2028-01-13 | 2028-02-03 | A21820 FS+25d | 39.93d | 0d | Dummy [0.02 h] | 0.02 | N | N | B00043 |
|  | P16 | **Piso 16** |  | 2028-01-20 | 2028-02-10 |  |  |  |  |  |  |  |  |
| A22020 |  | Tercera Mano de pintura | 15d | 2028-01-20 | 2028-02-10 | A21850 FS+25d | 34.93d | 0d | Dummy [0.02 h] | 0.02 | N | N | B00043 |
|  | Detallado y Aseo Apartamento | **Detallado y Aseo Apartamento** |  | 2027-06-15 | 2028-02-28 |  |  |  |  |  |  |  |  |
|  | P03 | **Piso 03** |  | 2027-06-15 | 2027-07-08 |  |  |  |  |  |  |  |  |
| A22060 |  | Detallado | 12d | 2027-06-15 | 2027-07-01 | A22090 | 168.93d | 0d | Dummy [0.02 h] | 0.02 | N | N | B00043 |
| A22080 |  | Aseo | 4d | 2027-07-01 | 2027-07-08 | A22060 | 168.93d | 143.93d | Dummy [0.02 h] | 0.02 | N | N | B00043 |

| ID | WBS | Activity | Duration | Start | Finish | Predecessors | Total float | Free float | Resources | Cost | Tipo 80-20 | Hito Inicio - Fin | CBB_Obras |
| --- | --- | --- | --- | --- | --- | --- | --- | --- | --- | --- | --- | --- | --- |
|  | P04 | **Piso 04** |  | 2027-08-10 | 2027-09-02 |  |  |  |  |  |  |  |  |
| A22110 |  | Detallado | 12d | 2027-08-10 | 2027-08-27 | A21900 | 125.93d | 0d | Dummy [0.02 h] | 0.02 | N | N | B00043 |
| A22120 |  | Aseo | 4d | 2027-08-27 | 2027-09-02 | A22110 | 125.93d | 105.93d | Dummy [0.02 h] | 0.02 | N | N | B00043 |
|  | P05 | **Piso 05** |  | 2027-08-27 | 2027-09-20 |  |  |  |  |  |  |  |  |
| A22130 |  | Detallado | 12d | 2027-08-27 | 2027-09-14 | A21910 | 108.93d | 0d | Dummy [0.02 h] | 0.02 | N | N | B00043 |
| A22140 |  | Aseo | 4d | 2027-09-14 | 2027-09-20 | A22130 | 108.93d | 93.93d | Dummy [0.02 h] | 0.02 | N | N | B00043 |
|  | P06 | **Piso 06** |  | 2027-09-14 | 2027-10-06 |  |  |  |  |  |  |  |  |
| A22150 |  | Detallado | 12d | 2027-09-14 | 2027-09-30 | A21920 | 93.93d | 0d | Dummy [0.02 h] | 0.02 | N | N | B00043 |
| A22160 |  | Aseo | 4d | 2027-09-30 | 2027-10-06 | A22150 | 93.93d | 81.93d | Dummy [0.02 h] | 0.02 | N | N | B00043 |
|  | P07 | **Piso 07** |  | 2027-09-30 | 2027-10-25 |  |  |  |  |  |  |  |  |
| A22170 |  | Detallado | 12d | 2027-09-30 | 2027-10-19 | A21930 | 77.93d | 0d | Dummy [0.02 h] | 0.02 | N | N | B00043 |
| A22180 |  | Aseo | 4d | 2027-10-19 | 2027-10-25 | A22170 | 77.93d | 69.93d | Dummy [0.02 h] | 0.02 | N | N | B00043 |
|  | P08 | **Piso 08** |  | 2027-11-03 | 2027-11-26 |  |  |  |  |  |  |  |  |
| A22190 |  | Detallado | 12d | 2027-11-03 | 2027-11-22 | A21940 FS+10d | 67.93d | 0d | Dummy [0.02 h] | 0.02 | N | N | B00043 |
| A22200 |  | Aseo | 4d | 2027-11-22 | 2027-11-26 | A22190 | 67.93d | 47.93d | Dummy [0.02 h] | 0.02 | N | N | B00043 |
|  | P09 | **Piso 09** |  | 2027-11-02 | 2027-11-24 |  |  |  |  |  |  |  |  |
| A22210 |  | Detallado | 12d | 2027-11-02 | 2027-11-19 | A21950 | 64.93d | 0d | Dummy [0.02 h] | 0.02 | N | N | B00043 |
| A22220 |  | Aseo | 3d | 2027-11-19 | 2027-11-24 | A22210 | 64.93d | 44.93d | Dummy [0.02 h] | 0.02 | N | N | B00043 |
|  | P10 | **Piso 10** |  | 2027-11-17 | 2027-12-09 |  |  |  |  |  |  |  |  |
| A22230 |  | Detallado | 12d | 2027-11-17 | 2027-12-03 | A21960 | 59.93d | 0d | Dummy [0.02 h] | 0.02 | N | N | B00043 |
| A22240 |  | Aseo | 3d | 2027-12-03 | 2027-12-09 | A22230 | 59.93d | 39.93d | Dummy [0.02 h] | 0.02 | N | N | B00043 |
|  | P11 | **Piso 11** |  | 2027-11-22 | 2027-12-14 |  |  |  |  |  |  |  |  |
| A22250 |  | Detallado | 12d | 2027-11-22 | 2027-12-09 | A21970 | 31.93d | 0d | Dummy [0.02 h] | 0.02 | N | N | B00043 |
| A22260 |  | Aseo | 3d | 2027-12-09 | 2027-12-14 | A22250 | 31.93d |  | Dummy [0.02 h] | 0.02 | N | N | B00043 |

| ID | WBS | Activity | Duration | Start | Finish | Predecessors | Total float | Free float | Resources | Cost | Hito Inicio - Fin | Tipo 80-20 | CBB_Obras |
| --- | --- | --- | --- | --- | --- | --- | --- | --- | --- | --- | --- | --- | --- |
|  | P12 | **Piso 12** |  | 2027-12-06 | 2028-01-13 |  |  |  |  |  |  |  |  |
| A22270 |  | Detallado | 12d | 2027-12-06 | 2027-12-23 | A21980 | 66.93d | 0d | Dummy [0.02 h] | 0.02 | N | N | B00043 |
| A22280 |  | Aseo | 3d | 2027-12-23 | 2028-01-13 | A22270 | 66.93d | 32d | Dummy [0.02 h] | 0.02 | N | N | B00043 |
|  | P13 | **Piso 13** |  | 2027-12-22 | 2028-01-28 |  |  |  |  |  |  |  |  |
| A22290 |  | Detallado | 12d | 2027-12-22 | 2028-01-25 | A21990 | 55.93d | 0d | Dummy [0.02 h] | 0.02 | N | N | B00043 |
| A22300 |  | Aseo | 3d | 2028-01-25 | 2028-01-28 | A22290 | 55.93d | 21d | Dummy [0.02 h] | 0.02 | N | N | B00043 |
|  | P14 | **Piso 14** |  | 2028-01-14 | 2028-02-04 |  |  |  |  |  |  |  |  |
| A22310 |  | Detallado | 12d | 2028-01-14 | 2028-02-01 | A22000 | 50.93d | 0d | Dummy [0.02 h] | 0.02 | N | N | B00043 |
| A22320 |  | Aseo | 3d | 2028-02-01 | 2028-02-04 | A22310 | 50.93d | 16d | Dummy [0.02 h] | 0.02 | N | N | B00043 |
|  | P15 | **Piso 15** |  | 2028-02-03 | 2028-02-21 |  |  |  |  |  |  |  |  |
| A22330 |  | Detallado | 10d | 2028-02-03 | 2028-02-17 | A22010 | 39.93d | 0d | Dummy [0.02 h] | 0.02 | N | N | B00043 |
| A22340 |  | Aseo | 2d | 2028-02-17 | 2028-02-21 | A22330 | 39.93d | 5d | Dummy [0.02 h] | 0.02 | N | N | B00043 |
|  | P16 | **Piso 16** |  | 2028-02-10 | 2028-02-28 |  |  |  |  |  |  |  |  |
| A22350 |  | Detallado | 10d | 2028-02-10 | 2028-02-24 | A22020 | 34.93d | 0d | Dummy [0.02 h] | 0.02 | N | N | B00043 |
| A22360 |  | Aseo | 2d | 2028-02-24 | 2028-02-28 | A22350 | 34.93d | 0d | Dummy [0.02 h] | 0.02 | N | N | B00043 |
|  | 10Fac | **07. Fachada** |  | 2026-07-17 | 2028-01-26 |  |  |  |  |  |  |  |  |
|  | 01Fachada | **Fachadas** |  | 2026-07-17 | 2028-01-26 |  |  |  |  |  |  |  |  |
|  | FACHADA PISCINA Y MAR | **Fachada Piscina y Mar** |  | 2026-07-17 | 2028-01-26 |  |  |  |  |  |  |  |  |
|  | Paño 1 | **Paño 1** |  | 2026-07-17 | 2026-10-06 |  |  |  |  |  |  |  |  |
| A22370 |  | Mamposteria | 10d | 2026-07-17 | 2026-07-31 | A1400 | 0d |  | Dummy [0.05 h] | 0.05 | N | N | B00043 |
| A22380 |  | Pañete | 17d | 2026-08-03 | 2026-08-27 | A22370 | 354d | 0d | Dummy [0.05 h] | 0.05 | N | N | B00043 |
| A22390 |  | Pintura | 28d | 2026-08-28 | 2026-10-06 | A22380 | 354d |  | Dummy [0.05 h] | 0.05 | N | N | B00043 |
|  | Paño 2 | **Paño 2** |  | 2026-08-03 | 2026-10-21 |  |  |  |  |  |  |  |  |
| A22460 |  | Mamposteria | 10d | 2026-08-03 | 2026-08-18 | A22370 | 0d |  | Dummy [0.05 h] | 0.05 | N | N | B00043 |
| A22470 |  | Pañete | 17d | 2026-08-19 | 2026-09-10 | A22460 | 344d | 0d | Dummy [0.05 h] | 0.05 | N | N | B00043 |
| A22480 |  | Pintura | 28d | 2026-09-11 | 2026-10-21 | A22470 | 344d |  | Dummy [0.05 h] | 0.05 | N | N | B00043 |

| ID | WBS | Activity | Duration | Start | Finish | Predecessors | Total float | Free float | Resources | Cost | Tipo 80-20 | Hito Inicio - Fin | CBB_Obras |
| --- | --- | --- | --- | --- | --- | --- | --- | --- | --- | --- | --- | --- | --- |
|  | Paño 3 | **Paño 3** |  | 2026-08-19 | 2027-01-14 |  |  |  |  |  |  |  |  |
| A22400 |  | Prolongaciones Elec-Hidr-Hvac-Comu | 10d | 2026-08-19 | 2026-09-01 | A22460 | 0d |  | Dummy [0.05 h] | 0.05 | N | N | B00043 |
| A22410 |  | Mamposteria | 10d | 2026-09-02 | 2026-09-15 | A22400 | 299d | 0d | Dummy [0.05 h] | 0.05 | N | N | B00043 |
| A22420 |  | Superboard | 25d | 2026-09-16 | 2026-10-21 | A22410 | 299d | 0d | Dummy [0.05 h] | 0.05 | N | N | B00043 |
| A22440 |  | Pañetes | 17d | 2026-10-22 | 2026-11-17 | A22420 | 299d | 0d | Dummy [0.05 h] | 0.05 | N | N | B00043 |
| A22450 |  | Pintura | 28d | 2026-11-18 | 2027-01-14 | A22440 | 299d |  | Dummy [0.05 h] | 0.05 | N | N | B00043 |
|  | Paño 4 | **Paño 4** |  | 2026-09-02 | 2027-01-28 |  |  |  |  |  |  |  |  |
| A22490 |  | Prolongaciones Elec-Hidr-Hvac-Comu | 10d | 2026-09-02 | 2026-09-15 | A22400 | 0d |  | Dummy [0.05 h] | 0.05 | N | N | B00043 |
| A22500 |  | Mamposteria | 10d | 2026-09-16 | 2026-09-29 | A22490 | 289d | 0d | Dummy [0.05 h] | 0.05 | N | N | B00043 |
| A22510 |  | Superboard | 25d | 2026-09-30 | 2026-11-05 | A22500 | 289d | 0d | Dummy [0.05 h] | 0.05 | N | N | B00043 |
| A22520 |  | Pañetes | 17d | 2026-11-06 | 2026-12-01 | A22510 | 289d | 0d | Dummy [0.05 h] | 0.05 | N | N | B00043 |
| A22530 |  | Pintura | 28d | 2026-12-02 | 2027-01-28 | A22520 | 289d |  | Dummy [0.05 h] | 0.05 | N | N | B00043 |
|  | Paño 5 | **Paño 5** |  | 2026-09-16 | 2027-03-09 |  |  |  |  |  |  |  |  |
| A22540 |  | Prolongaciones Elec-Hidr-Hvac-Comu | 12d | 2026-09-16 | 2026-10-01 | A22490 | 0d |  | Dummy [0.05 h] | 0.05 | N | N | B00043 |
| A22550 |  | Mamposteria | 12d | 2026-10-02 | 2026-10-20 | A22540 | 261d | 0d | Dummy [0.05 h] | 0.05 | N | N | B00043 |
| A22560 |  | Superboard | 31d | 2026-10-21 | 2026-12-04 | A22550 | 261d | 0d | Dummy [0.05 h] | 0.05 | N | N | B00043 |
| A22570 |  | Pañetes | 19d | 2026-12-07 | 2027-01-20 | A22560 | 261d | 0d | Dummy [0.05 h] | 0.05 | N | N | B00043 |
| A22580 |  | Pintura | 34d | 2027-01-21 | 2027-03-09 | A22570 | 261d |  | Dummy [0.05 h] | 0.05 | N | N | B00043 |
|  | Paño 6 | **Paño 6** |  | 2026-10-02 | 2027-04-28 |  |  |  |  |  |  |  |  |
| A22590 |  | Prolongaciones Elec-Hidr-Hvac-Comu | 14d | 2026-10-02 | 2026-10-22 | A22540 | 0d |  | Dummy [0.05 h] | 0.05 | N | N | B00043 |
| A22600 |  | Mamposteria | 14d | 2026-10-23 | 2026-11-12 | A22590 | 230d | 0d | Dummy [0.05 h] | 0.05 | N | N | B00043 |
| A22610 |  | Superboard | 37d | 2026-11-13 | 2027-01-25 | A22600 | 230d | 0d | Dummy [0.05 h] | 0.05 | N | N | B00043 |
| A22620 |  | Pañetes | 24d | 2027-01-26 | 2027-02-26 | A22610 | 230d | 0d | Dummy [0.05 h] | 0.05 | N | N | B00043 |
| A22630 |  | Pintura | 38d | 2027-03-01 | 2027-04-28 | A22620 | 230d |  | Dummy [0.05 h] | 0.05 | N | N | B00043 |

| ID | WBS | Activity | Duration | Start | Finish | Predecessors | Total float | Free float | Resources | Cost | Hito Inicio - Fin | Tipo 80-20 | CBB_Obras |
| --- | --- | --- | --- | --- | --- | --- | --- | --- | --- | --- | --- | --- | --- |
|  | Paño 7 | **Paño 7** |  | 2026-10-23 | 2027-06-11 |  |  |  |  |  |  |  |  |
| A22640 |  | Prolongaciones Elec-Hidr-Hvac-Comu | 16d | 2026-10-23 | 2026-11-17 | A22590 | 0d |  | Dummy [0.05 h] | 0.05 | N | N | B00043 |
| A22650 |  | Mamposteria | 16d | 2026-11-18 | 2026-12-10 | A22640 | 201d | 0d | Dummy [0.05 h] | 0.05 | N | N | B00043 |
| A22660 |  | Superboard | 38d | 2026-12-11 | 2027-02-19 | A22650 | 201d | 0d | Dummy [0.05 h] | 0.05 | N | N | B00043 |
| A22670 |  | Pañetes | 28d | 2027-02-22 | 2027-04-07 | A22660 | 201d | 0d | Dummy [0.05 h] | 0.05 | N | N | B00043 |
| A22680 |  | Pintura | 44d | 2027-04-08 | 2027-06-11 | A22670 | 201d |  | Dummy [0.05 h] | 0.05 | N | N | B00043 |
|  | Paño 8 | **Paño 8** |  | 2026-11-18 | 2027-07-12 |  |  |  |  |  |  |  |  |
| A22690 |  | Prolongaciones Elec-Hidr-Hvac-Comu | 18d | 2026-11-18 | 2026-12-14 | A22640 | 0d |  | Dummy [0.05 h] | 0.05 | N | N | B00043 |
| A22700 |  | Mamposteria | 18d | 2026-12-15 | 2027-01-26 | A22690 | 181d | 0d | Dummy [0.05 h] | 0.05 | N | N | B00043 |
| A22710 |  | Superboard | 30d | 2027-01-27 | 2027-03-09 | A22700 | 181d | 0d | Dummy [0.05 h] | 0.05 | N | N | B00043 |
| A22720 |  | Pañetes | 30d | 2027-03-10 | 2027-04-27 | A22710 | 181d | 0d | Dummy [0.05 h] | 0.05 | N | N | B00043 |
| A22730 |  | Pintura | 50d | 2027-04-28 | 2027-07-12 | A22720 | 181d |  | Dummy [0.05 h] | 0.05 | N | N | B00043 |
|  | Paño 9 | **Paño 9** |  | 2026-12-15 | 2027-08-06 |  |  |  |  |  |  |  |  |
| A22740 |  | Prolongaciones Elec-Hidr-Hvac-Comu | 18d | 2026-12-15 | 2027-01-26 | A22690 | 0d |  | Dummy [0.05 h] | 0.05 | N | N | B00043 |
| A22750 |  | Mamposteria | 18d | 2027-01-27 | 2027-02-19 | A22740 | 163d | 0d | Dummy [0.05 h] | 0.05 | N | N | B00043 |
| A22760 |  | Superboard | 30d | 2027-02-22 | 2027-04-09 | A22750 | 163d | 0d | Dummy [0.05 h] | 0.05 | N | N | B00043 |
| A22770 |  | Pañetes | 30d | 2027-04-12 | 2027-05-24 | A22760 | 163d | 0d | Dummy [0.05 h] | 0.05 | N | N | B00043 |
| A22780 |  | Pintura | 50d | 2027-05-25 | 2027-08-06 | A22770 | 163d |  | Dummy [0.05 h] | 0.05 | N | N | B00043 |
|  | Paño 10 | **Paño 10** |  | 2027-01-27 | 2027-09-02 |  |  |  |  |  |  |  |  |
| A22790 |  | Prolongaciones Elec-Hidr-Hvac-Comu | 18d | 2027-01-27 | 2027-02-19 | A22740 | 0d |  | Dummy [0.05 h] | 0.05 | N | N | B00043 |
| A22800 |  | Mamposteria | 18d | 2027-02-22 | 2027-03-17 | A22790 | 145d | 0d | Dummy [0.05 h] | 0.05 | N | N | B00043 |
| A22810 |  | Superboard | 30d | 2027-03-18 | 2027-05-05 | A22800 | 145d | 0d | Dummy [0.05 h] | 0.05 | N | N | B00043 |
| A22820 |  | Pañetes | 30d | 2027-05-06 | 2027-06-21 | A22810 | 145d | 0d | Dummy [0.05 h] | 0.05 | N | N | B00043 |
| A22830 |  | Pintura | 50d | 2027-06-22 | 2027-09-02 | A22820 | 145d |  | Dummy [0.05 h] | 0.05 | N | N | B00043 |

| ID | WBS | Activity | Duration | Start | Finish | Predecessors | Total float | Free float | Resources | Cost | Hito Inicio - Fin | Tipo 80-20 | CBB_Obras |
| --- | --- | --- | --- | --- | --- | --- | --- | --- | --- | --- | --- | --- | --- |
|  | Paño 11 | **Paño 11** |  | 2027-02-22 | 2027-09-28 |  |  |  |  |  |  |  |  |
| A22840 |  | Prolongaciones Elec-Hidr-Hvac-Comu | 18d | 2027-02-22 | 2027-03-17 | A22790 | 0d |  | Dummy [0.05 h] | 0.05 | N | N | B00043 |
| A22850 |  | Mamposteria | 18d | 2027-03-18 | 2027-04-19 | A22840 | 127d | 0d | Dummy [0.05 h] | 0.05 | N | N | B00043 |
| A22860 |  | Superboard | 30d | 2027-04-20 | 2027-06-02 | A22850 | 127d | 0d | Dummy [0.05 h] | 0.05 | N | N | B00043 |
| A22870 |  | Pañetes | 30d | 2027-06-03 | 2027-07-16 | A22860 | 127d | 0d | Dummy [0.05 h] | 0.05 | N | N | B00043 |
| A22880 |  | Pintura | 50d | 2027-07-19 | 2027-09-28 | A22870 | 127d |  | Dummy [0.05 h] | 0.05 | N | N | B00043 |
|  | Paño 12 | **Paño 12** |  | 2027-03-18 | 2027-10-25 |  |  |  |  |  |  |  |  |
| A22890 |  | Prolongaciones Elec-Hidr-Hvac-Comu | 18d | 2027-03-18 | 2027-04-19 | A22840 | 0d |  | Dummy [0.05 h] | 0.05 | N | N | B00043 |
| A22900 |  | Mamposteria | 18d | 2027-04-20 | 2027-05-14 | A22890 | 109d | 0d | Dummy [0.05 h] | 0.05 | N | N | B00043 |
| A22910 |  | Superboard | 30d | 2027-05-17 | 2027-06-29 | A22900 | 109d | 0d | Dummy [0.05 h] | 0.05 | N | N | B00043 |
| A22920 |  | Pañetes | 30d | 2027-06-30 | 2027-08-12 | A22910 | 109d | 0d | Dummy [0.05 h] | 0.05 | N | N | B00043 |
| A22930 |  | Pintura | 50d | 2027-08-13 | 2027-10-25 | A22920 | 109d |  | Dummy [0.05 h] | 0.05 | N | N | B00043 |
|  | Paño 13 | **Paño 13** |  | 2027-04-20 | 2027-11-22 |  |  |  |  |  |  |  |  |
| A22940 |  | Prolongaciones Elec-Hidr-Hvac-Comu | 18d | 2027-04-20 | 2027-05-14 | A22890 | 0d |  | Dummy [0.05 h] | 0.05 | N | N | B00043 |
| A22950 |  | Mamposteria | 18d | 2027-05-17 | 2027-06-11 | A22940 | 91d | 0d | Dummy [0.05 h] | 0.05 | N | N | B00043 |
| A22960 |  | Superboard | 30d | 2027-06-14 | 2027-07-27 | A22950 | 91d | 0d | Dummy [0.05 h] | 0.05 | N | N | B00043 |
| A22970 |  | Pañetes | 30d | 2027-07-28 | 2027-09-08 | A22960 | 91d | 0d | Dummy [0.05 h] | 0.05 | N | N | B00043 |
| A22980 |  | Pintura | 50d | 2027-09-09 | 2027-11-22 | A22970 | 91d |  | Dummy [0.05 h] | 0.05 | N | N | B00043 |
|  | Paño 14 | **Paño 14** |  | 2027-05-17 | 2027-12-17 |  |  |  |  |  |  |  |  |
| A22990 |  | Prolongaciones Elec-Hidr-Hvac-Comu | 18d | 2027-05-17 | 2027-06-11 | A22940 | 0d |  | Dummy [0.05 h] | 0.05 | N | N | B00043 |
| A23000 |  | Mamposteria | 18d | 2027-06-14 | 2027-07-08 | A22990 | 73d | 0d | Dummy [0.05 h] | 0.05 | N | N | B00043 |
| A23010 |  | Superboard | 30d | 2027-07-09 | 2027-08-23 | A23000 | 73d | 0d | Dummy [0.05 h] | 0.05 | N | N | B00043 |
| A23020 |  | Pañetes | 30d | 2027-08-24 | 2027-10-04 | A23010 | 73d | 0d | Dummy [0.05 h] | 0.05 | N | N | B00043 |
| A23030 |  | Pintura | 50d | 2027-10-05 | 2027-12-17 | A23020 | 73d |  | Dummy [0.05 h] | 0.05 | N | N | B00043 |

| ID | WBS | Activity | Duration | Start | Finish | Predecessors | Total float | Free float | Resources | Cost | Tipo 80-20 | Hito Inicio - Fin | CBB_Obras |
| --- | --- | --- | --- | --- | --- | --- | --- | --- | --- | --- | --- | --- | --- |
|  | Paño 15 | **Paño 15** |  | 2027-06-14 | 2027-12-15 |  |  |  |  |  |  |  |  |
| A23040 |  | Prolongaciones Elec-Hidr-Hvac-Comu | 18d | 2027-06-14 | 2027-07-08 | A22990 | 0d |  | Dummy [0.05 h] | 0.05 | N | N | B00043 |
| A23050 |  | Mamposteria | 18d | 2027-07-09 | 2027-08-04 | A23040 | 75d | 0d | Dummy [0.05 h] | 0.05 | N | N | B00043 |
| A23060 |  | Superboard | 30d | 2027-08-05 | 2027-09-16 | A23050 | 75d | 0d | Dummy [0.05 h] | 0.05 | N | N | B00043 |
| A23070 |  | Pañetes | 30d | 2027-09-17 | 2027-10-29 | A23060 | 75d | 0d | Dummy [0.05 h] | 0.05 | N | N | B00043 |
| A23080 |  | Pintura | 30d | 2027-11-02 | 2027-12-15 | A23070 | 75d |  | Dummy [0.05 h] | 0.05 | N | N | B00043 |
|  | Paño 16 | **Paño 16** |  | 2027-07-09 | 2028-01-26 |  |  |  |  |  |  |  |  |
| A23090 |  | Prolongaciones Elec-Hidr-Hvac-Comu | 18d | 2027-07-09 | 2027-08-04 | A23040 | 0d |  | Dummy [0.05 h] | 0.05 | N | N | B00043 |
| A23100 |  | Mamposteria | 18d | 2027-08-05 | 2027-08-31 | A23090 | 57d | 0d | Dummy [0.05 h] | 0.05 | N | N | B00043 |
| A23110 |  | Superboard | 30d | 2027-09-01 | 2027-10-12 | A23100 | 57d | 0d | Dummy [0.05 h] | 0.05 | N | N | B00043 |
| A23120 |  | Pañetes | 30d | 2027-10-13 | 2027-11-26 | A23110 | 57d | 0d | Dummy [0.05 h] | 0.05 | N | N | B00043 |
| A23130 |  | Pintura | 30d | 2027-11-29 | 2028-01-26 | A23120 | 57d |  | Dummy [0.05 h] | 0.05 | N | N | B00043 |
|  | Paño 17 | **Paño 17** |  | 2027-08-05 | 2028-01-14 |  |  |  |  |  |  |  |  |
| A23150 |  | Mamposteria | 20d | 2027-08-05 | 2027-09-02 | A23090 | 0d |  | Dummy [0.05 h] | 0.05 | N | N | B00043 |
| A23170 |  | Pañetes | 30d | 2027-09-03 | 2027-10-14 | A23150 | 0d |  | Dummy [0.05 h] | 0.05 | N | N | B00043 |
| A23180 |  | Pintura | 50d | 2027-10-15 | 2028-01-14 | A23170 | 0d |  | Dummy [0.05 h] | 0.05 | N | N | B00043 |
|  | FACHADA TWO TOWER | **Fachada Two Tower** |  | 2026-10-29 | 2027-11-22 |  |  |  |  |  |  |  |  |
|  | Paño 1 | **Paño 1** |  | 2026-10-29 | 2027-02-23 |  |  |  |  |  |  |  |  |
| A23190 |  | Mamposteria | 12d | 2026-10-29 | 2026-11-17 | A1400 SS+70d | 51d | 0d | Dummy [0.05 h] | 0.05 | N | N | B00043 |
| A23200 |  | Pañetes | 27d | 2026-11-18 | 2027-01-13 | A23190 | 300d |  | Dummy [0.05 h] | 0.05 | N | N | B00043 |
| A23210 |  | Superboard | 28d | 2026-11-18 | 2027-01-14 | A23190 | 271d | 0d | Dummy [0.05 h] | 0.05 | N | N | B00043 |
| A23220 |  | Pintura | 28d | 2027-01-15 | 2027-02-23 | A23210 | 271d |  | Dummy [0.05 h] | 0.05 | N | N | B00043 |
|  | Paño 2 | **Paño 2** |  | 2026-11-18 | 2027-03-11 |  |  |  |  |  |  |  |  |
| A23230 |  | Mamposteria | 12d | 2026-11-18 | 2026-12-03 | A23190 | 51d | 0d | Dummy [0.05 h] | 0.05 | N | N | B00043 |
| A23240 |  | Pañetes | 27d | 2026-12-04 | 2027-01-29 | A23230 | 288d |  | Dummy [0.05 h] | 0.05 | N | N | B00043 |
| A23250 |  | Superboard | 28d | 2026-12-04 | 2027-02-01 | A23230 | 259d | 0d | Dummy [0.05 h] | 0.05 | N | N | B00043 |
| A23260 |  | Pintura | 28d | 2027-02-02 | 2027-03-11 | A23250 | 259d |  | Dummy [0.05 h] | 0.05 | N | N | B00043 |

| ID | WBS | Activity | Duration | Start | Finish | Predecessors | Total float | Free float | Resources | Cost | Hito Inicio - Fin | Tipo 80-20 | CBB_Obras |
| --- | --- | --- | --- | --- | --- | --- | --- | --- | --- | --- | --- | --- | --- |
|  | Paño 3 | **Paño 3** |  | 2026-12-04 | 2027-04-05 |  |  |  |  |  |  |  |  |
| A23270 |  | Mamposteria | 12d | 2026-12-04 | 2026-12-22 | A23230 | 51d | 0d | Dummy [0.05 h] | 0.05 | N | N | B00043 |
| A23280 |  | Pañetes | 27d | 2026-12-23 | 2027-02-16 | A23270 | 276d |  | Dummy [0.05 h] | 0.05 | N | N | B00043 |
| A23290 |  | Superboard | 28d | 2026-12-23 | 2027-02-17 | A23270 | 247d | 0d | Dummy [0.05 h] | 0.05 | N | N | B00043 |
| A23300 |  | Pintura | 28d | 2027-02-18 | 2027-04-05 | A23290 | 247d |  | Dummy [0.05 h] | 0.05 | N | N | B00043 |
|  | Paño 4 | **Paño 4** |  | 2026-12-23 | 2027-04-21 |  |  |  |  |  |  |  |  |
| A23310 |  | Mamposteria | 12d | 2026-12-23 | 2027-01-26 | A23270 | 51d | 0d | Dummy [0.05 h] | 0.05 | N | N | B00043 |
| A23320 |  | Pañetes | 27d | 2027-01-27 | 2027-03-04 | A23310 | 264d |  | Dummy [0.05 h] | 0.05 | N | N | B00043 |
| A23330 |  | Superboard | 28d | 2027-01-27 | 2027-03-05 | A23310 | 235d | 0d | Dummy [0.05 h] | 0.05 | N | N | B00043 |
| A23340 |  | Pintura | 28d | 2027-03-08 | 2027-04-21 | A23330 | 235d |  | Dummy [0.05 h] | 0.05 | N | N | B00043 |
|  | Paño 5 | **Paño 5** |  | 2027-01-27 | 2027-05-07 |  |  |  |  |  |  |  |  |
| A23350 |  | Mamposteria | 12d | 2027-01-27 | 2027-02-11 | A23310 | 51d | 0d | Dummy [0.05 h] | 0.05 | N | N | B00043 |
| A23360 |  | Pañetes | 27d | 2027-02-12 | 2027-03-29 | A23350 | 252d |  | Dummy [0.05 h] | 0.05 | N | N | B00043 |
| A23370 |  | Superboard | 28d | 2027-02-12 | 2027-03-30 | A23350 | 223d | 0d | Dummy [0.05 h] | 0.05 | N | N | B00043 |
| A23380 |  | Pintura | 28d | 2027-03-31 | 2027-05-07 | A23370 | 223d |  | Dummy [0.05 h] | 0.05 | N | N | B00043 |
|  | Paño 6 | **Paño 6** |  | 2027-02-12 | 2027-05-26 |  |  |  |  |  |  |  |  |
| A23390 |  | Mamposteria | 12d | 2027-02-12 | 2027-03-01 | A23350 | 51d | 0d | Dummy [0.05 h] | 0.05 | N | N | B00043 |
| A23400 |  | Pañetes | 27d | 2027-03-02 | 2027-04-14 | A23390 | 240d |  | Dummy [0.05 h] | 0.05 | N | N | B00043 |
| A23410 |  | Superboard | 28d | 2027-03-02 | 2027-04-15 | A23390 | 211d | 0d | Dummy [0.05 h] | 0.05 | N | N | B00043 |
| A23420 |  | Pintura | 28d | 2027-04-16 | 2027-05-26 | A23410 | 211d |  | Dummy [0.05 h] | 0.05 | N | N | B00043 |
|  | Paño 7 | **Paño 7** |  | 2027-03-02 | 2027-06-15 |  |  |  |  |  |  |  |  |
| A23430 |  | Mamposteria | 12d | 2027-03-02 | 2027-03-17 | A23390 | 51d | 0d | Dummy [0.05 h] | 0.05 | N | N | B00043 |
| A23440 |  | Pañetes | 27d | 2027-03-18 | 2027-04-30 | A23430 | 228d |  | Dummy [0.05 h] | 0.05 | N | N | B00043 |
| A23450 |  | Superboard | 28d | 2027-03-18 | 2027-05-03 | A23430 | 199d | 0d | Dummy [0.05 h] | 0.05 | N | N | B00043 |
| A23460 |  | Pintura | 28d | 2027-05-04 | 2027-06-15 | A23450 | 199d |  | Dummy [0.05 h] | 0.05 | N | N | B00043 |

| ID | WBS | Activity | Duration | Start | Finish | Predecessors | Total float | Free float | Resources | Cost | Tipo 80-20 | Hito Inicio - Fin | CBB_Obras |
| --- | --- | --- | --- | --- | --- | --- | --- | --- | --- | --- | --- | --- | --- |
|  | Paño 8 | **Paño 8** |  | 2027-03-18 | 2027-07-01 |  |  |  |  |  |  |  |  |
| A23470 |  | Mamposteria | 12d | 2027-03-18 | 2027-04-09 | A23430 | 51d | 0d | Dummy [0.05 h] | 0.05 | N | N | B00043 |
| A23480 |  | Pañetes | 27d | 2027-04-12 | 2027-05-19 | A23470 | 216d |  | Dummy [0.05 h] | 0.05 | N | N | B00043 |
| A23490 |  | Superboard | 28d | 2027-04-12 | 2027-05-20 | A23470 | 187d | 0d | Dummy [0.05 h] | 0.05 | N | N | B00043 |
| A23500 |  | Pintura | 28d | 2027-05-21 | 2027-07-01 | A23490 | 187d |  | Dummy [0.05 h] | 0.05 | N | N | B00043 |
|  | Paño 9 | **Paño 9** |  | 2027-04-12 | 2027-07-21 |  |  |  |  |  |  |  |  |
| A23510 |  | Mamposteria | 12d | 2027-04-12 | 2027-04-27 | A23470 | 51d | 0d | Dummy [0.05 h] | 0.05 | N | N | B00043 |
| A23520 |  | Pañetes | 27d | 2027-04-28 | 2027-06-08 | A23510 | 204d |  | Dummy [0.05 h] | 0.05 | N | N | B00043 |
| A23530 |  | Superboard | 28d | 2027-04-28 | 2027-06-09 | A23510 | 175d | 0d | Dummy [0.05 h] | 0.05 | N | N | B00043 |
| A23540 |  | Pintura | 28d | 2027-06-10 | 2027-07-21 | A23530 | 175d |  | Dummy [0.05 h] | 0.05 | N | N | B00043 |
|  | Paño 10 | **Paño 10** |  | 2027-04-28 | 2027-08-06 |  |  |  |  |  |  |  |  |
| A23550 |  | Mamposteria | 12d | 2027-04-28 | 2027-05-14 | A23510 | 51d | 0d | Dummy [0.05 h] | 0.05 | N | N | B00043 |
| A23560 |  | Pañetes | 27d | 2027-05-17 | 2027-06-24 | A23550 | 192d |  | Dummy [0.05 h] | 0.05 | N | N | B00043 |
| A23570 |  | Superboard | 28d | 2027-05-17 | 2027-06-25 | A23550 | 163d | 0d | Dummy [0.05 h] | 0.05 | N | N | B00043 |
| A23580 |  | Pintura | 28d | 2027-06-28 | 2027-08-06 | A23570 | 163d |  | Dummy [0.05 h] | 0.05 | N | N | B00043 |
|  | Paño 11 | **Paño 11** |  | 2027-05-17 | 2027-08-25 |  |  |  |  |  |  |  |  |
| A23590 |  | Mamposteria | 12d | 2027-05-17 | 2027-06-02 | A23550 | 51d | 0d | Dummy [0.05 h] | 0.05 | N | N | B00043 |
| A23600 |  | Pañetes | 27d | 2027-06-03 | 2027-07-13 | A23590 | 180d |  | Dummy [0.05 h] | 0.05 | N | N | B00043 |
| A23610 |  | Superboard | 28d | 2027-06-03 | 2027-07-14 | A23590 | 151d | 0d | Dummy [0.05 h] | 0.05 | N | N | B00043 |
| A23620 |  | Pintura | 28d | 2027-07-15 | 2027-08-25 | A23610 | 151d |  | Dummy [0.05 h] | 0.05 | N | N | B00043 |
|  | Paño 12 | **Paño 12** |  | 2027-06-03 | 2027-09-10 |  |  |  |  |  |  |  |  |
| A23630 |  | Mamposteria | 12d | 2027-06-03 | 2027-06-21 | A23590 | 51d | 0d | Dummy [0.05 h] | 0.05 | N | N | B00043 |
| A23640 |  | Pañetes | 27d | 2027-06-22 | 2027-07-30 | A23630 | 168d |  | Dummy [0.05 h] | 0.05 | N | N | B00043 |
| A23650 |  | Superboard | 28d | 2027-06-22 | 2027-08-02 | A23630 | 139d | 0d | Dummy [0.05 h] | 0.05 | N | N | B00043 |
| A23660 |  | Pintura | 28d | 2027-08-03 | 2027-09-10 | A23650 | 139d |  | Dummy [0.05 h] | 0.05 | N | N | B00043 |

| ID | WBS | Activity | Duration | Start | Finish | Predecessors | Complete | Remaining | Planned start | Planned finish | Total float | Free float | Resources | Cost | Actual cost | Tipo 80-20 | Hito Inicio - Fin | CBB_Obras | CBB_Procesos | CBB_Etapas | CBB_Piso |
| --- | --- | --- | --- | --- | --- | --- | --- | --- | --- | --- | --- | --- | --- | --- | --- | --- | --- | --- | --- | --- | --- |
|  | Paño 13 | **Paño 13** |  | 2027-06-22 | 2027-09-28 |  |  |  |  |  |  |  |  |  |  |  |  |  |  |  |  |
| A23670 |  | Mamposteria | 12d | 2027-06-22 | 2027-07-08 | A23630 |  |  |  |  | 51d | 0d | Dummy [0.05 h] | 0.05 |  | N | N | B00043 |  |  |  |
| A23680 |  | Pañetes | 27d | 2027-07-09 | 2027-08-18 | A23670 |  |  |  |  | 156d |  | Dummy [0.05 h] | 0.05 |  | N | N | B00043 |  |  |  |
| A23690 |  | Superboard | 28d | 2027-07-09 | 2027-08-19 | A23670 |  |  |  |  | 127d | 0d | Dummy [0.05 h] | 0.05 |  | N | N | B00043 |  |  |  |
| A23700 |  | Pintura | 28d | 2027-08-20 | 2027-09-28 | A23690 |  |  |  |  | 127d |  | Dummy [0.05 h] | 0.05 |  | N | N | B00043 |  |  |  |
|  | Paño 14 | **Paño 14** |  | 2027-07-09 | 2027-10-14 |  |  |  |  |  |  |  |  |  |  |  |  |  |  |  |  |
| A23710 |  | Mamposteria | 12d | 2027-07-09 | 2027-07-27 | A23670 |  |  |  |  | 51d | 0d | Dummy [0.05 h] | 0.05 |  | N | N | B00043 |  |  |  |
| A23720 |  | Pañetes | 27d | 2027-07-28 | 2027-09-03 | A23710 |  |  |  |  | 144d |  | Dummy [0.05 h] | 0.05 |  | N | N | B00043 |  |  |  |
| A23730 |  | Superboard | 28d | 2027-07-28 | 2027-09-06 | A23710 |  |  |  |  | 115d | 0d | Dummy [0.05 h] | 0.05 |  | N | N | B00043 |  |  |  |
| A23740 |  | Pintura | 28d | 2027-09-07 | 2027-10-14 | A23730 |  |  |  |  | 115d |  | Dummy [0.05 h] | 0.05 |  | N | N | B00043 |  |  |  |
|  | Paño 15 | **Paño 15** |  | 2027-07-28 | 2027-11-03 |  |  |  |  |  |  |  |  |  |  |  |  |  |  |  |  |
| A23750 |  | Mamposteria | 12d | 2027-07-28 | 2027-08-12 | A23710 |  |  |  |  | 51d | 0d | Dummy [0.05 h] | 0.05 |  | N | N | B00043 |  |  |  |
| A23760 |  | Pañetes | 27d | 2027-08-13 | 2027-09-21 | A23750 |  |  |  |  | 132d |  | Dummy [0.05 h] | 0.05 |  | N | N | B00043 |  |  |  |
| A23770 |  | Superboard | 28d | 2027-08-13 | 2027-09-22 | A23750 |  |  |  |  | 103d | 0d | Dummy [0.05 h] | 0.05 |  | N | N | B00043 |  |  |  |
| A23780 |  | Pintura | 28d | 2027-09-23 | 2027-11-03 | A23770 |  |  |  |  | 103d |  | Dummy [0.05 h] | 0.05 |  | N | N | B00043 |  |  |  |
|  | Paño 16 | **Paño 16** |  | 2027-08-13 | 2027-11-22 |  |  |  |  |  |  |  |  |  |  |  |  |  |  |  |  |
| A23790 |  | Mamposteria | 12d | 2027-08-13 | 2027-08-31 | A23750 |  |  |  |  | 51d | 0d | Dummy [0.05 h] | 0.05 |  | N | N | B00043 |  |  |  |
| A23800 |  | Pañetes | 27d | 2027-09-01 | 2027-10-07 | A23790 |  |  |  |  | 120d |  | Dummy [0.05 h] | 0.05 |  | N | N | B00043 |  |  |  |
| A23810 |  | Superboard | 28d | 2027-09-01 | 2027-10-08 | A23790 |  |  |  |  | 51d | 0d | Dummy [0.05 h] | 0.05 |  | N | N | B00043 |  |  |  |
| A23820 |  | Pintura | 28d | 2027-10-11 | 2027-11-22 | A23810 |  |  |  |  | 51d |  | Dummy [0.05 h] | 0.05 |  | N | N | B00043 |  |  |  |
|  | 11PFJ | **08. Punto Fijo** |  | 2026-06-01 | 2028-03-21 |  |  |  |  |  |  |  |  |  |  |  |  |  |  |  |  |
|  | 01PfjOG | **Punto Fijo Obra Gris** |  | 2026-06-01 | 2027-12-21 |  |  |  |  |  |  |  |  |  |  |  |  |  |  |  |  |
|  | P03 | **Piso 03** |  | 2026-06-01 | 2026-09-23 |  |  |  |  |  |  |  |  |  |  |  |  |  |  |  |  |
| A24110 |  | Descolg. Prolong. Inst. Comunicaciones | 8d | 2026-06-01 A | 2026-06-19 A | A24100 SS+4d | 100% |  | 2026-07-16 | 2026-07-28 |  |  | Dummy [0.01 h] | 0.01 | 0.01 | N | N | B00043 | Obr-Gri | 1 | 4 |
| A24090 |  | Descolg. Prolong. Inst. Electricas | 8d | 2026-06-09 A | 2026-07-16 A | A1550 SS | 100% |  | 2026-06-09 | 2026-06-19 |  |  | Dummy [0.01 h] | 0.01 | 0.01 | N | N | B00043 | Obr-Gri | 1 | 4 |
| A24150 |  | Mamposteria | 12d | 2026-06-16 A | 2026-08-24 | A24140 FS-4d | 20% | 9.6d | 2026-06-16 | 2026-07-02 | 19.4d | 0d | Dummy [0.01 h] | 0.01 | 0 | N | N | B00043 |  |  |  |
| A24140 |  | Descolg. Prolong. Inst. RCI | 8d | 2026-07-07 A | 2026-08-13 | A24130 SS+4d | 25% | 6d | 2026-07-07 | 2026-07-16 | 19.4d | 0d | Dummy [0.01 h] | 0.01 | 0 | N | N | B00043 |  |  |  |
| A24100 |  | Descolg. Prolong. Inst. hidrosanitarias | 8d | 2026-07-17 | 2026-07-29 | A24090 SS+4d |  |  |  |  | 19.4d | 0d | Dummy [0.01 h] | 0.01 |  | N | N | B00043 | Obr-Gri | 1 | 4 |
| A24120 |  | Descolg. Prolong. Inst. Sanitarias | 8d | 2026-07-24 | 2026-08-04 | A24110 SS+4d |  |  |  |  | 19.4d | 0d | Dummy [0.01 h] | 0.01 |  | N | N | B00043 | Obr-Gri | 1 | 4 |
| A24130 |  | Descolg. Prolong. HVAC y gas | 8d | 2026-07-30 | 2026-08-11 | A24120 SS+4d |  |  |  |  | 19.4d | 0d | Dummy [0.01 h] | 0.01 |  | N | N | B00043 | Obr-Gri | 1 | 4 |
| A24160 |  | Pañete Resanes | 12d | 2026-08-13 | 2026-09-01 | A24150 FS-6d |  |  |  |  | 19.4d | 0d | Dummy [0.01 h] | 0.01 |  | N | N | B00043 |  |  |  |
| A24170 |  | Viga Condensadora | 10d | 2026-08-24 | 2026-09-07 | A24160 FS-6d |  |  |  |  | 19.4d | 0d | Dummy [0.03 h] | 0.03 |  | N | N | B00043 |  |  |  |
| A24180 |  | Dintel descolgado | 10d | 2026-08-31 | 2026-09-14 | A24170 FS-5d |  |  |  |  | 19.4d | 0d | Dummy [0.01 h] | 0.01 |  | N | N | B00043 |  |  |  |
| A24190 |  | Impermeabilizacion Corredor | 8d | 2026-09-07 | 2026-09-17 | A24180 FS-5d |  |  |  |  | 19.4d | 0d | Dummy [0.02 h] | 0.02 |  | N | N | B00043 |  |  |  |
| A24200 |  | Afinado de Pisos | 8d | 2026-09-11 | 2026-09-23 | A24190 FS-4d |  |  |  |  | 19.4d | 0d | Dummy [0.01 h] | 0.01 |  | N | N | B00043 |  |  |  |

| ID | WBS | Activity | Duration | Start | Finish | Predecessors | Complete | Planned start | Planned finish | Total float | Free float | Resources | Cost | Actual cost | Tipo 80-20 | Hito Inicio - Fin | CBB_Procesos | CBB_Piso | CBB_Etapas | CBB_Obras |
| --- | --- | --- | --- | --- | --- | --- | --- | --- | --- | --- | --- | --- | --- | --- | --- | --- | --- | --- | --- | --- |
|  | P04 | **Piso 04** |  | 2026-06-20 | 2026-10-20 |  |  |  |  |  |  |  |  |  |  |  |  |  |  |  |
| A24230 |  | Descolg. Prolong. Inst. Comunicaciones | 8d | 2026-06-20 A | 2026-06-27 A | A24220 SS+4d | 100% | 2026-08-24 | 2026-09-02 |  |  | Dummy [0.01 h] | 0.01 | 0.01 | N | N | Obr-Gri | 4 | 1 | B00043 |
| A24210 |  | Descolg. Prolong. Inst. Electricas | 8d | 2026-06-22 A | 2026-07-16 A | A24150 SS | 100% | 2026-08-11 | 2026-08-21 |  |  | Dummy [0.01 h] | 0.01 | 0.01 | N | N | Obr-Gri | 4 | 1 | B00043 |
| A24220 |  | Descolg. Prolong. Inst. hidrosanitarias | 8d | 2026-08-10 | 2026-08-20 | A24210 SS+4d |  |  |  | 71d | 0d | Dummy [0.01 h] | 0.01 |  | N | N | Obr-Gri | 4 | 1 | B00043 |
| A24240 |  | Descolg. Prolong. Inst. Sanitarias | 8d | 2026-08-14 | 2026-08-26 | A24230 SS+4d |  |  |  | 71d | 0d | Dummy [0.01 h] | 0.01 |  | N | N | Obr-Gri | 4 | 1 | B00043 |
| A24250 |  | Descolg. Prolong. HVAC y gas | 8d | 2026-08-21 | 2026-09-01 | A24240 SS+4d |  |  |  | 71d | 0d | Dummy [0.01 h] | 0.01 |  | N | N | Obr-Gri | 4 | 1 | B00043 |
| A24260 |  | Descolg. Prolong. Inst. RCI | 8d | 2026-08-27 | 2026-09-07 | A24250 SS+4d |  |  |  | 71d | 0d | Dummy [0.01 h] | 0.01 |  | N | N |  |  |  | B00043 |
| A24270 |  | Mamposteria | 12d | 2026-09-02 | 2026-09-17 | A24260 FS-4d |  |  |  | 71d | 0d | Dummy [0.01 h] | 0.01 |  | N | N |  |  |  | B00043 |
| A24280 |  | Pañete Resanes | 12d | 2026-09-10 | 2026-09-25 | A24270 FS-6d |  |  |  | 345d | 0d | Dummy [0.01 h] | 0.01 |  | N | N |  |  |  | B00043 |
| A24290 |  | Viga Condensadora | 10d | 2026-09-18 | 2026-10-01 | A24280 FS-6d |  |  |  | 345d | 0d | Dummy [0.03 h] | 0.03 |  | N | N |  |  |  | B00043 |
| A24300 |  | Dintel descolgado | 10d | 2026-09-25 | 2026-10-08 | A24290 FS-5d |  |  |  | 345d | 0d | Dummy [0.01 h] | 0.01 |  | N | N |  |  |  | B00043 |
| A24310 |  | Impermeabilizacion Corredor | 8d | 2026-10-02 | 2026-10-14 | A24300 FS-5d |  |  |  | 345d | 0d | Dummy [0.02 h] | 0.02 |  | N | N |  |  |  | B00043 |
| A24320 |  | Afinado de Pisos | 8d | 2026-10-08 | 2026-10-20 | A24310 FS-4d |  |  |  | 345d |  | Dummy [0.01 h] | 0.01 |  | N | N |  |  |  | B00043 |
|  | P05 | **Piso 05** |  | 2026-06-29 | 2026-11-12 |  |  |  |  |  |  |  |  |  |  |  |  |  |  |  |
| A24430 |  | Descolg. Prolong. Inst. Comunicaciones | 8d | 2026-06-29 A | 2026-07-04 A | A24420 SS+4d | 100% | 2026-07-27 | 2026-08-05 |  |  | Dummy [0.01 h] | 0.01 | 0.01 | N | N | Obr-Gri | 4 | 1 | B00043 |
| A24410 |  | Descolg. Prolong. Inst. Electricas | 8d | 2026-07-06 A | 2026-07-16 A | A24270 SS | 100% | 2026-09-15 | 2026-09-24 |  |  | Dummy [0.01 h] | 0.01 | 0.01 | N | N | Obr-Gri | 4 | 1 | B00043 |
| A24420 |  | Descolg. Prolong. Inst. hidrosanitarias | 8d | 2026-09-02 | 2026-09-11 | A24410 SS+4d |  |  |  | 71d | 0d | Dummy [0.01 h] | 0.01 |  | N | N | Obr-Gri | 4 | 1 | B00043 |
| A24440 |  | Descolg. Prolong. Inst. Sanitarias | 8d | 2026-09-08 | 2026-09-17 | A24430 SS+4d |  |  |  | 71d | 0d | Dummy [0.01 h] | 0.01 |  | N | N | Obr-Gri | 4 | 1 | B00043 |
| A24450 |  | Descolg. Prolong. HVAC y gas | 8d | 2026-09-14 | 2026-09-23 | A24440 SS+4d |  |  |  | 71d | 0d | Dummy [0.01 h] | 0.01 |  | N | N | Obr-Gri | 4 | 1 | B00043 |
| A24460 |  | Descolg. Prolong. Inst. RCI | 8d | 2026-09-18 | 2026-09-29 | A24450 SS+4d |  |  |  | 71d | 0d | Dummy [0.01 h] | 0.01 |  | N | N |  |  |  | B00043 |
| A24470 |  | Mamposteria | 12d | 2026-09-24 | 2026-10-09 | A24460 FS-4d |  |  |  | 71d | 0d | Dummy [0.01 h] | 0.01 |  | N | N |  |  |  | B00043 |
| A24480 |  | Pañete Resanes | 12d | 2026-10-02 | 2026-10-20 | A24470 FS-6d |  |  |  | 329d | 0d | Dummy [0.01 h] | 0.01 |  | N | N |  |  |  | B00043 |
| A24490 |  | Viga Condensadora | 10d | 2026-10-13 | 2026-10-26 | A24480 FS-6d |  |  |  | 329d | 0d | Dummy [0.03 h] | 0.03 |  | N | N |  |  |  | B00043 |
| A24500 |  | Dintel descolgado | 10d | 2026-10-20 | 2026-11-03 | A24490 FS-5d |  |  |  | 329d | 0d | Dummy [0.01 h] | 0.01 |  | N | N |  |  |  | B00043 |
| A24510 |  | Impermeabilizacion Corredor | 8d | 2026-10-27 | 2026-11-06 | A24500 FS-5d |  |  |  | 329d | 0d | Dummy [0.02 h] | 0.02 |  | N | N |  |  |  | B00043 |
| A24520 |  | Afinado de Pisos | 8d | 2026-11-03 | 2026-11-12 | A24510 FS-4d |  |  |  | 329d |  | Dummy [0.01 h] | 0.01 |  | N | N |  |  |  | B00043 |

| ID | WBS | Activity | Duration | Start | Finish | Predecessors | Complete | Planned start | Planned finish | Total float | Free float | Resources | Cost | Actual cost | Hito Inicio - Fin | Tipo 80-20 | CBB_Piso | CBB_Procesos | CBB_Etapas | CBB_Obras |
| --- | --- | --- | --- | --- | --- | --- | --- | --- | --- | --- | --- | --- | --- | --- | --- | --- | --- | --- | --- | --- |
|  | P06 | **Piso 06** |  | 2026-07-08 | 2026-12-11 |  |  |  |  |  |  |  |  |  |  |  |  |  |  |  |
| A24530 |  | Descolg. Prolong. Inst. Electricas | 8d | 2026-07-08 A | 2026-07-16 A | A24470 SS | 100% | 2026-10-20 | 2026-10-29 |  |  | Dummy [0.01 h] | 0.01 | 0.01 | N | N | 4 | Obr-Gri | 1 | B00043 |
| A24540 |  | Descolg. Prolong. Inst. hidrosanitarias | 8d | 2026-09-24 | 2026-10-05 | A24530 SS+4d |  |  |  | 71d | 0d | Dummy [0.01 h] | 0.01 |  | N | N | 4 | Obr-Gri | 1 | B00043 |
| A24550 |  | Descolg. Prolong. Inst. Comunicaciones | 8d | 2026-09-30 | 2026-10-09 | A24540 SS+4d |  |  |  | 71d | 0d | Dummy [0.01 h] | 0.01 |  | N | N | 4 | Obr-Gri | 1 | B00043 |
| A24560 |  | Descolg. Prolong. Inst. Sanitarias | 8d | 2026-10-06 | 2026-10-16 | A24550 SS+4d |  |  |  | 71d | 0d | Dummy [0.01 h] | 0.01 |  | N | N | 4 | Obr-Gri | 1 | B00043 |
| A24570 |  | Descolg. Prolong. HVAC y gas | 8d | 2026-10-13 | 2026-10-22 | A24560 SS+4d |  |  |  | 71d | 0d | Dummy [0.01 h] | 0.01 |  | N | N | 4 | Obr-Gri | 1 | B00043 |
| A24580 |  | Descolg. Prolong. Inst. RCI | 8d | 2026-10-19 | 2026-10-28 | A24570 SS+4d |  |  |  | 71d | 0d | Dummy [0.01 h] | 0.01 |  | N | N |  |  |  | B00043 |
| A24590 |  | Mamposteria | 12d | 2026-10-21 | 2026-11-06 | A24580 FS-6d |  |  |  | 71d | 0d | Dummy [0.01 h] | 0.01 |  | N | N |  |  |  | B00043 |
| A24600 |  | Pañete Resanes | 12d | 2026-10-29 | 2026-11-17 | A24590 FS-6d |  |  |  | 310d | 0d | Dummy [0.01 h] | 0.01 |  | N | N |  |  |  | B00043 |
| A24610 |  | Viga Condensadora | 10d | 2026-11-10 | 2026-11-24 | A24600 FS-5d |  |  |  | 310d | 0d | Dummy [0.03 h] | 0.03 |  | N | N |  |  |  | B00043 |
| A24620 |  | Dintel descolgado | 10d | 2026-11-18 | 2026-12-01 | A24610 FS-5d |  |  |  | 310d | 0d | Dummy [0.01 h] | 0.01 |  | N | N |  |  |  | B00043 |
| A24630 |  | Impermeabilizacion Corredor | 8d | 2026-11-25 | 2026-12-04 | A24620 FS-5d |  |  |  | 310d | 0d | Dummy [0.02 h] | 0.02 |  | N | N |  |  |  | B00043 |
| A24640 |  | Afinado de Pisos | 8d | 2026-12-01 | 2026-12-11 | A24630 FS-4d |  |  |  | 310d |  | Dummy [0.01 h] | 0.01 |  | N | N |  |  |  | B00043 |
|  | P07 | **Piso 07** |  | 2026-10-21 | 2027-02-01 |  |  |  |  |  |  |  |  |  |  |  |  |  |  |  |
| A24650 |  | Descolg. Prolong. Inst. Electricas | 8d | 2026-10-21 | 2026-10-30 | A24590 SS |  |  |  | 71d | 0d | Dummy [0.01 h] | 0.01 |  | N | N | 4 | Obr-Gri | 1 | B00043 |
| A24660 |  | Descolg. Prolong. Inst. hidrosanitarias | 8d | 2026-10-27 | 2026-11-06 | A24650 SS+4d |  |  |  | 71d | 0d | Dummy [0.01 h] | 0.01 |  | N | N | 4 | Obr-Gri | 1 | B00043 |
| A24670 |  | Descolg. Prolong. Inst. Comunicaciones | 8d | 2026-11-03 | 2026-11-12 | A24660 SS+4d |  |  |  | 71d | 0d | Dummy [0.01 h] | 0.01 |  | N | N | 4 | Obr-Gri | 1 | B00043 |
| A24680 |  | Descolg. Prolong. Inst. Sanitarias | 8d | 2026-11-09 | 2026-11-19 | A24670 SS+4d |  |  |  | 71d | 0d | Dummy [0.01 h] | 0.01 |  | N | N | 4 | Obr-Gri | 1 | B00043 |
| A24690 |  | Descolg. Prolong. HVAC y gas | 8d | 2026-11-13 | 2026-11-25 | A24680 SS+4d |  |  |  | 71d | 0d | Dummy [0.01 h] | 0.01 |  | N | N | 4 | Obr-Gri | 1 | B00043 |
| A24700 |  | Descolg. Prolong. Inst. RCI | 8d | 2026-11-20 | 2026-12-01 | A24690 SS+4d |  |  |  | 71d | 0d | Dummy [0.01 h] | 0.01 |  | N | N |  |  |  | B00043 |
| A24710 |  | Mamposteria | 12d | 2026-11-26 | 2026-12-14 | A24700 FS-4d |  |  |  | 71d | 0d | Dummy [0.01 h] | 0.01 |  | N | N |  |  |  | B00043 |
| A24720 |  | Pañete Resanes | 12d | 2026-12-04 | 2026-12-22 | A24710 FS-6d |  |  |  | 287d | 0d | Dummy [0.01 h] | 0.01 |  | N | N |  |  |  | B00043 |
| A24730 |  | Viga Condensadora | 10d | 2026-12-15 | 2027-01-14 | A24720 FS-6d |  |  |  | 287d | 0d | Dummy [0.03 h] | 0.03 |  | N | N |  |  |  | B00043 |
| A24740 |  | Dintel descolgado | 10d | 2026-12-22 | 2027-01-21 | A24730 FS-5d |  |  |  | 287d | 0d | Dummy [0.01 h] | 0.01 |  | N | N |  |  |  | B00043 |
| A24750 |  | Impermeabilizacion Corredor | 8d | 2027-01-15 | 2027-01-26 | A24740 FS-5d |  |  |  | 287d | 0d | Dummy [0.02 h] | 0.02 |  | N | N |  |  |  | B00043 |
| A24760 |  | Afinado de Pisos | 8d | 2027-01-21 | 2027-02-01 | A24750 FS-4d |  |  |  | 287d |  | Dummy [0.01 h] | 0.01 |  | N | N |  |  |  | B00043 |

| ID | WBS | Activity | Duration | Start | Finish | Predecessors | Total float | Free float | Resources | Cost | Hito Inicio - Fin | Tipo 80-20 | CBB_Piso | CBB_Obras | CBB_Etapas | CBB_Procesos |
| --- | --- | --- | --- | --- | --- | --- | --- | --- | --- | --- | --- | --- | --- | --- | --- | --- |
|  | P08 | **Piso 08** |  | 2026-11-26 | 2027-03-09 |  |  |  |  |  |  |  |  |  |  |  |
| A24770 |  | Descolg. Prolong. Inst. Electricas | 8d | 2026-11-26 | 2026-12-07 | A24710 SS | 71d | 0d | Dummy [0.01 h] | 0.01 | N | N | 4 | B00043 | 1 | Obr-Gri |
| A24780 |  | Descolg. Prolong. Inst. hidrosanitarias | 8d | 2026-12-02 | 2026-12-14 | A24770 SS+4d | 71d | 0d | Dummy [0.01 h] | 0.01 | N | N | 4 | B00043 | 1 | Obr-Gri |
| A24790 |  | Descolg. Prolong. Inst. Comunicaciones | 8d | 2026-12-09 | 2026-12-18 | A24780 SS+4d | 71d | 0d | Dummy [0.01 h] | 0.01 | N | N | 4 | B00043 | 1 | Obr-Gri |
| A24800 |  | Descolg. Prolong. Inst. Sanitarias | 8d | 2026-12-15 | 2027-01-12 | A24790 SS+4d | 71d | 0d | Dummy [0.01 h] | 0.01 | N | N | 4 | B00043 | 1 | Obr-Gri |
| A24810 |  | Descolg. Prolong. HVAC y gas | 8d | 2026-12-21 | 2027-01-18 | A24800 SS+4d | 71d | 0d | Dummy [0.01 h] | 0.01 | N | N | 4 | B00043 | 1 | Obr-Gri |
| A24820 |  | Descolg. Prolong. Inst. RCI | 8d | 2027-01-13 | 2027-01-22 | A24810 SS+4d | 71d | 0d | Dummy [0.01 h] | 0.01 | N | N |  | B00043 |  |  |
| A24830 |  | Mamposteria | 12d | 2027-01-19 | 2027-02-03 | A24820 FS-4d | 71d | 0d | Dummy [0.01 h] | 0.01 | N | N |  | B00043 |  |  |
| A24840 |  | Pañete Resanes | 12d | 2027-01-27 | 2027-02-11 | A24830 FS-6d | 261d | 0d | Dummy [0.01 h] | 0.01 | N | N |  | B00043 |  |  |
| A24850 |  | Viga Condensadora | 10d | 2027-02-05 | 2027-02-18 | A24840 FS-5d | 261d | 0d | Dummy [0.03 h] | 0.03 | N | N |  | B00043 |  |  |
| A24860 |  | Dintel descolgado | 10d | 2027-02-12 | 2027-02-25 | A24850 FS-5d | 261d | 0d | Dummy [0.01 h] | 0.01 | N | N |  | B00043 |  |  |
| A24870 |  | Impermeabilizacion Corredor | 8d | 2027-02-22 | 2027-03-03 | A24860 FS-4d | 261d | 0d | Dummy [0.02 h] | 0.02 | N | N |  | B00043 |  |  |
| A24880 |  | Afinado de Pisos | 8d | 2027-02-26 | 2027-03-09 | A24870 FS-4d | 261d |  | Dummy [0.01 h] | 0.01 | N | N |  | B00043 |  |  |
|  | P09 | **Piso 09** |  | 2027-01-19 | 2027-04-15 |  |  |  |  |  |  |  |  |  |  |  |
| A24890 |  | Descolg. Prolong. Inst. Electricas | 8d | 2027-01-19 | 2027-01-28 | A24830 SS | 71d | 0d | Dummy [0.01 h] | 0.01 | N | N | 4 | B00043 | 1 | Obr-Gri |
| A24900 |  | Descolg. Prolong. Inst. hidrosanitarias | 8d | 2027-01-25 | 2027-02-03 | A24890 SS+4d | 71d | 0d | Dummy [0.01 h] | 0.01 | N | N | 4 | B00043 | 1 | Obr-Gri |
| A24910 |  | Descolg. Prolong. Inst. Comunicaciones | 8d | 2027-01-29 | 2027-02-09 | A24900 SS+4d | 71d | 0d | Dummy [0.01 h] | 0.01 | N | N | 4 | B00043 | 1 | Obr-Gri |
| A24920 |  | Descolg. Prolong. Inst. Sanitarias | 8d | 2027-02-04 | 2027-02-15 | A24910 SS+4d | 71d | 0d | Dummy [0.01 h] | 0.01 | N | N | 4 | B00043 | 1 | Obr-Gri |
| A24930 |  | Descolg. Prolong. HVAC y gas | 8d | 2027-02-10 | 2027-02-19 | A24920 SS+4d | 71d | 0d | Dummy [0.01 h] | 0.01 | N | N | 4 | B00043 | 1 | Obr-Gri |
| A24940 |  | Descolg. Prolong. Inst. RCI | 8d | 2027-02-16 | 2027-02-25 | A24930 SS+4d | 71d | 0d | Dummy [0.01 h] | 0.01 | N | N |  | B00043 |  |  |
| A24950 |  | Mamposteria | 12d | 2027-02-22 | 2027-03-09 | A24940 FS-4d | 71d | 0d | Dummy [0.01 h] | 0.01 | N | N |  | B00043 |  |  |
| A24960 |  | Pañete Resanes | 12d | 2027-03-02 | 2027-03-17 | A24950 FS-6d | 239d | 0d | Dummy [0.01 h] | 0.01 | N | N |  | B00043 |  |  |
| A24970 |  | Viga Condensadora | 10d | 2027-03-10 | 2027-03-30 | A24960 FS-6d | 239d | 0d | Dummy [0.03 h] | 0.03 | N | N |  | B00043 |  |  |
| A24980 |  | Dintel descolgado | 10d | 2027-03-17 | 2027-04-06 | A24970 FS-5d | 239d | 0d | Dummy [0.01 h] | 0.01 | N | N |  | B00043 |  |  |
| A24990 |  | Impermeabilizacion Corredor | 8d | 2027-03-31 | 2027-04-09 | A24980 FS-5d | 239d | 0d | Dummy [0.02 h] | 0.02 | N | N |  | B00043 |  |  |
| A25000 |  | Afinado de Pisos | 8d | 2027-04-06 | 2027-04-15 | A24990 FS-4d | 239d |  | Dummy [0.01 h] | 0.01 | N | N |  | B00043 |  |  |

| ID | WBS | Activity | Duration | Start | Finish | Predecessors | Total float | Free float | Resources | Cost | Tipo 80-20 | Hito Inicio - Fin | CBB_Obras | CBB_Procesos | CBB_Etapas | CBB_Piso |
| --- | --- | --- | --- | --- | --- | --- | --- | --- | --- | --- | --- | --- | --- | --- | --- | --- |
|  | P10 | **Piso 10** |  | 2027-02-22 | 2027-05-20 |  |  |  |  |  |  |  |  |  |  |  |
| A25010 |  | Descolg. Prolong. Inst. Electricas | 8d | 2027-02-22 | 2027-03-03 | A24950 SS | 71d | 0d | Dummy [0.01 h] | 0.01 | N | N | B00043 | Obr-Gri | 1 | 4 |
| A25020 |  | Descolg. Prolong. Inst. hidrosanitarias | 8d | 2027-02-26 | 2027-03-09 | A25010 SS+4d | 71d | 0d | Dummy [0.01 h] | 0.01 | N | N | B00043 | Obr-Gri | 1 | 4 |
| A25030 |  | Descolg. Prolong. Inst. Comunicaciones | 8d | 2027-03-04 | 2027-03-15 | A25020 SS+4d | 71d | 0d | Dummy [0.01 h] | 0.01 | N | N | B00043 | Obr-Gri | 1 | 4 |
| A25040 |  | Descolg. Prolong. Inst. Sanitarias | 8d | 2027-03-10 | 2027-03-19 | A25030 SS+4d | 71d | 0d | Dummy [0.01 h] | 0.01 | N | N | B00043 | Obr-Gri | 1 | 4 |
| A25050 |  | Descolg. Prolong. HVAC y gas | 8d | 2027-03-16 | 2027-04-01 | A25040 SS+4d | 71d | 0d | Dummy [0.01 h] | 0.01 | N | N | B00043 | Obr-Gri | 1 | 4 |
| A25060 |  | Descolg. Prolong. Inst. RCI | 8d | 2027-03-29 | 2027-04-07 | A25050 SS+4d | 71d | 0d | Dummy [0.01 h] | 0.01 | N | N | B00043 |  |  |  |
| A25070 |  | Mamposteria | 12d | 2027-04-02 | 2027-04-19 | A25060 FS-4d | 71d | 0d | Dummy [0.01 h] | 0.01 | N | N | B00043 |  |  |  |
| A25080 |  | Pañete Resanes | 12d | 2027-04-12 | 2027-04-27 | A25070 FS-6d | 215d | 0d | Dummy [0.01 h] | 0.01 | N | N | B00043 |  |  |  |
| A25090 |  | Viga Condensadora | 10d | 2027-04-20 | 2027-05-03 | A25080 FS-6d | 215d | 0d | Dummy [0.03 h] | 0.03 | N | N | B00043 |  |  |  |
| A25100 |  | Dintel descolgado | 10d | 2027-04-27 | 2027-05-11 | A25090 FS-5d | 215d | 0d | Dummy [0.01 h] | 0.01 | N | N | B00043 |  |  |  |
| A25110 |  | Impermeabilizacion Corredor | 8d | 2027-05-04 | 2027-05-14 | A25100 FS-5d | 215d | 0d | Dummy [0.02 h] | 0.02 | N | N | B00043 |  |  |  |
| A25120 |  | Afinado de Pisos | 8d | 2027-05-11 | 2027-05-20 | A25110 FS-4d | 215d |  | Dummy [0.01 h] | 0.01 | N | N | B00043 |  |  |  |
|  | P11 | **Piso 11** |  | 2027-04-02 | 2027-06-25 |  |  |  |  |  |  |  |  |  |  |  |
| A25130 |  | Descolg. Prolong. Inst. Electricas | 8d | 2027-04-02 | 2027-04-13 | A25070 SS | 71d | 0d | Dummy [0.01 h] | 0.01 | N | N | B00043 | Obr-Gri | 1 | 4 |
| A25140 |  | Descolg. Prolong. Inst. hidrosanitarias | 8d | 2027-04-08 | 2027-04-19 | A25130 SS+4d | 71d | 0d | Dummy [0.01 h] | 0.01 | N | N | B00043 | Obr-Gri | 1 | 4 |
| A25150 |  | Descolg. Prolong. Inst. Comunicaciones | 8d | 2027-04-14 | 2027-04-23 | A25140 SS+4d | 71d | 0d | Dummy [0.01 h] | 0.01 | N | N | B00043 | Obr-Gri | 1 | 4 |
| A25160 |  | Descolg. Prolong. Inst. Sanitarias | 8d | 2027-04-20 | 2027-04-29 | A25150 SS+4d | 71d | 0d | Dummy [0.01 h] | 0.01 | N | N | B00043 | Obr-Gri | 1 | 4 |
| A25170 |  | Descolg. Prolong. HVAC y gas | 8d | 2027-04-26 | 2027-05-05 | A25160 SS+4d | 71d | 0d | Dummy [0.01 h] | 0.01 | N | N | B00043 | Obr-Gri | 1 | 4 |
| A25180 |  | Descolg. Prolong. Inst. RCI | 8d | 2027-04-30 | 2027-05-12 | A25170 SS+4d | 71d | 0d | Dummy [0.01 h] | 0.01 | N | N | B00043 |  |  |  |
| A25190 |  | Mamposteria | 12d | 2027-05-06 | 2027-05-24 | A25180 FS-4d | 71d | 0d | Dummy [0.01 h] | 0.01 | N | N | B00043 |  |  |  |
| A25200 |  | Pañete Resanes | 12d | 2027-05-17 | 2027-06-02 | A25190 FS-6d | 191d | 0d | Dummy [0.01 h] | 0.01 | N | N | B00043 |  |  |  |
| A25210 |  | Viga Condensadora | 10d | 2027-05-25 | 2027-06-09 | A25200 FS-6d | 191d | 0d | Dummy [0.03 h] | 0.03 | N | N | B00043 |  |  |  |
| A25220 |  | Dintel descolgado | 10d | 2027-06-02 | 2027-06-16 | A25210 FS-5d | 191d | 0d | Dummy [0.01 h] | 0.01 | N | N | B00043 |  |  |  |
| A25230 |  | Impermeabilizacion Corredor | 8d | 2027-06-10 | 2027-06-21 | A25220 FS-5d | 191d | 0d | Dummy [0.02 h] | 0.02 | N | N | B00043 |  |  |  |
| A25240 |  | Afinado de Pisos | 8d | 2027-06-16 | 2027-06-25 | A25230 FS-4d | 191d |  | Dummy [0.01 h] | 0.01 | N | N | B00043 |  |  |  |

| ID | WBS | Activity | Duration | Start | Finish | Predecessors | Total float | Free float | Resources | Cost | Hito Inicio - Fin | Tipo 80-20 | CBB_Obras | CBB_Piso | CBB_Procesos | CBB_Etapas |
| --- | --- | --- | --- | --- | --- | --- | --- | --- | --- | --- | --- | --- | --- | --- | --- | --- |
|  | P12 | **Piso 12** |  | 2027-05-06 | 2027-08-02 |  |  |  |  |  |  |  |  |  |  |  |
| A25250 |  | Descolg. Prolong. Inst. Electricas | 8d | 2027-05-06 | 2027-05-18 | A25190 SS | 71d | 0d | Dummy [0.01 h] | 0.01 | N | N | B00043 | 4 | Obr-Gri | 1 |
| A25260 |  | Descolg. Prolong. Inst. hidrosanitarias | 8d | 2027-05-13 | 2027-05-24 | A25250 SS+4d | 71d | 0d | Dummy [0.01 h] | 0.01 | N | N | B00043 | 4 | Obr-Gri | 1 |
| A25270 |  | Descolg. Prolong. Inst. Comunicaciones | 8d | 2027-05-19 | 2027-05-28 | A25260 SS+4d | 71d | 0d | Dummy [0.01 h] | 0.01 | N | N | B00043 | 4 | Obr-Gri | 1 |
| A25280 |  | Descolg. Prolong. Inst. Sanitarias | 8d | 2027-05-25 | 2027-06-04 | A25270 SS+4d | 71d | 0d | Dummy [0.01 h] | 0.01 | N | N | B00043 | 4 | Obr-Gri | 1 |
| A25290 |  | Descolg. Prolong. HVAC y gas | 8d | 2027-06-01 | 2027-06-11 | A25280 SS+4d | 71d | 0d | Dummy [0.01 h] | 0.01 | N | N | B00043 | 4 | Obr-Gri | 1 |
| A25300 |  | Descolg. Prolong. Inst. RCI | 8d | 2027-06-08 | 2027-06-17 | A25290 SS+4d | 71d | 0d | Dummy [0.01 h] | 0.01 | N | N | B00043 |  |  |  |
| A25310 |  | Mamposteria | 12d | 2027-06-14 | 2027-06-29 | A25300 FS-4d | 71d | 0d | Dummy [0.01 h] | 0.01 | N | N | B00043 |  |  |  |
| A25320 |  | Pañete Resanes | 12d | 2027-06-22 | 2027-07-08 | A25310 FS-6d | 167d | 0d | Dummy [0.01 h] | 0.01 | N | N | B00043 |  |  |  |
| A25330 |  | Viga Condensadora | 10d | 2027-06-30 | 2027-07-14 | A25320 FS-6d | 167d | 0d | Dummy [0.03 h] | 0.03 | N | N | B00043 |  |  |  |
| A25340 |  | Dintel descolgado | 10d | 2027-07-08 | 2027-07-22 | A25330 FS-5d | 167d | 0d | Dummy [0.01 h] | 0.01 | N | N | B00043 |  |  |  |
| A25350 |  | Impermeabilizacion Corredor | 8d | 2027-07-15 | 2027-07-27 | A25340 FS-5d | 167d | 0d | Dummy [0.02 h] | 0.02 | N | N | B00043 |  |  |  |
| A25360 |  | Afinado de Pisos | 8d | 2027-07-22 | 2027-08-02 | A25350 FS-4d | 167d |  | Dummy [0.01 h] | 0.01 | N | N | B00043 |  |  |  |
|  | P13 | **Piso 13** |  | 2027-06-14 | 2027-09-06 |  |  |  |  |  |  |  |  |  |  |  |
| A25370 |  | Descolg. Prolong. Inst. Electricas | 8d | 2027-06-14 | 2027-06-23 | A25310 SS | 71d | 0d | Dummy [0.01 h] | 0.01 | N | N | B00043 | 4 | Obr-Gri | 1 |
| A25380 |  | Descolg. Prolong. Inst. hidrosanitarias | 8d | 2027-06-18 | 2027-06-29 | A25370 SS+4d | 71d | 0d | Dummy [0.01 h] | 0.01 | N | N | B00043 | 4 | Obr-Gri | 1 |
| A25390 |  | Descolg. Prolong. Inst. Comunicaciones | 8d | 2027-06-24 | 2027-07-06 | A25380 SS+4d | 71d | 0d | Dummy [0.01 h] | 0.01 | N | N | B00043 | 4 | Obr-Gri | 1 |
| A25400 |  | Descolg. Prolong. Inst. Sanitarias | 8d | 2027-06-30 | 2027-07-12 | A25390 SS+4d | 71d | 0d | Dummy [0.01 h] | 0.01 | N | N | B00043 | 4 | Obr-Gri | 1 |
| A25410 |  | Descolg. Prolong. HVAC y gas | 8d | 2027-07-07 | 2027-07-16 | A25400 SS+4d | 71d | 0d | Dummy [0.01 h] | 0.01 | N | N | B00043 | 4 | Obr-Gri | 1 |
| A25420 |  | Descolg. Prolong. Inst. RCI | 8d | 2027-07-13 | 2027-07-23 | A25410 SS+4d | 71d | 0d | Dummy [0.01 h] | 0.01 | N | N | B00043 |  |  |  |
| A25430 |  | Mamposteria | 12d | 2027-07-19 | 2027-08-04 | A25420 FS-4d | 71d | 0d | Dummy [0.01 h] | 0.01 | N | N | B00043 |  |  |  |
| A25440 |  | Pañete Resanes | 12d | 2027-07-28 | 2027-08-12 | A25430 FS-6d | 143d | 0d | Dummy [0.01 h] | 0.01 | N | N | B00043 |  |  |  |
| A25450 |  | Viga Condensadora | 10d | 2027-08-05 | 2027-08-19 | A25440 FS-6d | 143d | 0d | Dummy [0.03 h] | 0.03 | N | N | B00043 |  |  |  |
| A25460 |  | Dintel descolgado | 10d | 2027-08-12 | 2027-08-26 | A25450 FS-5d | 143d | 0d | Dummy [0.01 h] | 0.01 | N | N | B00043 |  |  |  |
| A25470 |  | Impermeabilizacion Corredor | 8d | 2027-08-20 | 2027-08-31 | A25460 FS-5d | 143d | 0d | Dummy [0.02 h] | 0.02 | N | N | B00043 |  |  |  |
| A25480 |  | Afinado de Pisos | 8d | 2027-08-26 | 2027-09-06 | A25470 FS-4d | 143d |  | Dummy [0.01 h] | 0.01 | N | N | B00043 |  |  |  |

| ID | WBS | Activity | Duration | Start | Finish | Predecessors | Total float | Free float | Resources | Cost | Hito Inicio - Fin | Tipo 80-20 | CBB_Piso | CBB_Obras | CBB_Procesos | CBB_Etapas |
| --- | --- | --- | --- | --- | --- | --- | --- | --- | --- | --- | --- | --- | --- | --- | --- | --- |
|  | P14 | **Piso 14** |  | 2027-07-19 | 2027-10-08 |  |  |  |  |  |  |  |  |  |  |  |
| A25490 |  | Descolg. Prolong. Inst. Electricas | 8d | 2027-07-19 | 2027-07-29 | A25430 SS | 71d | 0d | Dummy [0.01 h] | 0.01 | N | N | 4 | B00043 | Obr-Gri | 1 |
| A25500 |  | Descolg. Prolong. Inst. hidrosanitarias | 8d | 2027-07-26 | 2027-08-04 | A25490 SS+4d | 71d | 0d | Dummy [0.01 h] | 0.01 | N | N | 4 | B00043 | Obr-Gri | 1 |
| A25510 |  | Descolg. Prolong. Inst. Comunicaciones | 8d | 2027-07-30 | 2027-08-10 | A25500 SS+4d | 71d | 0d | Dummy [0.01 h] | 0.01 | N | N | 4 | B00043 | Obr-Gri | 1 |
| A25520 |  | Descolg. Prolong. Inst. Sanitarias | 8d | 2027-08-05 | 2027-08-17 | A25510 SS+4d | 71d | 0d | Dummy [0.01 h] | 0.01 | N | N | 4 | B00043 | Obr-Gri | 1 |
| A25530 |  | Descolg. Prolong. HVAC y gas | 8d | 2027-08-11 | 2027-08-23 | A25520 SS+4d | 71d | 0d | Dummy [0.01 h] | 0.01 | N | N | 4 | B00043 | Obr-Gri | 1 |
| A25540 |  | Descolg. Prolong. Inst. RCI | 8d | 2027-08-18 | 2027-08-27 | A25530 SS+4d | 71d | 0d | Dummy [0.01 h] | 0.01 | N | N |  | B00043 |  |  |
| A25550 |  | Mamposteria | 12d | 2027-08-24 | 2027-09-08 | A25540 FS-4d | 71d | 0d | Dummy [0.01 h] | 0.01 | N | N |  | B00043 |  |  |
| A25560 |  | Pañete Resanes | 12d | 2027-09-01 | 2027-09-16 | A25550 FS-6d | 119d | 0d | Dummy [0.01 h] | 0.01 | N | N |  | B00043 |  |  |
| A25570 |  | Viga Condensadora | 10d | 2027-09-09 | 2027-09-22 | A25560 FS-6d | 119d | 0d | Dummy [0.03 h] | 0.03 | N | N |  | B00043 |  |  |
| A25580 |  | Dintel descolgado | 10d | 2027-09-16 | 2027-09-29 | A25570 FS-5d | 119d | 0d | Dummy [0.01 h] | 0.01 | N | N |  | B00043 |  |  |
| A25590 |  | Impermeabilizacion Corredor | 8d | 2027-09-23 | 2027-10-04 | A25580 FS-5d | 119d | 0d | Dummy [0.02 h] | 0.02 | N | N |  | B00043 |  |  |
| A25600 |  | Afinado de Pisos | 8d | 2027-09-29 | 2027-10-08 | A25590 FS-4d | 119d |  | Dummy [0.01 h] | 0.01 | N | N |  | B00043 |  |  |
|  | P15 | **Piso 15** |  | 2027-08-24 | 2027-11-16 |  |  |  |  |  |  |  |  |  |  |  |
| A25610 |  | Descolg. Prolong. Inst. Electricas | 8d | 2027-08-24 | 2027-09-02 | A25550 SS | 71d | 0d | Dummy [0.01 h] | 0.01 | N | N | 4 | B00043 | Obr-Gri | 1 |
| A25620 |  | Descolg. Prolong. Inst. hidrosanitarias | 8d | 2027-08-30 | 2027-09-08 | A25610 SS+4d | 71d | 0d | Dummy [0.01 h] | 0.01 | N | N | 4 | B00043 | Obr-Gri | 1 |
| A25630 |  | Descolg. Prolong. Inst. Comunicaciones | 8d | 2027-09-03 | 2027-09-14 | A25620 SS+4d | 71d | 0d | Dummy [0.01 h] | 0.01 | N | N | 4 | B00043 | Obr-Gri | 1 |
| A25640 |  | Descolg. Prolong. Inst. Sanitarias | 8d | 2027-09-09 | 2027-09-20 | A25630 SS+4d | 71d | 0d | Dummy [0.01 h] | 0.01 | N | N | 4 | B00043 | Obr-Gri | 1 |
| A25650 |  | Descolg. Prolong. HVAC y gas | 8d | 2027-09-15 | 2027-09-24 | A25640 SS+4d | 71d | 0d | Dummy [0.01 h] | 0.01 | N | N | 4 | B00043 | Obr-Gri | 1 |
| A25660 |  | Descolg. Prolong. Inst. RCI | 8d | 2027-09-21 | 2027-09-30 | A25650 SS+4d | 71d | 0d | Dummy [0.01 h] | 0.01 | N | N |  | B00043 |  |  |
| A25670 |  | Mamposteria | 12d | 2027-09-27 | 2027-10-12 | A25660 FS-4d | 71d | 0d | Dummy [0.01 h] | 0.01 | N | N |  | B00043 |  |  |
| A25680 |  | Pañete Resanes | 12d | 2027-10-05 | 2027-10-21 | A25670 FS-6d | 95d | 0d | Dummy [0.01 h] | 0.01 | N | N |  | B00043 |  |  |
| A25690 |  | Viga Condensadora | 10d | 2027-10-13 | 2027-10-27 | A25680 FS-6d | 95d | 0d | Dummy [0.03 h] | 0.03 | N | N |  | B00043 |  |  |
| A25700 |  | Dintel descolgado | 10d | 2027-10-21 | 2027-11-04 | A25690 FS-5d | 95d | 0d | Dummy [0.01 h] | 0.01 | N | N |  | B00043 |  |  |
| A25710 |  | Impermeabilizacion Corredor | 8d | 2027-10-28 | 2027-11-09 | A25700 FS-5d | 95d | 0d | Dummy [0.02 h] | 0.02 | N | N |  | B00043 |  |  |
| A25720 |  | Afinado de Pisos | 8d | 2027-11-04 | 2027-11-16 | A25710 FS-4d | 95d |  | Dummy [0.01 h] | 0.01 | N | N |  | B00043 |  |  |

| ID | WBS | Activity | Duration | Start | Finish | Predecessors | Total float | Free float | Resources | Cost | Hito Inicio - Fin | Tipo 80-20 | CBB_Obras | CBB_Etapas | CBB_Procesos | CBB_Piso |
| --- | --- | --- | --- | --- | --- | --- | --- | --- | --- | --- | --- | --- | --- | --- | --- | --- |
|  | P16 | **Piso 16** |  | 2027-09-27 | 2027-12-21 |  |  |  |  |  |  |  |  |  |  |  |
| A25730 |  | Descolg. Prolong. Inst. Electricas | 8d | 2027-09-27 | 2027-10-06 | A25670 SS | 71d | 0d | Dummy [0.01 h] | 0.01 | N | N | B00043 | 1 | Obr-Gri | 4 |
| A25740 |  | Descolg. Prolong. Inst. hidrosanitarias | 8d | 2027-10-01 | 2027-10-12 | A25730 SS+4d | 71d | 0d | Dummy [0.01 h] | 0.01 | N | N | B00043 | 1 | Obr-Gri | 4 |
| A25750 |  | Descolg. Prolong. Inst. Comunicaciones | 8d | 2027-10-07 | 2027-10-19 | A25740 SS+4d | 71d | 0d | Dummy [0.01 h] | 0.01 | N | N | B00043 | 1 | Obr-Gri | 4 |
| A25760 |  | Descolg. Prolong. Inst. Sanitarias | 8d | 2027-10-13 | 2027-10-25 | A25750 SS+4d | 71d | 0d | Dummy [0.01 h] | 0.01 | N | N | B00043 | 1 | Obr-Gri | 4 |
| A25770 |  | Descolg. Prolong. HVAC y gas | 8d | 2027-10-20 | 2027-10-29 | A25760 SS+4d | 71d | 0d | Dummy [0.01 h] | 0.01 | N | N | B00043 | 1 | Obr-Gri | 4 |
| A25780 |  | Descolg. Prolong. Inst. RCI | 8d | 2027-10-26 | 2027-11-05 | A25770 SS+4d | 71d | 0d | Dummy [0.01 h] | 0.01 | N | N | B00043 |  |  |  |
| A25790 |  | Mamposteria | 12d | 2027-11-02 | 2027-11-18 | A25780 FS-4d | 71d | 0d | Dummy [0.01 h] | 0.01 | N | N | B00043 |  |  |  |
| A25800 |  | Pañete Resanes | 12d | 2027-11-10 | 2027-11-26 | A25790 FS-6d | 71d | 0d | Dummy [0.01 h] | 0.01 | N | N | B00043 |  |  |  |
| A25810 |  | Viga Condensadora | 10d | 2027-11-19 | 2027-12-02 | A25800 FS-6d | 71d | 0d | Dummy [0.03 h] | 0.03 | N | N | B00043 |  |  |  |
| A25820 |  | Dintel descolgado | 10d | 2027-11-26 | 2027-12-10 | A25810 FS-5d | 71d | 0d | Dummy [0.01 h] | 0.01 | N | N | B00043 |  |  |  |
| A25830 |  | Impermeabilizacion Corredor | 8d | 2027-12-03 | 2027-12-15 | A25820 FS-5d | 71d | 0d | Dummy [0.02 h] | 0.02 | N | N | B00043 |  |  |  |
| A25840 |  | Afinado de Pisos | 8d | 2027-12-10 | 2027-12-21 | A25830 FS-4d | 71d |  | Dummy [0.01 h] | 0.01 | N | N | B00043 |  |  |  |
|  | 02PfjACA | **Punto Fijo Acabados** |  | 2026-10-09 | 2028-03-21 |  |  |  |  |  |  |  |  |  |  |  |
|  | P03 | **Piso 03** |  | 2026-10-09 | 2027-02-04 |  |  |  |  |  |  |  |  |  |  |  |
| A11970 |  | Estuco y primera mano | 8d | 2026-10-09 | 2026-10-22 | A24200 SS+20d | 19.4d | 0d | Dummy [0.05 h] | 0.05 | N | N | B00043 | 1 | Esc-Est | 3 |
| A25850 |  | Estructura cielo rasos | 8d | 2026-10-22 | 2026-11-04 | A11970 | 19.4d | 0d | Dummy [0.01 h] | 0.01 | N | N | B00043 | 1 | Obr-Gri | 4 |
| A25860 |  | Dinteles borde losa | 8d | 2026-10-27 | 2026-11-09 | A25850 FS-5d | 19.4d | 0d | Dummy [0.01 h] | 0.01 | N | N | B00043 | 1 | Obr-Gri | 4 |
| A25870 |  | Inst lamina y pintura cielos rasos u muros | 8d | 2026-11-09 | 2026-11-20 | A25860 | 284.4d | 0d | Dummy [0.01 h] | 0.01 | N | N | B00043 | 1 | Obr-Gri | 4 |
| A25880 |  | Segunda mano | 8d | 2026-11-13 | 2026-11-26 | A25870 FS-4d | 284.4d | 0d | Dummy [0.01 h] | 0.01 | N | N | B00043 | 1 | Obr-Gri | 4 |
| A25890 |  | Ceramina y guarda escobas | 8d | 2026-11-19 | 2026-12-01 | A25880 FS-5d | 284.4d | 0d | Dummy [0.01 h] | 0.01 | N | N | B00043 | 1 | Obr-Gri | 4 |
| A25900 |  | Instalacion materas | 8d | 2026-11-26 | 2026-12-09 | A25890 FS-3d | 284.4d | 0d | Dummy [0.01 h] | 0.01 | N | N | B00043 |  |  |  |
| A25910 |  | Inst cableado elec-com | 8d | 2026-12-03 | 2026-12-16 | A25900 FS-3d | 284.4d | 0d | Dummy [0.01 h] | 0.01 | N | N | B00043 |  |  |  |
| A25920 |  | Inst apa elec-com | 8d | 2026-12-11 | 2026-12-23 | A25910 FS-3d | 284.4d | 0d | Dummy [0.01 h] | 0.01 | N | N | B00043 |  |  |  |
| A25940 |  | Tercera mano | 8d | 2026-12-21 | 2027-01-19 | A25930 FS-10d | 284.4d | 0d | Dummy [0.01 h] | 0.01 | N | N | B00043 |  |  |  |
| A25930 |  | Carpinteria metalica | 8d | 2026-12-23 | 2027-01-21 | A25920 | 284.4d | 0d | Dummy [0.02 h] | 0.02 | N | N | B00043 |  |  |  |
| A25950 |  | Detallado PF | 8d | 2027-01-13 | 2027-01-25 | A25940 FS-4d | 284.4d | 0d | Dummy [0.02 h] | 0.02 | N | N | B00043 |  |  |  |
| A25960 |  | Aseo | 8d | 2027-01-25 | 2027-02-04 | A25950 | 284.4d |  | Dummy [0.01 h] | 0.01 | N | N | B00043 |  |  |  |

| ID | WBS | Activity | Duration | Start | Finish | Predecessors | Total float | Free float | Resources | Cost | Hito Inicio - Fin | Tipo 80-20 | CBB_Piso | CBB_Etapas | CBB_Obras | CBB_Procesos |
| --- | --- | --- | --- | --- | --- | --- | --- | --- | --- | --- | --- | --- | --- | --- | --- | --- |
|  | P04 | **Piso 04** |  | 2026-10-30 | 2027-04-05 |  |  |  |  |  |  |  |  |  |  |  |
| A25970 |  | Estuco y primera mano | 8d | 2026-10-30 | 2026-11-12 | A25860 FS-5d | 19.4d | 0d | Dummy [0.05 h] | 0.05 | N | N | 3 | 1 | B00043 | Esc-Est |
| A25980 |  | Estructura cielo rasos | 8d | 2026-11-12 | 2026-11-25 | A25970 | 19.4d | 0d | Dummy [0.01 h] | 0.01 | N | N | 4 | 1 | B00043 | Obr-Gri |
| A25990 |  | Dinteles borde losa | 8d | 2026-11-25 | 2026-12-07 | A25980 | 19.4d | 0d | Dummy [0.01 h] | 0.01 | N | N | 4 | 1 | B00043 | Obr-Gri |
| A26000 |  | Inst lamina y pintura cielos rasos u muros | 8d | 2026-12-07 | 2026-12-18 | A25990 | 247.4d | 0d | Dummy [0.01 h] | 0.01 | N | N | 4 | 1 | B00043 | Obr-Gri |
| A26010 |  | Segunda mano | 8d | 2026-12-18 | 2027-01-18 | A26000 | 247.4d | 0d | Dummy [0.01 h] | 0.01 | N | N | 4 | 1 | B00043 | Obr-Gri |
| A26020 |  | Ceramina y guarda escobas | 8d | 2027-01-18 | 2027-01-28 | A26010 | 247.4d | 0d | Dummy [0.01 h] | 0.01 | N | N | 4 | 1 | B00043 | Obr-Gri |
| A26030 |  | Instalacion materas | 8d | 2027-01-28 | 2027-02-09 | A26020 | 247.4d | 0d | Dummy [0.01 h] | 0.01 | N | N |  |  | B00043 |  |
| A26040 |  | Inst cableado elec-com | 8d | 2027-02-09 | 2027-02-19 | A26030 | 247.4d | 0d | Dummy [0.01 h] | 0.01 | N | N |  |  | B00043 |  |
| A26050 |  | Inst apa elec-com | 8d | 2027-02-19 | 2027-03-03 | A26040 | 247.4d | 0d | Dummy [0.01 h] | 0.01 | N | N |  |  | B00043 |  |
| A26070 |  | Tercera mano | 8d | 2027-03-01 | 2027-03-11 | A26060 FS-10d | 247.4d | 0d | Dummy [0.01 h] | 0.01 | N | N |  |  | B00043 |  |
| A26060 |  | Carpinteria metalica | 8d | 2027-03-03 | 2027-03-15 | A26050 | 247.4d | 0d | Dummy [0.02 h] | 0.02 | N | N |  |  | B00043 |  |
| A26080 |  | Detallado PF | 8d | 2027-03-05 | 2027-03-17 | A26070 FS-4d | 247.4d | 0d | Dummy [0.02 h] | 0.02 | N | N |  |  | B00043 |  |
| A26090 |  | Aseo | 8d | 2027-03-17 | 2027-04-05 | A26080 | 247.4d |  | Dummy [0.01 h] | 0.01 | N | N |  |  | B00043 |  |
|  | P05 | **Piso 05** |  | 2026-11-30 | 2027-04-30 |  |  |  |  |  |  |  |  |  |  |  |
| A26100 |  | Estuco y primera mano | 8d | 2026-11-30 | 2026-12-11 | A25990 FS-5d | 19.4d | 0d | Dummy [0.05 h] | 0.05 | N | N | 3 | 1 | B00043 | Esc-Est |
| A26110 |  | Estructura cielo rasos | 8d | 2026-12-11 | 2026-12-23 | A26100 | 19.4d | 0d | Dummy [0.01 h] | 0.01 | N | N | 4 | 1 | B00043 | Obr-Gri |
| A26120 |  | Dinteles borde losa | 8d | 2026-12-23 | 2027-01-21 | A26110 | 19.4d | 0d | Dummy [0.01 h] | 0.01 | N | N | 4 | 1 | B00043 | Obr-Gri |
| A26130 |  | Inst lamina y pintura cielos rasos u muros | 8d | 2027-01-21 | 2027-02-02 | A26120 | 228.4d | 0d | Dummy [0.01 h] | 0.01 | N | N | 4 | 1 | B00043 | Obr-Gri |
| A26140 |  | Segunda mano | 8d | 2027-02-02 | 2027-02-12 | A26130 | 228.4d | 0d | Dummy [0.01 h] | 0.01 | N | N | 4 | 1 | B00043 | Obr-Gri |
| A26150 |  | Ceramina y guarda escobas | 8d | 2027-02-12 | 2027-02-24 | A26140 | 228.4d | 0d | Dummy [0.01 h] | 0.01 | N | N | 4 | 1 | B00043 | Obr-Gri |
| A26160 |  | Instalacion materas | 8d | 2027-02-24 | 2027-03-08 | A26150 | 228.4d | 0d | Dummy [0.01 h] | 0.01 | N | N |  |  | B00043 |  |
| A26170 |  | Inst cableado elec-com | 8d | 2027-03-08 | 2027-03-18 | A26160 | 228.4d | 0d | Dummy [0.01 h] | 0.01 | N | N |  |  | B00043 |  |
| A26180 |  | Inst apa elec-com | 8d | 2027-03-18 | 2027-04-06 | A26170 | 228.4d | 0d | Dummy [0.01 h] | 0.01 | N | N |  |  | B00043 |  |
| A26200 |  | Tercera mano | 8d | 2027-04-02 | 2027-04-14 | A26190 FS-10d | 228.4d | 0d | Dummy [0.01 h] | 0.01 | N | N |  |  | B00043 |  |
| A26190 |  | Carpinteria metalica | 8d | 2027-04-06 | 2027-04-16 | A26180 | 228.4d | 0d | Dummy [0.02 h] | 0.02 | N | N |  |  | B00043 |  |
| A26210 |  | Detallado PF | 8d | 2027-04-08 | 2027-04-20 | A26200 FS-4d | 228.4d | 0d | Dummy [0.02 h] | 0.02 | N | N |  |  | B00043 |  |
| A26220 |  | Aseo | 8d | 2027-04-20 | 2027-04-30 | A26210 | 228.4d |  | Dummy [0.01 h] | 0.01 | N | N |  |  | B00043 |  |

| ID | WBS | Activity | Duration | Start | Finish | Predecessors | Total float | Free float | Resources | Cost | Tipo 80-20 | Hito Inicio - Fin | CBB_Obras | CBB_Procesos | CBB_Piso | CBB_Etapas |
| --- | --- | --- | --- | --- | --- | --- | --- | --- | --- | --- | --- | --- | --- | --- | --- | --- |
|  | P06 | **Piso 06** |  | 2027-01-14 | 2027-05-28 |  |  |  |  |  |  |  |  |  |  |  |
| A26230 |  | Estuco y primera mano | 8d | 2027-01-14 | 2027-01-26 | A26120 FS-5d | 19.4d | 0d | Dummy [0.05 h] | 0.05 | N | N | B00043 | Esc-Est | 3 | 1 |
| A26240 |  | Estructura cielo rasos | 8d | 2027-01-26 | 2027-02-05 | A26230 | 19.4d | 0d | Dummy [0.01 h] | 0.01 | N | N | B00043 | Obr-Gri | 4 | 1 |
| A26250 |  | Dinteles borde losa | 8d | 2027-02-05 | 2027-02-17 | A26240 | 19.4d | 0d | Dummy [0.01 h] | 0.01 | N | N | B00043 | Obr-Gri | 4 | 1 |
| A26260 |  | Inst lamina y pintura cielos rasos u muros | 8d | 2027-02-17 | 2027-03-01 | A26250 | 209.4d | 0d | Dummy [0.01 h] | 0.01 | N | N | B00043 | Obr-Gri | 4 | 1 |
| A26270 |  | Segunda mano | 8d | 2027-03-01 | 2027-03-11 | A26260 | 209.4d | 0d | Dummy [0.01 h] | 0.01 | N | N | B00043 | Obr-Gri | 4 | 1 |
| A26280 |  | Ceramina y guarda escobas | 8d | 2027-03-11 | 2027-03-30 | A26270 | 209.4d | 0d | Dummy [0.01 h] | 0.01 | N | N | B00043 | Obr-Gri | 4 | 1 |
| A26290 |  | Instalacion materas | 8d | 2027-03-30 | 2027-04-09 | A26280 | 209.4d | 0d | Dummy [0.01 h] | 0.01 | N | N | B00043 |  |  |  |
| A26300 |  | Inst cableado elec-com | 8d | 2027-04-09 | 2027-04-21 | A26290 | 209.4d | 0d | Dummy [0.01 h] | 0.01 | N | N | B00043 |  |  |  |
| A26310 |  | Inst apa elec-com | 8d | 2027-04-21 | 2027-05-03 | A26300 | 209.4d | 0d | Dummy [0.01 h] | 0.01 | N | N | B00043 |  |  |  |
| A26330 |  | Tercera mano | 8d | 2027-04-29 | 2027-05-12 | A26320 FS-10d | 209.4d | 0d | Dummy [0.01 h] | 0.01 | N | N | B00043 |  |  |  |
| A26320 |  | Carpinteria metalica | 8d | 2027-05-03 | 2027-05-14 | A26310 | 209.4d | 0d | Dummy [0.02 h] | 0.02 | N | N | B00043 |  |  |  |
| A26340 |  | Detallado PF | 8d | 2027-05-05 | 2027-05-18 | A26330 FS-4d | 209.4d | 0d | Dummy [0.02 h] | 0.02 | N | N | B00043 |  |  |  |
| A26350 |  | Aseo | 8d | 2027-05-18 | 2027-05-28 | A26340 | 209.4d |  | Dummy [0.01 h] | 0.01 | N | N | B00043 |  |  |  |
|  | P07 | **Piso 07** |  | 2027-02-10 | 2027-06-28 |  |  |  |  |  |  |  |  |  |  |  |
| A26360 |  | Estuco y primera mano | 8d | 2027-02-10 | 2027-02-22 | A26250 FS-5d | 19.4d | 0d | Dummy [0.05 h] | 0.05 | N | N | B00043 | Esc-Est | 3 | 1 |
| A26370 |  | Estructura cielo rasos | 8d | 2027-02-22 | 2027-03-04 | A26360 | 19.4d | 0d | Dummy [0.01 h] | 0.01 | N | N | B00043 | Obr-Gri | 4 | 1 |
| A26380 |  | Dinteles borde losa | 8d | 2027-03-04 | 2027-03-16 | A26370 | 19.4d | 0d | Dummy [0.01 h] | 0.01 | N | N | B00043 | Obr-Gri | 4 | 1 |
| A26390 |  | Inst lamina y pintura cielos rasos u muros | 8d | 2027-03-16 | 2027-04-02 | A26380 | 190.4d | 0d | Dummy [0.01 h] | 0.01 | N | N | B00043 | Obr-Gri | 4 | 1 |
| A26400 |  | Segunda mano | 8d | 2027-04-02 | 2027-04-14 | A26390 | 190.4d | 0d | Dummy [0.01 h] | 0.01 | N | N | B00043 | Obr-Gri | 4 | 1 |
| A26410 |  | Ceramina y guarda escobas | 8d | 2027-04-14 | 2027-04-26 | A26400 | 190.4d | 0d | Dummy [0.01 h] | 0.01 | N | N | B00043 | Obr-Gri | 4 | 1 |
| A26420 |  | Instalacion materas | 8d | 2027-04-26 | 2027-05-06 | A26410 | 190.4d | 0d | Dummy [0.01 h] | 0.01 | N | N | B00043 |  |  |  |
| A26430 |  | Inst cableado elec-com | 8d | 2027-05-06 | 2027-05-19 | A26420 | 190.4d | 0d | Dummy [0.01 h] | 0.01 | N | N | B00043 |  |  |  |
| A26440 |  | Inst apa elec-com | 8d | 2027-05-19 | 2027-06-01 | A26430 | 190.4d | 0d | Dummy [0.01 h] | 0.01 | N | N | B00043 |  |  |  |
| A26460 |  | Tercera mano | 8d | 2027-05-27 | 2027-06-10 | A26450 FS-10d | 190.4d | 0d | Dummy [0.01 h] | 0.01 | N | N | B00043 |  |  |  |
| A26450 |  | Carpinteria metalica | 8d | 2027-06-01 | 2027-06-14 | A26440 | 190.4d | 0d | Dummy [0.02 h] | 0.02 | N | N | B00043 |  |  |  |
| A26470 |  | Detallado PF | 8d | 2027-06-03 | 2027-06-16 | A26460 FS-4d | 190.4d | 0d | Dummy [0.02 h] | 0.02 | N | N | B00043 |  |  |  |
| A26480 |  | Aseo | 8d | 2027-06-16 | 2027-06-28 | A26470 | 190.4d |  | Dummy [0.01 h] | 0.01 | N | N | B00043 |  |  |  |

| ID | WBS | Activity | Duration | Start | Finish | Predecessors | Total float | Free float | Resources | Cost | Tipo 80-20 | Hito Inicio - Fin | CBB_Piso | CBB_Procesos | CBB_Obras | CBB_Etapas |
| --- | --- | --- | --- | --- | --- | --- | --- | --- | --- | --- | --- | --- | --- | --- | --- | --- |
|  | P08 | **Piso 08** |  | 2027-03-09 | 2027-07-27 |  |  |  |  |  |  |  |  |  |  |  |
| A26490 |  | Estuco y primera mano | 8d | 2027-03-09 | 2027-03-19 | A26380 FS-5d | 19.4d | 0d | Dummy [0.05 h] | 0.05 | N | N | 3 | Esc-Est | B00043 | 1 |
| A26500 |  | Estructura cielo rasos | 8d | 2027-03-19 | 2027-04-07 | A26490 | 19.4d | 0d | Dummy [0.01 h] | 0.01 | N | N | 4 | Obr-Gri | B00043 | 1 |
| A26510 |  | Dinteles borde losa | 8d | 2027-04-07 | 2027-04-19 | A26500 | 19.4d | 0d | Dummy [0.01 h] | 0.01 | N | N | 4 | Obr-Gri | B00043 | 1 |
| A26520 |  | Inst lamina y pintura cielos rasos u muros | 8d | 2027-04-19 | 2027-04-29 | A26510 | 171.4d | 0d | Dummy [0.01 h] | 0.01 | N | N | 4 | Obr-Gri | B00043 | 1 |
| A26530 |  | Segunda mano | 8d | 2027-04-29 | 2027-05-12 | A26520 | 171.4d | 0d | Dummy [0.01 h] | 0.01 | N | N | 4 | Obr-Gri | B00043 | 1 |
| A26540 |  | Ceramina y guarda escobas | 8d | 2027-05-12 | 2027-05-24 | A26530 | 171.4d | 0d | Dummy [0.01 h] | 0.01 | N | N | 4 | Obr-Gri | B00043 | 1 |
| A26550 |  | Instalacion materas | 8d | 2027-05-24 | 2027-06-04 | A26540 | 171.4d | 0d | Dummy [0.01 h] | 0.01 | N | N |  |  | B00043 |  |
| A26560 |  | Inst cableado elec-com | 8d | 2027-06-04 | 2027-06-17 | A26550 | 171.4d | 0d | Dummy [0.01 h] | 0.01 | N | N |  |  | B00043 |  |
| A26570 |  | Inst apa elec-com | 8d | 2027-06-17 | 2027-06-29 | A26560 | 171.4d | 0d | Dummy [0.01 h] | 0.01 | N | N |  |  | B00043 |  |
| A26590 |  | Tercera mano | 8d | 2027-06-25 | 2027-07-08 | A26580 FS-10d | 171.4d | 0d | Dummy [0.01 h] | 0.01 | N | N |  |  | B00043 |  |
| A26580 |  | Carpinteria metalica | 8d | 2027-06-29 | 2027-07-12 | A26570 | 171.4d | 0d | Dummy [0.02 h] | 0.02 | N | N |  |  | B00043 |  |
| A26600 |  | Detallado PF | 8d | 2027-07-01 | 2027-07-14 | A26590 FS-4d | 171.4d | 0d | Dummy [0.02 h] | 0.02 | N | N |  |  | B00043 |  |
| A26610 |  | Aseo | 8d | 2027-07-14 | 2027-07-27 | A26600 | 171.4d |  | Dummy [0.01 h] | 0.01 | N | N |  |  | B00043 |  |
|  | P09 | **Piso 09** |  | 2027-04-12 | 2027-08-24 |  |  |  |  |  |  |  |  |  |  |  |
| A26620 |  | Estuco y primera mano | 8d | 2027-04-12 | 2027-04-22 | A26510 FS-5d | 19.4d | 0d | Dummy [0.05 h] | 0.05 | N | N | 3 | Esc-Est | B00043 | 1 |
| A26630 |  | Estructura cielo rasos | 8d | 2027-04-22 | 2027-05-04 | A26620 | 19.4d | 0d | Dummy [0.01 h] | 0.01 | N | N | 4 | Obr-Gri | B00043 | 1 |
| A26640 |  | Dinteles borde losa | 8d | 2027-05-04 | 2027-05-17 | A26630 | 19.4d | 0d | Dummy [0.01 h] | 0.01 | N | N | 4 | Obr-Gri | B00043 | 1 |
| A26650 |  | Inst lamina y pintura cielos rasos u muros | 8d | 2027-05-17 | 2027-05-27 | A26640 | 152.4d | 0d | Dummy [0.01 h] | 0.01 | N | N | 4 | Obr-Gri | B00043 | 1 |
| A26660 |  | Segunda mano | 8d | 2027-05-27 | 2027-06-10 | A26650 | 152.4d | 0d | Dummy [0.01 h] | 0.01 | N | N | 4 | Obr-Gri | B00043 | 1 |
| A26670 |  | Ceramina y guarda escobas | 8d | 2027-06-10 | 2027-06-22 | A26660 | 152.4d | 0d | Dummy [0.01 h] | 0.01 | N | N | 4 | Obr-Gri | B00043 | 1 |
| A26680 |  | Instalacion materas | 8d | 2027-06-22 | 2027-07-02 | A26670 | 152.4d | 0d | Dummy [0.01 h] | 0.01 | N | N |  |  | B00043 |  |
| A26690 |  | Inst cableado elec-com | 8d | 2027-07-02 | 2027-07-15 | A26680 | 152.4d | 0d | Dummy [0.01 h] | 0.01 | N | N |  |  | B00043 |  |
| A26700 |  | Inst apa elec-com | 8d | 2027-07-15 | 2027-07-28 | A26690 | 152.4d | 0d | Dummy [0.01 h] | 0.01 | N | N |  |  | B00043 |  |
| A26720 |  | Tercera mano | 8d | 2027-07-26 | 2027-08-05 | A26710 FS-10d | 152.4d | 0d | Dummy [0.01 h] | 0.01 | N | N |  |  | B00043 |  |
| A26710 |  | Carpinteria metalica | 8d | 2027-07-28 | 2027-08-09 | A26700 | 152.4d | 0d | Dummy [0.02 h] | 0.02 | N | N |  |  | B00043 |  |
| A26730 |  | Detallado PF | 8d | 2027-07-30 | 2027-08-11 | A26720 FS-4d | 152.4d | 0d | Dummy [0.02 h] | 0.02 | N | N |  |  | B00043 |  |
| A26740 |  | Aseo | 8d | 2027-08-11 | 2027-08-24 | A26730 | 152.4d |  | Dummy [0.01 h] | 0.01 | N | N |  |  | B00043 |  |

| ID | WBS | Activity | Duration | Start | Finish | Predecessors | Total float | Free float | Resources | Cost | Tipo 80-20 | Hito Inicio - Fin | CBB_Etapas | CBB_Obras | CBB_Procesos | CBB_Piso |
| --- | --- | --- | --- | --- | --- | --- | --- | --- | --- | --- | --- | --- | --- | --- | --- | --- |
|  | P10 | **Piso 10** |  | 2027-05-07 | 2027-09-20 |  |  |  |  |  |  |  |  |  |  |  |
| A26750 |  | Estuco y primera mano | 8d | 2027-05-07 | 2027-05-20 | A26640 FS-5d | 19.4d | 0d | Dummy [0.05 h] | 0.05 | N | N | 1 | B00043 | Esc-Est | 3 |
| A26760 |  | Estructura cielo rasos | 8d | 2027-05-20 | 2027-06-02 | A26750 | 19.4d | 0d | Dummy [0.01 h] | 0.01 | N | N | 1 | B00043 | Obr-Gri | 4 |
| A26770 |  | Dinteles borde losa | 8d | 2027-06-02 | 2027-06-15 | A26760 | 19.4d | 0d | Dummy [0.01 h] | 0.01 | N | N | 1 | B00043 | Obr-Gri | 4 |
| A26780 |  | Inst lamina y pintura cielos rasos u muros | 8d | 2027-06-15 | 2027-06-25 | A26770 | 133.4d | 0d | Dummy [0.01 h] | 0.01 | N | N | 1 | B00043 | Obr-Gri | 4 |
| A26790 |  | Segunda mano | 8d | 2027-06-25 | 2027-07-08 | A26780 | 133.4d | 0d | Dummy [0.01 h] | 0.01 | N | N | 1 | B00043 | Obr-Gri | 4 |
| A26800 |  | Ceramina y guarda escobas | 8d | 2027-07-08 | 2027-07-21 | A26790 | 133.4d | 0d | Dummy [0.01 h] | 0.01 | N | N | 1 | B00043 | Obr-Gri | 4 |
| A26810 |  | Instalacion materas | 8d | 2027-07-21 | 2027-08-02 | A26800 | 133.4d | 0d | Dummy [0.01 h] | 0.01 | N | N |  | B00043 |  |  |
| A26820 |  | Inst cableado elec-com | 8d | 2027-08-02 | 2027-08-12 | A26810 | 133.4d | 0d | Dummy [0.01 h] | 0.01 | N | N |  | B00043 |  |  |
| A26830 |  | Inst apa elec-com | 8d | 2027-08-12 | 2027-08-25 | A26820 | 133.4d | 0d | Dummy [0.01 h] | 0.01 | N | N |  | B00043 |  |  |
| A26850 |  | Tercera mano | 8d | 2027-08-23 | 2027-09-02 | A26840 FS-10d | 133.4d | 0d | Dummy [0.01 h] | 0.01 | N | N |  | B00043 |  |  |
| A26840 |  | Carpinteria metalica | 8d | 2027-08-25 | 2027-09-06 | A26830 | 133.4d | 0d | Dummy [0.02 h] | 0.02 | N | N |  | B00043 |  |  |
| A26860 |  | Detallado PF | 8d | 2027-08-27 | 2027-09-08 | A26850 FS-4d | 133.4d | 0d | Dummy [0.02 h] | 0.02 | N | N |  | B00043 |  |  |
| A26870 |  | Aseo | 8d | 2027-09-08 | 2027-09-20 | A26860 | 133.4d |  | Dummy [0.01 h] | 0.01 | N | N |  | B00043 |  |  |
|  | P11 | **Piso 11** |  | 2027-06-08 | 2027-10-15 |  |  |  |  |  |  |  |  |  |  |  |
| A26880 |  | Estuco y primera mano | 8d | 2027-06-08 | 2027-06-18 | A26770 FS-5d | 19.4d | 0d | Dummy [0.05 h] | 0.05 | N | N | 1 | B00043 | Esc-Est | 3 |
| A26890 |  | Estructura cielo rasos | 8d | 2027-06-18 | 2027-06-30 | A26880 | 19.4d | 0d | Dummy [0.01 h] | 0.01 | N | N | 1 | B00043 | Obr-Gri | 4 |
| A26900 |  | Dinteles borde losa | 8d | 2027-06-30 | 2027-07-13 | A26890 | 19.4d | 0d | Dummy [0.01 h] | 0.01 | N | N | 1 | B00043 | Obr-Gri | 4 |
| A26910 |  | Inst lamina y pintura cielos rasos u muros | 8d | 2027-07-13 | 2027-07-26 | A26900 | 114.4d | 0d | Dummy [0.01 h] | 0.01 | N | N | 1 | B00043 | Obr-Gri | 4 |
| A26920 |  | Segunda mano | 8d | 2027-07-26 | 2027-08-05 | A26910 | 114.4d | 0d | Dummy [0.01 h] | 0.01 | N | N | 1 | B00043 | Obr-Gri | 4 |
| A26930 |  | Ceramina y guarda escobas | 8d | 2027-08-05 | 2027-08-18 | A26920 | 114.4d | 0d | Dummy [0.01 h] | 0.01 | N | N | 1 | B00043 | Obr-Gri | 4 |
| A26940 |  | Instalacion materas | 8d | 2027-08-18 | 2027-08-30 | A26930 | 114.4d | 0d | Dummy [0.01 h] | 0.01 | N | N |  | B00043 |  |  |
| A26950 |  | Inst cableado elec-com | 8d | 2027-08-30 | 2027-09-09 | A26940 | 114.4d | 0d | Dummy [0.01 h] | 0.01 | N | N |  | B00043 |  |  |
| A26960 |  | Inst apa elec-com | 8d | 2027-09-09 | 2027-09-21 | A26950 | 114.4d | 0d | Dummy [0.01 h] | 0.01 | N | N |  | B00043 |  |  |
| A26980 |  | Tercera mano | 8d | 2027-09-17 | 2027-09-29 | A26970 FS-10d | 114.4d | 0d | Dummy [0.01 h] | 0.01 | N | N |  | B00043 |  |  |
| A26970 |  | Carpinteria metalica | 8d | 2027-09-21 | 2027-10-01 | A26960 | 114.4d | 0d | Dummy [0.02 h] | 0.02 | N | N |  | B00043 |  |  |
| A26990 |  | Detallado PF | 8d | 2027-09-23 | 2027-10-05 | A26980 FS-4d | 114.4d | 0d | Dummy [0.02 h] | 0.02 | N | N |  | B00043 |  |  |
| A27000 |  | Aseo | 8d | 2027-10-05 | 2027-10-15 | A26990 | 114.4d |  | Dummy [0.01 h] | 0.01 | N | N |  | B00043 |  |  |

| ID | WBS | Activity | Duration | Start | Finish | Predecessors | Total float | Free float | Resources | Cost | Hito Inicio - Fin | Tipo 80-20 | CBB_Obras | CBB_Etapas | CBB_Piso | CBB_Procesos |
| --- | --- | --- | --- | --- | --- | --- | --- | --- | --- | --- | --- | --- | --- | --- | --- | --- |
|  | P12 | **Piso 12** |  | 2027-07-06 | 2027-11-16 |  |  |  |  |  |  |  |  |  |  |  |
| A27010 |  | Estuco y primera mano | 8d | 2027-07-06 | 2027-07-16 | A26900 FS-5d | 19.4d | 0d | Dummy [0.05 h] | 0.05 | N | N | B00043 | 1 | 3 | Esc-Est |
| A27020 |  | Estructura cielo rasos | 8d | 2027-07-16 | 2027-07-29 | A27010 | 19.4d | 0d | Dummy [0.01 h] | 0.01 | N | N | B00043 | 1 | 4 | Obr-Gri |
| A27030 |  | Dinteles borde losa | 8d | 2027-07-29 | 2027-08-10 | A27020 | 19.4d | 0d | Dummy [0.01 h] | 0.01 | N | N | B00043 | 1 | 4 | Obr-Gri |
| A27040 |  | Inst lamina y pintura cielos rasos u muros | 8d | 2027-08-10 | 2027-08-23 | A27030 | 95.4d | 0d | Dummy [0.01 h] | 0.01 | N | N | B00043 | 1 | 4 | Obr-Gri |
| A27050 |  | Segunda mano | 8d | 2027-08-23 | 2027-09-02 | A27040 | 95.4d | 0d | Dummy [0.01 h] | 0.01 | N | N | B00043 | 1 | 4 | Obr-Gri |
| A27060 |  | Ceramina y guarda escobas | 8d | 2027-09-02 | 2027-09-14 | A27050 | 95.4d | 0d | Dummy [0.01 h] | 0.01 | N | N | B00043 | 1 | 4 | Obr-Gri |
| A27070 |  | Instalacion materas | 8d | 2027-09-14 | 2027-09-24 | A27060 | 95.4d | 0d | Dummy [0.01 h] | 0.01 | N | N | B00043 |  |  |  |
| A27080 |  | Inst cableado elec-com | 8d | 2027-09-24 | 2027-10-06 | A27070 | 95.4d | 0d | Dummy [0.01 h] | 0.01 | N | N | B00043 |  |  |  |
| A27090 |  | Inst apa elec-com | 8d | 2027-10-06 | 2027-10-19 | A27080 | 95.4d | 0d | Dummy [0.01 h] | 0.01 | N | N | B00043 |  |  |  |
| A27110 |  | Tercera mano | 8d | 2027-10-14 | 2027-10-27 | A27100 FS-10d | 95.4d | 0d | Dummy [0.01 h] | 0.01 | N | N | B00043 |  |  |  |
| A27100 |  | Carpinteria metalica | 8d | 2027-10-19 | 2027-10-29 | A27090 | 95.4d | 0d | Dummy [0.02 h] | 0.02 | N | N | B00043 |  |  |  |
| A27120 |  | Detallado PF | 8d | 2027-10-21 | 2027-11-03 | A27110 FS-4d | 95.4d | 0d | Dummy [0.02 h] | 0.02 | N | N | B00043 |  |  |  |
| A27130 |  | Aseo | 8d | 2027-11-03 | 2027-11-16 | A27120 | 95.4d |  | Dummy [0.01 h] | 0.01 | N | N | B00043 |  |  |  |
|  | P13 | **Piso 13** |  | 2027-08-03 | 2027-12-14 |  |  |  |  |  |  |  |  |  |  |  |
| A27140 |  | Estuco y primera mano | 8d | 2027-08-03 | 2027-08-13 | A27030 FS-5d | 19.4d | 0d | Dummy [0.05 h] | 0.05 | N | N | B00043 | 1 | 3 | Esc-Est |
| A27150 |  | Estructura cielo rasos | 8d | 2027-08-13 | 2027-08-26 | A27140 | 19.4d | 0d | Dummy [0.01 h] | 0.01 | N | N | B00043 | 1 | 4 | Obr-Gri |
| A27160 |  | Dinteles borde losa | 8d | 2027-08-26 | 2027-09-07 | A27150 | 19.4d | 0d | Dummy [0.01 h] | 0.01 | N | N | B00043 | 1 | 4 | Obr-Gri |
| A27170 |  | Inst lamina y pintura cielos rasos u muros | 8d | 2027-09-07 | 2027-09-17 | A27160 | 76.4d | 0d | Dummy [0.01 h] | 0.01 | N | N | B00043 | 1 | 4 | Obr-Gri |
| A27180 |  | Segunda mano | 8d | 2027-09-17 | 2027-09-29 | A27170 | 76.4d | 0d | Dummy [0.01 h] | 0.01 | N | N | B00043 | 1 | 4 | Obr-Gri |
| A27190 |  | Ceramina y guarda escobas | 8d | 2027-09-29 | 2027-10-11 | A27180 | 76.4d | 0d | Dummy [0.01 h] | 0.01 | N | N | B00043 | 1 | 4 | Obr-Gri |
| A27200 |  | Instalacion materas | 8d | 2027-10-11 | 2027-10-22 | A27190 | 76.4d | 0d | Dummy [0.01 h] | 0.01 | N | N | B00043 |  |  |  |
| A27210 |  | Inst cableado elec-com | 8d | 2027-10-22 | 2027-11-04 | A27200 | 76.4d | 0d | Dummy [0.01 h] | 0.01 | N | N | B00043 |  |  |  |
| A27220 |  | Inst apa elec-com | 8d | 2027-11-04 | 2027-11-17 | A27210 | 76.4d | 0d | Dummy [0.01 h] | 0.01 | N | N | B00043 |  |  |  |
| A27240 |  | Tercera mano | 8d | 2027-11-12 | 2027-11-25 | A27230 FS-10d | 76.4d | 0d | Dummy [0.01 h] | 0.01 | N | N | B00043 |  |  |  |
| A27230 |  | Carpinteria metalica | 8d | 2027-11-17 | 2027-11-29 | A27220 | 76.4d | 0d | Dummy [0.02 h] | 0.02 | N | N | B00043 |  |  |  |
| A27250 |  | Detallado PF | 8d | 2027-11-19 | 2027-12-01 | A27240 FS-4d | 76.4d | 0d | Dummy [0.02 h] | 0.02 | N | N | B00043 |  |  |  |
| A27260 |  | Aseo | 8d | 2027-12-01 | 2027-12-14 | A27250 | 76.4d |  | Dummy [0.01 h] | 0.01 | N | N | B00043 |  |  |  |

| ID | WBS | Activity | Duration | Start | Finish | Predecessors | Total float | Free float | Resources | Cost | Hito Inicio - Fin | Tipo 80-20 | CBB_Procesos | CBB_Obras | CBB_Etapas | CBB_Piso |
| --- | --- | --- | --- | --- | --- | --- | --- | --- | --- | --- | --- | --- | --- | --- | --- | --- |
|  | P14 | **Piso 14** |  | 2027-08-31 | 2028-01-26 |  |  |  |  |  |  |  |  |  |  |  |
| A27270 |  | Estuco y primera mano | 8d | 2027-08-31 | 2027-09-10 | A27160 FS-5d | 19.4d | 0d | Dummy [0.05 h] | 0.05 | N | N | Esc-Est | B00043 | 1 | 3 |
| A27280 |  | Estructura cielo rasos | 8d | 2027-09-10 | 2027-09-22 | A27270 | 19.4d | 0d | Dummy [0.01 h] | 0.01 | N | N | Obr-Gri | B00043 | 1 | 4 |
| A27290 |  | Dinteles borde losa | 8d | 2027-09-22 | 2027-10-04 | A27280 | 19.4d | 0d | Dummy [0.01 h] | 0.01 | N | N | Obr-Gri | B00043 | 1 | 4 |
| A27300 |  | Inst lamina y pintura cielos rasos u muros | 8d | 2027-10-04 | 2027-10-14 | A27290 | 57.4d | 0d | Dummy [0.01 h] | 0.01 | N | N | Obr-Gri | B00043 | 1 | 4 |
| A27310 |  | Segunda mano | 8d | 2027-10-14 | 2027-10-27 | A27300 | 57.4d | 0d | Dummy [0.01 h] | 0.01 | N | N | Obr-Gri | B00043 | 1 | 4 |
| A27320 |  | Ceramina y guarda escobas | 8d | 2027-10-27 | 2027-11-09 | A27310 | 57.4d | 0d | Dummy [0.01 h] | 0.01 | N | N | Obr-Gri | B00043 | 1 | 4 |
| A27330 |  | Instalacion materas | 8d | 2027-11-09 | 2027-11-22 | A27320 | 57.4d | 0d | Dummy [0.01 h] | 0.01 | N | N |  | B00043 |  |  |
| A27340 |  | Inst cableado elec-com | 8d | 2027-11-22 | 2027-12-02 | A27330 | 57.4d | 0d | Dummy [0.01 h] | 0.01 | N | N |  | B00043 |  |  |
| A27350 |  | Inst apa elec-com | 8d | 2027-12-02 | 2027-12-15 | A27340 | 57.4d | 0d | Dummy [0.01 h] | 0.01 | N | N |  | B00043 |  |  |
| A27370 |  | Tercera mano | 8d | 2027-12-13 | 2027-12-23 | A27360 FS-10d | 57.4d | 0d | Dummy [0.01 h] | 0.01 | N | N |  | B00043 |  |  |
| A27360 |  | Carpinteria metalica | 8d | 2027-12-15 | 2028-01-12 | A27350 | 57.4d | 0d | Dummy [0.02 h] | 0.02 | N | N |  | B00043 |  |  |
| A27380 |  | Detallado PF | 8d | 2027-12-17 | 2028-01-14 | A27370 FS-4d | 57.4d | 0d | Dummy [0.02 h] | 0.02 | N | N |  | B00043 |  |  |
| A27390 |  | Aseo | 8d | 2028-01-14 | 2028-01-26 | A27380 | 57.4d |  | Dummy [0.01 h] | 0.01 | N | N |  | B00043 |  |  |
|  | P15 | **Piso 15** |  | 2027-09-27 | 2028-02-22 |  |  |  |  |  |  |  |  |  |  |  |
| A27400 |  | Estuco y primera mano | 8d | 2027-09-27 | 2027-10-07 | A27290 FS-5d | 19.4d | 0d | Dummy [0.05 h] | 0.05 | N | N | Esc-Est | B00043 | 1 | 3 |
| A27410 |  | Estructura cielo rasos | 8d | 2027-10-07 | 2027-10-20 | A27400 | 19.4d | 0d | Dummy [0.01 h] | 0.01 | N | N | Obr-Gri | B00043 | 1 | 4 |
| A27420 |  | Dinteles borde losa | 8d | 2027-10-20 | 2027-11-02 | A27410 | 19.4d | 0d | Dummy [0.01 h] | 0.01 | N | N | Obr-Gri | B00043 | 1 | 4 |
| A27430 |  | Inst lamina y pintura cielos rasos u muros | 8d | 2027-11-02 | 2027-11-12 | A27420 | 38.4d | 0d | Dummy [0.01 h] | 0.01 | N | N | Obr-Gri | B00043 | 1 | 4 |
| A27440 |  | Segunda mano | 8d | 2027-11-12 | 2027-11-25 | A27430 | 38.4d | 0d | Dummy [0.01 h] | 0.01 | N | N | Obr-Gri | B00043 | 1 | 4 |
| A27450 |  | Ceramina y guarda escobas | 8d | 2027-11-25 | 2027-12-07 | A27440 | 38.4d | 0d | Dummy [0.01 h] | 0.01 | N | N | Obr-Gri | B00043 | 1 | 4 |
| A27460 |  | Instalacion materas | 8d | 2027-12-07 | 2027-12-20 | A27450 | 38.4d | 0d | Dummy [0.01 h] | 0.01 | N | N |  | B00043 |  |  |
| A27470 |  | Inst cableado elec-com | 8d | 2027-12-20 | 2028-01-17 | A27460 | 38.4d | 0d | Dummy [0.01 h] | 0.01 | N | N |  | B00043 |  |  |
| A27480 |  | Inst apa elec-com | 8d | 2028-01-17 | 2028-01-27 | A27470 | 38.4d | 0d | Dummy [0.01 h] | 0.01 | N | N |  | B00043 |  |  |
| A27500 |  | Tercera mano | 8d | 2028-01-25 | 2028-02-04 | A27490 FS-10d | 38.4d | 0d | Dummy [0.01 h] | 0.01 | N | N |  | B00043 |  |  |
| A27490 |  | Carpinteria metalica | 8d | 2028-01-27 | 2028-02-08 | A27480 | 38.4d | 0d | Dummy [0.02 h] | 0.02 | N | N |  | B00043 |  |  |
| A27510 |  | Detallado PF | 8d | 2028-01-31 | 2028-02-10 | A27500 FS-4d | 38.4d | 0d | Dummy [0.02 h] | 0.02 | N | N |  | B00043 |  |  |
| A27520 |  | Aseo | 8d | 2028-02-10 | 2028-02-22 | A27510 | 38.4d |  | Dummy [0.01 h] | 0.01 | N | N |  | B00043 |  |  |

| ID | WBS | Activity | Duration | Start | Finish | Predecessors | Total float | Free float | Resources | Cost | Tipo 80-20 | Hito Inicio - Fin | CBB_Obras | CBB_Piso | CBB_Procesos | CBB_Etapas |
| --- | --- | --- | --- | --- | --- | --- | --- | --- | --- | --- | --- | --- | --- | --- | --- | --- |
|  | P16 | **Piso 16** |  | 2027-10-25 | 2028-03-21 |  |  |  |  |  |  |  |  |  |  |  |
| A27530 |  | Estuco y primera mano | 8d | 2027-10-25 | 2027-11-05 | A27420 FS-5d | 19.4d | 0d | Dummy [0.05 h] | 0.05 | N | N | B00043 | 3 | Esc-Est | 1 |
| A27540 |  | Estructura cielo rasos | 8d | 2027-11-05 | 2027-11-18 | A27530 | 19.4d | 0d | Dummy [0.01 h] | 0.01 | N | N | B00043 | 4 | Obr-Gri | 1 |
| A27550 |  | Dinteles borde losa | 8d | 2027-11-18 | 2027-11-30 | A27540 | 19.4d | 0d | Dummy [0.01 h] | 0.01 | N | N | B00043 | 4 | Obr-Gri | 1 |
| A27560 |  | Inst lamina y pintura cielos rasos u muros | 8d | 2027-11-30 | 2027-12-13 | A27550 | 19.4d | 0d | Dummy [0.01 h] | 0.01 | N | N | B00043 | 4 | Obr-Gri | 1 |
| A27570 |  | Segunda mano | 8d | 2027-12-13 | 2027-12-23 | A27560 | 19.4d | 0d | Dummy [0.01 h] | 0.01 | N | N | B00043 | 4 | Obr-Gri | 1 |
| A27580 |  | Ceramina y guarda escobas | 8d | 2027-12-23 | 2028-01-20 | A27570 | 19.4d | 0d | Dummy [0.01 h] | 0.01 | N | N | B00043 | 4 | Obr-Gri | 1 |
| A27590 |  | Instalacion materas | 8d | 2028-01-20 | 2028-02-01 | A27580 | 19.4d | 0d | Dummy [0.01 h] | 0.01 | N | N | B00043 |  |  |  |
| A27600 |  | Inst cableado elec-com | 8d | 2028-02-01 | 2028-02-11 | A27590 | 19.4d | 0d | Dummy [0.01 h] | 0.01 | N | N | B00043 |  |  |  |
| A27610 |  | Inst apa elec-com | 8d | 2028-02-11 | 2028-02-23 | A27600 | 19.4d | 0d | Dummy [0.01 h] | 0.01 | N | N | B00043 |  |  |  |
| A27630 |  | Tercera mano | 8d | 2028-02-21 | 2028-03-02 | A27620 FS-10d | 19.4d | 0d | Dummy [0.01 h] | 0.01 | N | N | B00043 |  |  |  |
| A27620 |  | Carpinteria metalica | 8d | 2028-02-23 | 2028-03-06 | A27610 | 19.4d | 0d | Dummy [0.02 h] | 0.02 | N | N | B00043 |  |  |  |
| A27640 |  | Detallado PF | 8d | 2028-02-25 | 2028-03-08 | A27630 FS-4d | 19.4d | 0d | Dummy [0.02 h] | 0.02 | N | N | B00043 |  |  |  |
| A27650 |  | Aseo | 8d | 2028-03-08 | 2028-03-21 | A27640 | 19.4d | 0d | Dummy [0.01 h] | 0.01 | N | N | B00043 |  |  |  |
|  | 12ASC | **09. Ascensor** |  | 2027-04-01 | 2028-02-07 |  |  |  |  |  |  |  |  |  |  |  |
|  | 01Fos | **01. Foso** |  | 2027-04-01 | 2027-11-24 |  |  |  |  |  |  |  |  |  |  |  |
| A14030 |  | Resane interno foso | 20d | 2027-04-01 | 2027-04-29 | A1700 SS | 49.9d | 0d | Dummy [0.38 h] | 0.38 | N | N | B00043 |  | Fos-Asc | 1 |
| A14040 |  | Mochetas y dinteles entrada de ascensores | 20d | 2027-04-29 | 2027-05-28 | A14030 | 49.9d | 0d | Dummy [0.38 h] | 0.38 | N | N | B00043 |  | Fos-Asc | 1 |
| A14050 |  | Pintura blanca foso | 20d | 2027-05-28 | 2027-06-29 | A14040 | 49.9d | 0d | Dummy [0.38 h] | 0.38 | N | N | B00043 |  | Fos-Asc | 1 |
| A14060 |  | Inst. electricas | 20d | 2027-06-29 | 2027-07-29 | A14050 | 49.9d | 0d | Dummy [0.38 h] | 0.38 | N | N | B00043 |  | Fos-Asc | 1 |
| A14070 |  | Impermeabilizacion de PIT | 20d | 2027-07-29 | 2027-08-27 | A14060 | 49.9d | 0d | Dummy [0.38 h] | 0.38 | N | N | B00043 |  | Fos-Asc | 1 |
| A14080 |  | Montaje plataforma de proteccion foso | 20d | 2027-08-27 | 2027-09-24 | A14070 | 49.9d | 0d | Dummy [0.38 h] | 0.38 | N | N | B00043 |  | Fos-Asc | 1 |
| A14090 |  | Verificaciones generales de foso | 20d | 2027-09-24 | 2027-10-25 | A14080 | 49.9d | 0d | Dummy [0.38 h] | 0.38 | N | N | B00043 |  | Fos-Asc | 1 |
| A14100 |  | Punto de elevacion de carga y certificado de capacidad | 20d | 2027-10-25 | 2027-11-24 | A14090 | 49.9d | 0d | Dummy [0.38 h] | 0.38 | N | N | B00043 |  | Fos-Asc | 1 |

| ID | WBS | Activity | Duration | Start | Finish | Predecessors | Total float | Free float | Resources | Cost | Tipo 80-20 | Hito Inicio - Fin | CBB_Etapas | CBB_Procesos | CBB_Obras | CBB_Piso |
| --- | --- | --- | --- | --- | --- | --- | --- | --- | --- | --- | --- | --- | --- | --- | --- | --- |
|  | 02Inst_Asc | **02. Instalacion Ascensor** |  | 2027-11-24 | 2028-02-07 |  |  |  |  |  |  |  |  |  |  |  |
| A14110 |  | Inst. vigas y rieles fosos | 5d | 2027-11-24 | 2027-12-01 | A1720 SS | 49.9d | 0d | Dummy [0.09 h] | 0.09 | N | N | 1 | Asc | B00043 |  |
| A14120 |  | Izaje de cabina de ascensores | 5d | 2027-12-01 | 2027-12-09 | A14110 | 49.9d | 0d | Dummy [0.09 h] | 0.09 | N | N | 1 | Asc | B00043 |  |
| A14130 |  | Inst. marcos entrada | 5d | 2027-12-09 | 2027-12-16 | A14120 | 49.9d | 0d | Dummy [0.09 h] | 0.09 | N | N | 1 | Asc | B00043 |  |
| A14140 |  | Entradas en superboard | 5d | 2027-12-16 | 2027-12-23 | A14130 | 49.9d | 0d | Dummy [0.09 h] | 0.09 | N | N | 1 | Asc | B00043 |  |
| A14150 |  | Inst. accesorios de cabina y cables traccion | 5d | 2027-12-23 | 2028-01-17 | A14140 | 49.9d | 0d | Dummy [0.09 h] | 0.09 | N | N | 1 | Asc | B00043 |  |
| A14160 |  | Inst. elementos en el pozo y PIT | 5d | 2028-01-17 | 2028-01-24 | A14150 | 49.9d | 0d | Dummy [0.09 h] | 0.09 | N | N | 1 | Asc | B00043 |  |
| A14170 |  | Acabados, aseo y pint. general | 5d | 2028-01-24 | 2028-01-31 | A14160 | 49.9d | 0d | Dummy [0.09 h] | 0.09 | N | N | 1 | Asc | B00043 |  |
| A14180 |  | Inspeccion general de instalacion | 5d | 2028-01-31 | 2028-02-07 | A14170 | 49.9d | 0d | Dummy [0.09 h] | 0.09 | N | N | 1 | Asc | B00043 |  |
|  | 13CAL | **10. Entregas Calidad** |  | 2028-02-21 | 2028-04-24 |  |  |  |  |  |  |  |  |  |  |  |
|  | P03 | **Piso 03** |  | 2028-02-21 | 2028-03-10 |  |  |  |  |  |  |  |  |  |  |  |
| A14250 |  | Aseo Final | 5d | 2028-02-21 | 2028-02-25 | A1530, A22080 | 25d | 0d | Dummy [0.04 h] | 0.04 | N | N | 1 | Ent-Cal | B00043 | 3 |
| A14260 |  | Entrega a Calidad para Observaciones | 5d | 2028-03-06 | 2028-03-10 | A14250 FS+5d | 25d | 0d | Dummy [0.04 h] | 0.04 | N | N | 1 | Ent-Cal | B00043 | 3 |
|  | P04 | **Piso 04** |  | 2028-02-21 | 2028-03-17 |  |  |  |  |  |  |  |  |  |  |  |
| A14270 |  | Aseo Final | 10d | 2028-02-21 | 2028-03-03 | A1530, A22120 | 20d | 0d | Dummy [0.04 h] | 0.04 | N | N | 1 | Ent-Cal | B00043 | 4 |
| A14280 |  | Entrega a Calidad para Observaciones | 10d | 2028-03-06 | 2028-03-17 | A14270 | 20d | 0d | Dummy [0.04 h] | 0.04 | N | N | 1 | Ent-Cal | B00043 | 4 |
|  | P05 | **Piso 05** |  | 2028-02-21 | 2028-03-27 |  |  |  |  |  |  |  |  |  |  |  |
| A14290 |  | Aseo Final | 10d | 2028-02-21 | 2028-03-03 | A1530, A22140 | 15d | 0d | Dummy [0.04 h] | 0.04 | N | N | 1 | Ent-Cal | B00043 | 5 |
| A14300 |  | Entrega a Calidad para Observaciones | 10d | 2028-03-13 | 2028-03-27 | A14290 FS+5d | 15d | 0d | Dummy [0.04 h] | 0.04 | N | N | 1 | Ent-Cal | B00043 | 5 |
|  | P06 | **Piso 06** |  | 2028-02-21 | 2028-03-30 |  |  |  |  |  |  |  |  |  |  |  |
| A14310 |  | Aseo Final | 10d | 2028-02-21 | 2028-03-03 | A1530, A22160 | 12d | 0d | Dummy [0.04 h] | 0.04 | N | N | 1 | Ent-Cal | B00043 | 6 |
| A14320 |  | Entrega a Calidad para Observaciones | 10d | 2028-03-16 | 2028-03-30 | A14310 FS+8d | 12d | 0d | Dummy [0.04 h] | 0.04 | N | N | 1 | Ent-Cal | B00043 | 6 |
|  | P07 | **Piso 07** |  | 2028-02-21 | 2028-04-05 |  |  |  |  |  |  |  |  |  |  |  |
| A14330 |  | Aseo Final | 10d | 2028-02-21 | 2028-03-03 | A1530, A22180 | 8d | 0d | Dummy [0.04 h] | 0.04 | N | N | 1 | Ent-Cal | B00043 | 7 |
| A14340 |  | Entrega a Calidad para Observaciones | 10d | 2028-03-23 | 2028-04-05 | A14330 FS+12d | 8d | 0d | Dummy [0.04 h] | 0.04 | N | N | 1 | Ent-Cal | B00043 | 7 |

| ID | WBS | Activity | Duration | Start | Finish | Predecessors | Total float | Free float | Resources | Cost | Tipo 80-20 | Hito Inicio - Fin | CBB_Etapas | CBB_Obras | CBB_Procesos | CBB_Piso |
| --- | --- | --- | --- | --- | --- | --- | --- | --- | --- | --- | --- | --- | --- | --- | --- | --- |
|  | P08 | **Piso 08** |  | 2028-02-21 | 2028-03-17 |  |  |  |  |  |  |  |  |  |  |  |
| A14350 |  | Aseo Final | 10d | 2028-02-21 | 2028-03-03 | A22200, A1530 | 20d | 0d | Dummy [0.04 h] | 0.04 | N | N | 1 | B00043 | Ent-Cal | 8 |
| A14360 |  | Entrega a Calidad para Observaciones | 10d | 2028-03-06 | 2028-03-17 | A14350 | 20d | 12d | Dummy [0.04 h] | 0.04 | N | N | 1 | B00043 | Ent-Cal | 8 |
|  | P09 | **Piso 09** |  | 2028-02-21 | 2028-03-17 |  |  |  |  |  |  |  |  |  |  |  |
| A14370 |  | Aseo Final | 10d | 2028-02-21 | 2028-03-03 | A1530, A22220 FS+5d | 20d | 0d | Dummy [0.04 h] | 0.04 | N | N | 1 | B00043 | Ent-Cal | 9 |
| A14380 |  | Entrega a Calidad para Observaciones | 10d | 2028-03-06 | 2028-03-17 | A14370 | 20d | 12d | Dummy [0.04 h] | 0.04 | N | N | 1 | B00043 | Ent-Cal | 9 |
|  | P10 | **Piso 10** |  | 2028-02-21 | 2028-03-17 |  |  |  |  |  |  |  |  |  |  |  |
| A14390 |  | Aseo Final | 10d | 2028-02-21 | 2028-03-03 | A1530, A22240 | 20d | 0d | Dummy [0.04 h] | 0.04 | N | N | 1 | B00043 | Ent-Cal | 10 |
| A14400 |  | Entrega a Calidad para Observaciones | 10d | 2028-03-06 | 2028-03-17 | A14390 | 20d | 0d | Dummy [0.04 h] | 0.04 | N | N | 1 | B00043 | Ent-Cal | 10 |
|  | P11 | **Piso 11** |  | 2028-02-21 | 2028-03-17 |  |  |  |  |  |  |  |  |  |  |  |
| A14410 |  | Aseo Final | 10d | 2028-02-21 | 2028-03-03 | A1530, A22260 FS+5d | 0d |  | Dummy [0.04 h] | 0.04 | N | N | 1 | B00043 | Ent-Cal | 11 |
| A14420 |  | Entrega a Calidad para Observaciones | 10d | 2028-03-06 | 2028-03-17 | A14410 | 20d | 12d | Dummy [0.04 h] | 0.04 | N | N | 1 | B00043 | Ent-Cal | 11 |
|  | P12 | **Piso 12** |  | 2028-03-06 | 2028-03-17 |  |  |  |  |  |  |  |  |  |  |  |
| A14430 |  | Aseo Final | 5d | 2028-03-06 | 2028-03-10 | A1530, A14410 | 0d |  | Dummy [0.02 h] | 0.02 | N | N | 1 | B00043 | Ent-Cal | 12 |
| A14440 |  | Entrega a Calidad para Observaciones | 5d | 2028-03-13 | 2028-03-17 | A14430 | 20d | 12d | Dummy [0.02 h] | 0.02 | N | N | 1 | B00043 | Ent-Cal | 12 |
|  | P13 | **Piso 13** |  | 2028-03-13 | 2028-03-27 |  |  |  |  |  |  |  |  |  |  |  |
| A14450 |  | Aseo Final | 5d | 2028-03-13 | 2028-03-17 | A14430, A1530 | 0d |  | Dummy [0.02 h] | 0.02 | N | N | 1 | B00043 | Ent-Cal | 13 |
| A14460 |  | Entrega a Calidad para Observaciones | 5d | 2028-03-21 | 2028-03-27 | A14450 | 15d | 7d | Dummy [0.02 h] | 0.02 | N | N | 1 | B00043 | Ent-Cal | 13 |
|  | P14 | **Piso 14** |  | 2028-03-21 | 2028-04-03 |  |  |  |  |  |  |  |  |  |  |  |
| A14470 |  | Aseo Final | 5d | 2028-03-21 | 2028-03-27 | A1530, A14450 | 0d |  | Dummy [0.02 h] | 0.02 | N | N | 1 | B00043 | Ent-Cal | 14 |
| A14480 |  | Entrega a Calidad para Observaciones | 5d | 2028-03-28 | 2028-04-03 | A14470 | 10d | 2d | Dummy [0.02 h] | 0.02 | N | N | 1 | B00043 | Ent-Cal | 14 |
|  | P15 | **Piso 15** |  | 2028-03-28 | 2028-04-24 |  |  |  |  |  |  |  |  |  |  |  |
| A14490 |  | Aseo Final | 5d | 2028-03-28 | 2028-04-03 | A1530, A14470 | 0d |  | Dummy [0.02 h] | 0.02 | N | N | 1 | B00043 | Ent-Cal | 15 |
| A14500 |  | Entrega a Calidad para Observaciones | 5d | 2028-04-18 | 2028-04-24 | A14490 FS+5d | 0d |  | Dummy [0.02 h] | 0.02 | N | N | 1 | B00043 | Ent-Cal | 15 |

| ID | WBS | Activity | Duration | Start | Finish | Predecessors | Total float | Free float | Resources | Cost | Hito Inicio - Fin | Tipo 80-20 | CBB_Etapas | CBB_Procesos | CBB_Obras | CBB_Piso |
| --- | --- | --- | --- | --- | --- | --- | --- | --- | --- | --- | --- | --- | --- | --- | --- | --- |
|  | P16 | **Piso 16** |  | 2028-04-04 | 2028-04-24 |  |  |  |  |  |  |  |  |  |  |  |
| A14510 |  | Aseo Final | 5d | 2028-04-04 | 2028-04-17 | A1530, A14490 | 0d |  | Dummy [0.02 h] | 0.02 | N | N | 1 | Ent-Cal | B00043 | 16 |
| A14520 |  | Entrega a Calidad para Observaciones | 5d | 2028-04-18 | 2028-04-24 | A14510 | 0d |  | Dummy [0.02 h] | 0.02 | N | N | 1 | Ent-Cal | B00043 | 16 |
|  | 14CTO | **11.CTO** |  | 2027-01-26 | 2027-02-09 |  |  |  |  |  |  |  |  |  |  |  |
| A14190 |  | Inicio CTO | 5d | 2027-01-26 | 2027-02-02 | A1740 SS | 281.9d | 0d | Dummy [0.12 h] | 0.12 | N | N | 1 |  | B00043 |  |
| A14200 |  | Entrega CTO | 5d | 2027-02-02 | 2027-02-09 | A14190 | 281.9d | 0d | Dummy [0.12 h] | 0.12 | N | N | 1 |  | B00043 |  |

## Activity codes

| Code | Value | Meaning |
| --- | --- | --- |
| CBB_Etapas | 1 | Etapa 1 |
| CBB_Obras | B00043 | Marawa |
| CBB_Piso | -2 | Piso -2 |
| CBB_Piso | 1 | Piso 1 |
| CBB_Piso | 10 | Piso 10 |
| CBB_Piso | 11 | Piso 11 |
| CBB_Piso | 12 | Piso 12 |
| CBB_Piso | 13 | Piso 13 |
| CBB_Piso | 14 | Piso 14 |
| CBB_Piso | 15 | Piso 15 |
| CBB_Piso | 16 | Piso 16 |
| CBB_Piso | 2 | Piso 2 |
| CBB_Piso | 3 | Piso 3 |
| CBB_Piso | 4 | Piso 4 |
| CBB_Piso | 5 | Piso 5 |
| CBB_Piso | 6 | Piso 6 |
| CBB_Piso | 7 | Piso 7 |
| CBB_Piso | 8 | Piso 8 |
| CBB_Piso | 9 | Piso 9 |
| CBB_Procesos | Asc | Ascensor |
| CBB_Procesos | Car-Mad | Carpinteria Madera |
| CBB_Procesos | Cie-Ras | Cielo Raso |
| CBB_Procesos | Cim | Cimentacion |
| CBB_Procesos | Cub-Aca | Cubierta Aca |
| CBB_Procesos | Cub-Est | Cubierta Est |
| CBB_Procesos | Enc | Enchapes |
| CBB_Procesos | Ent-Cal | Entrega Calidad |
| CBB_Procesos | Esc-Est | Escalera Estructura |
| CBB_Procesos | Est | Estructura |
| CBB_Procesos | Est- | Estuco |
| CBB_Procesos | Exc-&-Rel | Exc. & Relleno |
| CBB_Procesos | Fos-Asc | Foso Ascensor |
| CBB_Procesos | Mes-y-Gas | Mesones y Gasodomestico |
| CBB_Procesos | Obr-Gri | Obra Gris |
| CBB_Procesos | Pil | Pilotaje |
| CBB_Procesos | Pis | Pisos |
| Contratista | 860015576 | SUBSUELOS S.A.S |
